Ledger ID,Tag,Name,Discipline,Lane,Area/Building,Status,Drawing Sheets,Found On,CWP,CWP Name,Bid Item,Quantity,Unit,MTO Line IDs,Quantity Confidence,Spec Sections,Wiki Note(s),Submittal Count,Submittal IDs,Submittal Link Basis,Submittal Req (Y/N),Inspection/Test Count,Inspection/Test IDs,Inspection/Test Link Basis,Testing/Startup Req (Y/N),Addenda,RFI IDs,Conflict/Gap Count,Conflict/Gap IDs,Exception Refs,Schedule Activity,Planned Start,Planned Finish,Submittal Approve-by,Tracker Status,Confidence,Source Citation,Notes
L-0001,PROPOSED-Temporary bypass pumping system,"Temporary bypass pumping, piping, holding tanks and storage",Process-Mechanical,Civil & Site,Site,Temporary,G0.3; C0.5,Not linked (PROPOSED tag is not printed; no boxed anchor matched),CWP 01,General Requirements & Temporary Works,1,None found,None found,None found,None found (no MTO line: no tied callout and no tag found on a cited sheet),None found (no spec section cited in rev0),Appendix F (spec); G0.3 (sheet); C0.5 (sheet),0,None found,tag 0; spec 0; sheet 0,N,3,ITP C0.5-01 (sheet); ITP C0.5-02 (sheet); ITP G0.3-01 (sheet),tag 0; spec 0; sheet 3,N,None found (Add. 4 checked; Addenda 1-3 not staged),OI-0395 (sheet),1,OI-0469 (sheet),#68 (tag),01-C01 General Requirements & Temporary Works — Temporary bypass and interim effluent piping,2023-04-01,2023-10-11,2023-03-14,Not started (baseline: no progress entered),Inferred,"G0.3 Operation Plan 2, General Note 10 (plans_1 p.3); C0.5 Keyed Notes 3–4, Construction Phasing 3 (plans_2Part-4 p.1); Appendix F §5.1–5.2 (pp.618–619)","C0.5 Phasing 3 calls for 'a temporary bypass system per specs'. Bid Item 1 per 04 rule (work not itemized elsewhere) — Inferred. Appendix F: temporary pumps and piping, disruptions limited to 1 hour, bypass plan reviewed by Engineer and Owner. The bypass plan is required by G0.3 Note 10 and Appendix F §5.2, not by a Civil & Site spec section (column rule; see Issues CS-37); 01 11 10 (Contract & General) not read. || [Merge] Exceptions: #68."
L-0002,PROPOSED-Temporary power generator,Temporary back-up power generator,Electrical,Civil & Site,Site,Temporary,G0.3,Not linked (PROPOSED tag is not printed; no boxed anchor matched),CWP 26,"Electrical, Instrumentation & Controls",18 — Unresolved (see 04),None found,None found,None found,None found (no MTO line: no tied callout and no tag found on a cited sheet),None found (no spec section cited in rev0),G0.3 (tag),0,None found,tag 0; spec 0; sheet 0,N,1,ITP G0.3-01 (sheet),tag 0; spec 0; sheet 1,Y,"Add. 4 p.1, Clarification 5 — Add. 4 governs",None found,2,OI-0002 (tag); OI-0465 (tag),#14 (tag); #255 (tag),"26-C13 Electrical, Instrumentation & Controls — Temporary back-up generator (rental)",2023-09-25,2024-04-30,2023-03-14,Not started (baseline: no progress entered),Unresolved,"G0.3 General Note 10 (plans_1 p.3); Add. 4 p.1, Clarification 5","Cross-lane: Electrical & Controls (03 item map, Clarification 5). Add. 4: connects temporarily to the permanent ATS until the permanent genset arrives; test connections and automatic load transfer; 60 dBA or lower at full load. Submittal/testing flags reflect this lane's documents and Add. 4 only. || [Merge] Exceptions: #14, #255."
L-0003,PROPOSED-Plastic covering for slopes and stockpiles,Plastic covering for slopes and stockpiles (TESC),Civil,Civil & Site,Site,Temporary,C0.4 (Det. 1); C0.3,"C0.4 p.11 [75.84,352.26,84.05,367.03] anchor: C0.4 Det. 1: matched: noun PLASTIC (Verified) in detail ""SLOPES & STOCKPILES"" (sheet)",CWP 31,"Earthwork, Dewatering & Erosion Control",4,None found,None found,None found,None found (no MTO line: no tied callout and no tag found on a cited sheet),31 32 11,31 32 11 (spec); C0.4 (sheet); C0.3 (sheet),1,SUB 31 32 11-01 (spec),tag 0; spec 1; sheet 0,Y,1,ITP 31 32 11-01 (spec),tag 0; spec 1; sheet 0,N,None found (Add. 4 checked; Addenda 1-3 not staged),None found,1,OI-0471 (sheet),#71 (tag),"31-C02 Earthwork, Dewatering & Erosion Control — Temporary facilities and controls",2023-03-15,2024-10-16,2023-03-14,Not started (baseline: no progress entered),Inferred,"C0.4 Detail 1 (plans_2Part-3 p.1); 31 32 11 ¶1.04 A.6 (pp.398–399); (Missing_Pages_Page_001.png, C0.3 — Verified-Visual)",Bid Item 4 — Inferred: 04 puts TESC plans and 31 32 11 in the Item 4 scope (00 24 13 ¶4). Locations on C0.3 (unavailable). [Resplit pass 2026-09-29] C0.3 read: plastic covering is not in the TESC plan legend and no location is shown. || [Merge] Exceptions: #71.
L-0004,PROPOSED-Catch basin inserts,"Catch basin inserts (inlet protection, TESC)",Civil,Civil & Site,Site,Temporary,C0.4 (Det. 2); C0.2; C0.3,"C0.4 p.11 [413.52,352.26,421.73,367.03] anchor: C0.4 Det. 2: matched: noun CATCH (Verified) in detail ""CATCH BASIN INSERT"" (sheet)",CWP 31,"Earthwork, Dewatering & Erosion Control",4,None found,None found,None found,None found (no MTO line: no tied callout and no tag found on a cited sheet),31 32 11,C0.4 (tag); 31 32 11 (spec); C0.2 (sheet); C0.3 (sheet),2,SUB 31 32 11-01 (spec); SUB C0.2-01 (sheet),tag 0; spec 1; sheet 1,Y,1,ITP 31 32 11-01 (spec),tag 0; spec 1; sheet 0,N,None found (Add. 4 checked; Addenda 1-3 not staged),None found,2,OI-0007 (sheet); OI-0471 (sheet),#71 (tag),"31-C02 Earthwork, Dewatering & Erosion Control — Temporary facilities and controls",2023-03-15,2024-10-16,2023-03-14,Not started (baseline: no progress entered),Inferred,"C0.4 Detail 2 (plans_2Part-3 p.1); C0.2 Item 22 (plans_2Part-1 p.1); 31 32 11 ¶1.04 A.3, ¶2.01 E (pp.398–399); (Missing_Pages_Page_001.png, C0.3 — Verified-Visual)",Bid Item 4 — Inferred: 04 puts TESC plans and 31 32 11 in the Item 4 scope (00 24 13 ¶4). Locations on C0.3 (unavailable). 'Inlet protection' (C0.2) = catch basin insert — Inferred. [Resplit pass 2026-09-29] C0.3 shows inlet protection at SDCB #1–#10 and existing SDCB 1076 (11 locations). || [Merge] Exceptions: #71.
L-0005,PROPOSED-Filter fabric fence,Filter fabric (silt) fence (TESC),Civil,Civil & Site,Site,Temporary,C0.4 (Det. 3); C0.2; C0.6; C0.3,"C0.4 p.11 [66.84,747.30,75.05,762.07] anchor: C0.4 Det. 3: matched: noun FILTER (Verified) in detail ""FILTER FABRIC FABRIC FENCE"" (sheet)",CWP 31,"Earthwork, Dewatering & Erosion Control",4,None found,None found,None found,None found (no MTO line: no tied callout and no tag found on a cited sheet),31 32 11,C0.4 (tag); 31 32 11 (spec); C0.2 (sheet); C0.6 (sheet); C0.3 (sheet),2,SUB 31 32 11-01 (spec); SUB C0.2-01 (sheet),tag 0; spec 1; sheet 1,Y,1,ITP 31 32 11-01 (spec),tag 0; spec 1; sheet 0,N,None found (Add. 4 checked; Addenda 1-3 not staged),None found,2,OI-0007 (sheet); OI-0471 (sheet),#71 (tag),"31-C02 Earthwork, Dewatering & Erosion Control — Temporary facilities and controls",2023-03-15,2024-10-16,2023-03-14,Not started (baseline: no progress entered),Unresolved,"C0.4 Detail 3 (plans_2Part-3 p.1); C0.2 Item 22 (plans_2Part-1 p.1); 31 32 11 ¶1.04 A.1, ¶2.01 A (pp.398–399); (Missing_Pages_Page_001.png, C0.3 — Verified-Visual)","Bid Item 4 — Inferred: 04 puts TESC plans and 31 32 11 in the Item 4 scope (00 24 13 ¶4). Locations on C0.3 (unavailable). Detail defers to WSDOT Standard Plans I-30.10-02 / I-30.15-02 — Unresolved: external reference, not staged. [Resplit pass 2026-09-29] C0.3 legend lists silt fence per 3/C0.4; no run identifiable at stored resolution — Unresolved (native copy). || [Merge] Exceptions: #71."
L-0006,PROPOSED-Stabilized construction entrance,Stabilized construction entrance (quarry spalls on geotextile),Civil,Civil & Site,Site,Temporary,C0.4 (Det. 4); C0.2; C0.3,"C0.4 p.11 [345.24,747.30,353.45,762.07] anchor: C0.4 Det. 4: matched: noun ENTRANCE (Verified) in detail ""STABILIZED CONSTRUCTION CONSTRUCTION ENTRANCE"" (sheet)",CWP 31,"Earthwork, Dewatering & Erosion Control",4,None found,None found,None found,None found (no MTO line: no tied callout and no tag found on a cited sheet),31 32 11,C0.3 (tag); C0.4 (tag); 31 32 11 (spec); C0.2 (sheet),2,SUB 31 32 11-01 (spec); SUB C0.2-01 (sheet),tag 0; spec 1; sheet 1,Y,1,ITP 31 32 11-01 (spec),tag 0; spec 1; sheet 0,N,None found (Add. 4 checked; Addenda 1-3 not staged),OI-0391 (tag),2,OI-0007 (sheet); OI-0471 (sheet),#71 (tag),"31-C02 Earthwork, Dewatering & Erosion Control — Temporary facilities and controls",2023-03-15,2024-10-16,2023-03-14,Not started (baseline: no progress entered),Unresolved,"C0.4 Detail 4 (plans_2Part-3 p.1); C0.2 Item 22 (plans_2Part-1 p.1); 31 32 11 ¶1.04 A.5, ¶2.01 G (pp.398–399); (Missing_Pages_Page_001.png, C0.3 — Verified-Visual)","Bid Item 4 — Inferred: 04 puts TESC plans and 31 32 11 in the Item 4 scope (00 24 13 ¶4). Locations on C0.3 (unavailable). 31 32 11 calls for Track Clean construction entrance plates or equal (BMP C105), while C0.4 Detail 4 shows a quarry spall entrance (see Issues CS-27) — Unresolved. [Resplit pass 2026-09-29] C0.3 places it along the north property line inside the 20-ft easement, the sole ingress and egress location (keyed note 2). || [Merge] Exceptions: #71."
L-0007,PROPOSED-Geotextile encased check dams,Geotextile encased check dams (BMP C208),Civil,Civil & Site,Site,Temporary,C0.4 (Det. 5); C0.3,"C0.4 p.11 [747.84,747.30,756.05,762.07] anchor: C0.4 Det. 5: matched: noun GEOTEXTILE (Verified) in detail ""STABILIZED CONSTRUCTION CONSTRUCTION ENTRANCE"" (sheet)",CWP 31,"Earthwork, Dewatering & Erosion Control",4,None found,None found,None found,None found (no MTO line: no tied callout and no tag found on a cited sheet),31 32 11,C0.4 (tag); 31 32 11 (spec); C0.3 (sheet),1,SUB 31 32 11-01 (spec),tag 0; spec 1; sheet 0,Y,1,ITP 31 32 11-01 (spec),tag 0; spec 1; sheet 0,N,None found (Add. 4 checked; Addenda 1-3 not staged),None found,1,OI-0471 (sheet),#71 (tag),"31-C02 Earthwork, Dewatering & Erosion Control — Temporary facilities and controls",2023-03-15,2024-10-16,2023-03-14,Not started (baseline: no progress entered),Unresolved,"C0.4 Detail 5 (plans_2Part-3 p.1); 31 32 11 ¶1.04 A.6 (pp.398–399); (Missing_Pages_Page_001.png, C0.3 — Verified-Visual)","Bid Item 4 — Inferred: 04 puts TESC plans and 31 32 11 in the Item 4 scope (00 24 13 ¶4). Locations on C0.3 (unavailable). Notes cite 'Standard Specifications' 8-01.3(6)A, 9-14.5(4), 8-01.3(15) — WSDOT Inferred from numbering; Unresolved: external reference, not staged. [Resplit pass 2026-09-29] C0.3 legend lists check dams per 5/C0.4; no location identifiable at stored resolution — Unresolved (native copy). || [Merge] Exceptions: #71."
L-0008,PROPOSED-Existing 8in effluent outfall pipe,"Existing 8-inch effluent (outfall) pipe, 40 LF — abandon and remove",Civil,Civil & Site,Site,Demolished,C0.5 (KN 1); C0.7 (cited),Not linked (PROPOSED tag is not printed; no boxed anchor matched),CWP 02,Demolition & Existing Conditions,1,Not totaled: no Verified line,LF,MTO-0001 (sheet),Inferred — not totaled; lines: 1 Inferred (MTO Lines: Not Totaled Because),02 41 00,02 41 00 (spec); C0.5 (sheet); C0.7 (sheet),0,None found,tag 0; spec 0; sheet 0,N,2,ITP C0.5-01 (sheet); ITP C0.5-02 (sheet),tag 0; spec 0; sheet 2,N,None found (Add. 4 checked; Addenda 1-3 not staged),OI-0395 (sheet),2,OI-0327 (spec); OI-0469 (sheet),None found,02-C02 Demolition & Existing Conditions — Site demolition ahead of new work,2023-04-01,2023-05-31,2023-03-31,Not started (baseline: no progress entered),Inferred,C0.5 Keyed Note 1 (plans_2Part-4 p.1); 02 41 00 ¶3.01–3.02 (main spec pp.161–162),"Remove after the interim 8-in HDPE pipe is installed and tested (C0.7, unavailable). Bid Item 1 per 04 rule (work not itemized elsewhere) — Inferred. 02 41 00 has no submittal or testing paragraph; C0.5 General Note requires a demolition plan with schedule (drawing requirement)."
L-0009,PROPOSED-Interim 8in HDPE effluent pipe,Interim 8-inch HDPE effluent pipe,Civil,Civil & Site,Site,Temporary,"C0.5 (KN 1, 8); C0.7 (cited)","C0.5 p.12 [818.64,176.58,1090.98,197.67] anchor: C0.5 KN 1: matched: noun HDPE (Inferred), number read (Inferred), 012 818.64,53.10,1085.04,68.57, C0.5 KN 8: matched: noun INTERIM (Inferred), number read (Inferred) (sheet)",CWP 33,Yard Piping & Utilities,1,None found,None found,None found,None found (no MTO line: no tied callout and no tag found on a cited sheet),33 33 00,33 33 00 (spec); Appendix F (spec); C0.5 (sheet); C0.7 (sheet),3,SUB 33 33 00-01 (spec); SUB 33 33 00-02 (spec); SUB 33 33 00-03 (spec),tag 0; spec 3; sheet 0,Y,4,ITP 33 33 00-01 (spec); ITP 33 33 00-02 (spec); ITP C0.5-01 (sheet); ITP C0.5-02 (sheet),tag 0; spec 2; sheet 2,Y,None found (Add. 4 checked; Addenda 1-3 not staged),OI-0395 (sheet),1,OI-0469 (sheet),#74 (tag),33-C02 Yard Piping & Utilities — Temporary bypass and interim effluent piping,2023-04-01,2023-10-11,2023-03-31,Not started (baseline: no progress entered),Unresolved,"C0.5 Keyed Notes 1, 8 (plans_2Part-4 p.1); 33 33 00 (pp.444–446); Appendix F §5.1 (p.618)","Routing, length and removal are on C0.7 (unavailable) — Unresolved: needs C0.7. Status 'Temporary' Inferred from 'interim'. Bid Item 1 per 04 rule (work not itemized elsewhere) — Inferred. Appendix F §5.1: temporary piping from the existing chlorine disinfection chamber outlet to the 8-in effluent pipe upstream of SSMH #1288 — match to this interim pipe Inferred. || [Merge] Exceptions: #74."
L-0010,PROPOSED-Existing 4in roof drain pipe,"Existing 4-inch roof drain pipe, 40 LF — abandon and remove",Civil,Civil & Site,Site,Demolished,C0.5 (KN 2),"C0.5 p.12 [818.64,72.18,1096.74,83.70] anchor: C0.5 KN 2: matched: quantity 40 LF (Inferred), number read (Inferred) (sheet)",CWP 02,Demolition & Existing Conditions,1,Not totaled: no Verified line,LF,MTO-0002 (sheet),Inferred — not totaled; lines: 1 Inferred (MTO Lines: Not Totaled Because),02 41 00,02 41 00 (spec); C0.5 (sheet),0,None found,tag 0; spec 0; sheet 0,N,2,ITP C0.5-01 (sheet); ITP C0.5-02 (sheet),tag 0; spec 0; sheet 2,N,None found (Add. 4 checked; Addenda 1-3 not staged),OI-0395 (sheet),2,OI-0327 (spec); OI-0469 (sheet),None found,02-C02 Demolition & Existing Conditions — Site demolition ahead of new work,2023-04-01,2023-05-31,2023-03-31,Not started (baseline: no progress entered),Inferred,C0.5 Keyed Note 2 (plans_2Part-4 p.1); 02 41 00 ¶3.01–3.02 (main spec pp.161–162),Remove after the new 4-in roof drain gravity pipe is installed and tested (C2 storm drainage sheets). Bid Item 1 per 04 rule (work not itemized elsewhere) — Inferred. 02 41 00 has no submittal or testing paragraph; C0.5 General Note requires a demolition plan with schedule (drawing requirement).
L-0011,SSMH 1286,Existing sump pump station (sewage pump) — remove,Process-Mechanical,Civil & Site,Site,Demolished,"C0.5 (KN 3, 5); C0.1","C0.3 p.10 [830.51,572.79,852.07,576.86] bluebeam-ocr — sheet not cited (tag)",CWP 02,Demolition & Existing Conditions,1,None found,None found,None found,None found (no MTO line: no tied callout and no tag found on a cited sheet),02 41 00,02 41 00 (tag); C0.1 (tag); C0.5 (tag),1,SUB C0.1-01 (sheet),tag 0; spec 0; sheet 1,N,2,ITP C0.5-01 (sheet); ITP C0.5-02 (sheet),tag 0; spec 0; sheet 2,N,None found (Add. 4 checked; Addenda 1-3 not staged),OI-0395 (sheet),2,OI-0327 (spec); OI-0469 (sheet),None found,02-C02 Demolition & Existing Conditions — Site demolition ahead of new work,2023-04-01,2023-05-31,2023-03-31,Not started (baseline: no progress entered),Inferred,"C0.5 Keyed Notes 3, 5 (plans_2Part-4 p.1); C0.1 sewer structure table (plans_1 p.8); 02 41 00 ¶3.01–3.02 (main spec pp.161–162)",Tag Inferred: C0.5 label is partly hidden under the X; C0.1 lists SSMH 1286 'Sewage Pump' at the same position. Remove after the new plant drain pump station is installed and tested; keep power on until then. Bid Item 1 per 04 rule (work not itemized elsewhere) — Inferred. 02 41 00 has no submittal or testing paragraph; C0.5 General Note requires a demolition plan with schedule (drawing requirement). Listed by name in 02 41 00 ¶3.01 C (p.162).
L-0012,SSMH 1285,Existing septic tank — remove,Civil,Civil & Site,Site,Demolished,C0.5 (KN 4); C0.1,"C0.1 p.8 [830.40,529.20,851.95,533.20] bluebeam-ocr (tag); C0.3 p.10 [830.63,529.34,852.20,533.41] bluebeam-ocr — sheet not cited (tag); C2.1 p.20 [830.40,529.20,851.95,533.20] bluebeam-ocr — sheet not cited (tag)",CWP 02,Demolition & Existing Conditions,1,Not totaled: no Verified line,EA,MTO-0003 (tag),Inferred — not totaled; lines: 1 Inferred (MTO Lines: Not Totaled Because),02 41 00,02 41 00 (tag); C0.1 (tag); C0.3 (tag); C0.5 (tag),1,SUB C0.1-01 (sheet),tag 0; spec 0; sheet 1,N,2,ITP C0.5-01 (tag); ITP C0.5-02 (sheet),tag 1; spec 0; sheet 1,N,None found (Add. 4 checked; Addenda 1-3 not staged),OI-0395 (sheet),2,OI-0327 (spec); OI-0469 (sheet),None found,02-C02 Demolition & Existing Conditions — Site demolition ahead of new work,2023-04-01,2023-05-31,2023-03-31,Not started (baseline: no progress entered),Inferred,C0.5 Keyed Note 4 (plans_2Part-4 p.1); C0.1 sewer structure table (plans_1 p.8); 02 41 00 ¶3.01–3.02 (main spec pp.161–162),Remove after the new septic tank and influent pump station are installed and tested; temporary pumps and basins as needed. Bid Item 1 per 04 rule (work not itemized elsewhere) — Inferred. 02 41 00 has no submittal or testing paragraph; C0.5 General Note requires a demolition plan with schedule (drawing requirement). Listed by name in 02 41 00 ¶3.01 C (p.162).
L-0013,PROPOSED-Existing 10in effluent outfall pipe,"Existing 10-inch effluent (outfall) pipe, 60 LF — abandon and remove",Civil,Civil & Site,Site,Demolished,C0.5 (KN 8),"C0.5 p.12 [818.64,176.58,1090.98,197.67] anchor: C0.5 KN 8: matched: quantity 60 LF (Inferred), number read (Inferred) (sheet)",CWP 02,Demolition & Existing Conditions,1,Not totaled: no Verified line,LF,MTO-0004 (sheet),Inferred — not totaled; lines: 1 Inferred (MTO Lines: Not Totaled Because),02 41 00,02 41 00 (spec); C0.5 (sheet),0,None found,tag 0; spec 0; sheet 0,N,2,ITP C0.5-01 (sheet); ITP C0.5-02 (sheet),tag 0; spec 0; sheet 2,N,None found (Add. 4 checked; Addenda 1-3 not staged),OI-0395 (sheet),2,OI-0327 (spec); OI-0469 (sheet),None found,02-C02 Demolition & Existing Conditions — Site demolition ahead of new work,2023-04-01,2023-05-31,2023-03-31,Not started (baseline: no progress entered),Inferred,C0.5 Keyed Note 8 (plans_2Part-4 p.1); 02 41 00 ¶3.01–3.02 (main spec pp.161–162),Temporary restrained plug at the pipe opening until the new 10-in effluent is connected. Bid Item 1 per 04 rule (work not itemized elsewhere) — Inferred. 02 41 00 has no submittal or testing paragraph; C0.5 General Note requires a demolition plan with schedule (drawing requirement).
L-0014,PROPOSED-Existing storm drain and catch basin 87 LF,"Existing storm drain, 87 LF, and catch basin — remove",Civil,Civil & Site,Site,Demolished,C0.5 (KN 9),"C0.5 p.12 [818.64,201.06,990.18,212.76] anchor: C0.5 KN 9: matched: quantity 87 LF (Inferred), number by order (Unresolved) (sheet)",CWP 02,Demolition & Existing Conditions,1,Not totaled: no Verified line,LF,MTO-0005 (sheet),Unresolved — not totaled; lines: 1 Unresolved (MTO Lines: Not Totaled Because),02 41 00,02 41 00 (spec); C0.5 (sheet),0,None found,tag 0; spec 0; sheet 0,N,2,ITP C0.5-01 (sheet); ITP C0.5-02 (sheet),tag 0; spec 0; sheet 2,N,None found (Add. 4 checked; Addenda 1-3 not staged),OI-0395 (sheet),2,OI-0327 (spec); OI-0469 (sheet),None found,02-C02 Demolition & Existing Conditions — Site demolition ahead of new work,2023-04-01,2023-05-31,2023-03-31,Not started (baseline: no progress entered),Inferred,C0.5 Keyed Note 9 (plans_2Part-4 p.1); 02 41 00 ¶3.01–3.02 (main spec pp.161–162),Catch basin ID not stated in the note (see Issues). Bid Item 1 per 04 rule (work not itemized elsewhere) — Inferred. 02 41 00 has no submittal or testing paragraph; C0.5 General Note requires a demolition plan with schedule (drawing requirement).
L-0015,PROPOSED-Existing 6in drain pipe to sump station,"Existing 6-inch drain pipe to sump pump station, 20 LF — abandon and remove",Civil,Civil & Site,Site,Demolished,C0.5 (KN 11),"C0.5 p.12 [818.64,230.94,1079.82,246.62] anchor: C0.5 KN 11: matched: quantity 20 LF (Inferred), number by order (Unresolved) (sheet)",CWP 02,Demolition & Existing Conditions,1,Not totaled: no Verified line,LF,MTO-0006 (sheet),Unresolved — not totaled; lines: 1 Unresolved (MTO Lines: Not Totaled Because),02 41 00,02 41 00 (spec); C0.5 (sheet),0,None found,tag 0; spec 0; sheet 0,N,2,ITP C0.5-01 (sheet); ITP C0.5-02 (sheet),tag 0; spec 0; sheet 2,N,None found (Add. 4 checked; Addenda 1-3 not staged),OI-0395 (sheet),2,OI-0327 (spec); OI-0469 (sheet),None found,02-C02 Demolition & Existing Conditions — Site demolition ahead of new work,2023-04-01,2023-05-31,2023-03-31,Not started (baseline: no progress entered),Inferred,C0.5 Keyed Note 11 (plans_2Part-4 p.1); 02 41 00 ¶3.01–3.02 (main spec pp.161–162),Bid Item 1 per 04 rule (work not itemized elsewhere) — Inferred. 02 41 00 has no submittal or testing paragraph; C0.5 General Note requires a demolition plan with schedule (drawing requirement).
L-0016,PROPOSED-Existing 1.5in sump force main,"Existing 1-1/2-inch sump pump force main, 60 LF — abandon and remove",Civil,Civil & Site,Site,Demolished,C0.5 (KN 12),"C0.5 p.12 [818.64,250.56,1090.98,272.88] anchor: C0.5 KN 12: matched: quantity 60 LF (Inferred), number read (Inferred) (sheet)",CWP 02,Demolition & Existing Conditions,1,Not totaled: no Verified line,LF,MTO-0007 (sheet),Inferred — not totaled; lines: 1 Inferred (MTO Lines: Not Totaled Because),02 41 00,02 41 00 (spec); C0.5 (sheet),0,None found,tag 0; spec 0; sheet 0,N,2,ITP C0.5-01 (sheet); ITP C0.5-02 (sheet),tag 0; spec 0; sheet 2,N,None found (Add. 4 checked; Addenda 1-3 not staged),OI-0395 (sheet),2,OI-0327 (spec); OI-0469 (sheet),None found,02-C02 Demolition & Existing Conditions — Site demolition ahead of new work,2023-04-01,2023-05-31,2023-03-31,Not started (baseline: no progress entered),Inferred,C0.5 Keyed Note 12 (plans_2Part-4 p.1); 02 41 00 ¶3.01–3.02 (main spec pp.161–162),Plug the connection at the 8-in influent gravity sewer (east side); see C1 site piping sheets. Bid Item 1 per 04 rule (work not itemized elsewhere) — Inferred. 02 41 00 has no submittal or testing paragraph; C0.5 General Note requires a demolition plan with schedule (drawing requirement).
L-0017,PROPOSED-Existing holding tanks,Existing holding tanks — remove and relocate on site per Owner,Civil,Civil & Site,Site,Existing,C0.5 (KN 15),"C0.5 p.12 [818.64,330.66,1087.20,344.88] anchor: C0.5 KN 15: matched: noun HOLDING (Inferred), number read (Inferred) (sheet)",CWP 02,Demolition & Existing Conditions,1,None found,None found,None found,None found (no MTO line: no tied callout and no tag found on a cited sheet),None found (no spec section cited in rev0),C0.5 (tag),0,None found,tag 0; spec 0; sheet 0,N,2,ITP C0.5-01 (sheet); ITP C0.5-02 (sheet),tag 0; spec 0; sheet 2,N,None found (Add. 4 checked; Addenda 1-3 not staged),OI-0395 (sheet),1,OI-0469 (sheet),None found,"02-C03 Demolition & Existing Conditions — Yard piping, vaults and site utilities",2023-04-01,2023-11-01,2023-03-31,Not started (baseline: no progress entered),Inferred,C0.5 Keyed Note 15 (plans_2Part-4 p.1),"Relocated, not demolished. Number and size not stated. Bid Item 1 per 04 rule (work not itemized elsewhere) — Inferred. No submittal or test in this lane's spec sections."
L-0018,PROPOSED-Existing chain link fence 149 LF,"Existing chain link fence, 149 LF — remove",Civil,Civil & Site,Site,Demolished,C0.5 (KN 16),"C0.5 p.12 [819.36,348.84,942.84,360.54] anchor: C0.5 KN 16: matched: quantity 149 LF (Inferred), number by order (Unresolved) (sheet)",CWP 02,Demolition & Existing Conditions,1,Not totaled: no Verified line,LF,MTO-0008 (sheet),Unresolved — not totaled; lines: 1 Unresolved (MTO Lines: Not Totaled Because),02 41 00,02 41 00 (spec); C0.5 (sheet),0,None found,tag 0; spec 0; sheet 0,N,2,ITP C0.5-01 (sheet); ITP C0.5-02 (sheet),tag 0; spec 0; sheet 2,N,None found (Add. 4 checked; Addenda 1-3 not staged),OI-0395 (sheet),3,OI-0003 (tag); OI-0327 (spec); OI-0469 (sheet),None found,02-C02 Demolition & Existing Conditions — Site demolition ahead of new work,2023-04-01,2023-05-31,2023-03-31,Not started (baseline: no progress entered),Inferred,C0.5 Keyed Note 16 (plans_2Part-4 p.1); 02 41 00 ¶3.01–3.02 (main spec pp.161–162),Bid Item 1 per 04 rule (work not itemized elsewhere) — Inferred. 02 41 00 has no submittal or testing paragraph; C0.5 General Note requires a demolition plan with schedule (drawing requirement).
L-0019,PROPOSED-Existing storm drain at roof drain 7 ft,"Existing storm drain connected to roof drain, 7 ft — remove",Civil,Civil & Site,Site,Demolished,C0.5 (KN 17),"C0.5 p.12 [819.36,362.34,996.48,372.60] anchor: C0.5 KN 17: matched: quantity 7 FT (Inferred), number read (Inferred) (sheet)",CWP 02,Demolition & Existing Conditions,1,None found,None found,None found,None found (no MTO line: no tied callout and no tag found on a cited sheet),02 41 00,02 41 00 (spec); C0.5 (sheet),0,None found,tag 0; spec 0; sheet 0,N,2,ITP C0.5-01 (sheet); ITP C0.5-02 (sheet),tag 0; spec 0; sheet 2,N,None found (Add. 4 checked; Addenda 1-3 not staged),OI-0395 (sheet),2,OI-0327 (spec); OI-0469 (sheet),None found,02-C02 Demolition & Existing Conditions — Site demolition ahead of new work,2023-04-01,2023-05-31,2023-03-31,Not started (baseline: no progress entered),Inferred,C0.5 Keyed Note 17 (plans_2Part-4 p.1); 02 41 00 ¶3.01–3.02 (main spec pp.161–162),Length read as 7 ft. Bid Item 1 per 04 rule (work not itemized elsewhere) — Inferred. 02 41 00 has no submittal or testing paragraph; C0.5 General Note requires a demolition plan with schedule (drawing requirement).
L-0020,PROPOSED-Existing retaining wall 61 LF,"Existing retaining wall, 61 LF — remove",Civil,Civil & Site,Site,Demolished,C0.5 (KN 18),"C0.5 p.12 [819.54,374.22,1096.02,388.47] anchor: C0.5 KN 18: matched: quantity 61 LF (Inferred), number read (Inferred) (sheet)",CWP 02,Demolition & Existing Conditions,1,Not totaled: no Verified line,LF,MTO-0009 (sheet),Inferred — not totaled; lines: 1 Inferred (MTO Lines: Not Totaled Because),02 41 00,02 41 00 (spec); C0.5 (sheet),0,None found,tag 0; spec 0; sheet 0,N,2,ITP C0.5-01 (sheet); ITP C0.5-02 (sheet),tag 0; spec 0; sheet 2,N,None found (Add. 4 checked; Addenda 1-3 not staged),OI-0395 (sheet),2,OI-0327 (spec); OI-0469 (sheet),None found,02-C02 Demolition & Existing Conditions — Site demolition ahead of new work,2023-04-01,2023-05-31,2023-03-31,Not started (baseline: no progress entered),Inferred,C0.5 Keyed Note 18 (plans_2Part-4 p.1); 02 41 00 ¶3.01–3.02 (main spec pp.161–162),"Clean cut at the east end, suitable for matching to the proposed block wall. Bid Item 1 per 04 rule (work not itemized elsewhere) — Inferred. 02 41 00 has no submittal or testing paragraph; C0.5 General Note requires a demolition plan with schedule (drawing requirement)."
L-0021,PROPOSED-Existing generator fuel tank and spill basin,"Existing generator fuel tank and concrete fuel spill basin — remove, restore as asphalt pavement",Civil,Civil & Site,Site,Demolished,C0.5 (KN 19); C0.1,"C0.5 p.12 [819.54,392.40,1087.92,405.54] anchor: C0.5 KN 19: matched: noun GENERATOR (Inferred), number read (Inferred) (sheet)",CWP 02,Demolition & Existing Conditions,1,None found,None found,None found,None found (no MTO line: no tied callout and no tag found on a cited sheet),02 41 00,C0.5 (tag); 02 41 00 (spec); Appendix F (spec); C0.1 (sheet),1,SUB C0.1-01 (sheet),tag 0; spec 0; sheet 1,N,2,ITP C0.5-01 (sheet); ITP C0.5-02 (sheet),tag 0; spec 0; sheet 2,N,None found (Add. 4 checked; Addenda 1-3 not staged),OI-0395 (sheet),2,OI-0327 (spec); OI-0469 (sheet),#28 (tag),"02-C01 Demolition & Existing Conditions — Existing generator, switchgear and fuel tank removal",2024-05-01,2024-05-31,2023-03-31,Not started (baseline: no progress entered),Inferred,C0.5 Keyed Note 19 (plans_2Part-4 p.1); C0.1 concrete fuel tank basin (plans_1 p.8); 02 41 00 ¶3.01–3.02 (main spec pp.161–162); Appendix F §5.3.1 (p.619),Bid Item 1 per 04 rule (work not itemized elsewhere) — Inferred. 02 41 00 has no submittal or testing paragraph; C0.5 General Note requires a demolition plan with schedule (drawing requirement). Appendix F §5.3.1: the Owner must have full use of the new generator before the old generator and switchgear are demolished. Cross-check: Electrical & Controls (existing generator and switchgear demolition). || [Merge] Exceptions: #28.
L-0022,PROPOSED-Existing chain link fence 119 LF,"Existing chain link fence, 119 LF — remove",Civil,Civil & Site,Site,Demolished,C0.5 (KN 20),"C0.5 p.12 [819.36,410.04,942.12,420.30] anchor: C0.5 KN 20: matched: quantity 119 LF (Inferred), number read (Inferred) (sheet)",CWP 02,Demolition & Existing Conditions,1,Not totaled: no Verified line,LF,MTO-0010 (sheet),Inferred — not totaled; lines: 1 Inferred (MTO Lines: Not Totaled Because),02 41 00,02 41 00 (spec); C0.5 (sheet),0,None found,tag 0; spec 0; sheet 0,N,2,ITP C0.5-01 (sheet); ITP C0.5-02 (sheet),tag 0; spec 0; sheet 2,N,None found (Add. 4 checked; Addenda 1-3 not staged),OI-0395 (sheet),2,OI-0327 (spec); OI-0469 (sheet),None found,02-C02 Demolition & Existing Conditions — Site demolition ahead of new work,2023-04-01,2023-05-31,2023-03-31,Not started (baseline: no progress entered),Inferred,C0.5 Keyed Note 20 (plans_2Part-4 p.1); 02 41 00 ¶3.01–3.02 (main spec pp.161–162),Bid Item 1 per 04 rule (work not itemized elsewhere) — Inferred. 02 41 00 has no submittal or testing paragraph; C0.5 General Note requires a demolition plan with schedule (drawing requirement).
L-0023,PROPOSED-Existing 4in storm drain 8 LF,"Existing 4-inch storm drain, 8 LF — remove",Civil,Civil & Site,Site,Demolished,C0.5 (KN 21),"C0.5 p.12 [818.64,422.10,931.50,433.98] anchor: C0.5 KN 21: matched: quantity 8 LF (Inferred), number by order (Unresolved) (sheet)",CWP 02,Demolition & Existing Conditions,1,Not totaled: no Verified line,LF,MTO-0011 (sheet),Unresolved — not totaled; lines: 1 Unresolved (MTO Lines: Not Totaled Because),02 41 00,02 41 00 (spec); C0.5 (sheet),0,None found,tag 0; spec 0; sheet 0,N,2,ITP C0.5-01 (sheet); ITP C0.5-02 (sheet),tag 0; spec 0; sheet 2,N,None found (Add. 4 checked; Addenda 1-3 not staged),OI-0395 (sheet),2,OI-0327 (spec); OI-0469 (sheet),None found,02-C02 Demolition & Existing Conditions — Site demolition ahead of new work,2023-04-01,2023-05-31,2023-03-31,Not started (baseline: no progress entered),Inferred,C0.5 Keyed Note 21 (plans_2Part-4 p.1); 02 41 00 ¶3.01–3.02 (main spec pp.161–162),Bid Item 1 per 04 rule (work not itemized elsewhere) — Inferred. 02 41 00 has no submittal or testing paragraph; C0.5 General Note requires a demolition plan with schedule (drawing requirement).
L-0024,PROPOSED-Water line relocation at storm drain,Existing water line — relocate 1 ft clear below bottom of storm drain,Civil,Civil & Site,Site,Not stated,C0.5 (KN 22),Not linked (PROPOSED tag is not printed; no boxed anchor matched),CWP 33,Yard Piping & Utilities,1,None found,None found,None found,None found (no MTO line: no tied callout and no tag found on a cited sheet),33 32 00; 33 30 00,33 32 00 (spec); 33 30 00 (spec); C0.5 (sheet),3,SUB 33 30 00-01 (spec); SUB 33 30 00-02 (spec); SUB 33 32 00-01 (spec),tag 0; spec 3; sheet 0,Y,7,ITP 33 30 00-01 (spec); ITP 33 30 00-02 (spec); ITP 33 32 00-01 (spec); ITP 33 32 00-02 (spec); ITP 33 32 00-03 (spec); ITP C0.5-01 (sheet); ITP C0.5-02 (sheet),tag 0; spec 5; sheet 2,Y,None found (Add. 4 checked; Addenda 1-3 not staged),OI-0390 (spec); OI-0395 (sheet),2,OI-0389 (spec); OI-0469 (sheet),None found,"33-C06 Yard Piping & Utilities — Yard piping, vaults and site utilities",2023-04-01,2023-11-01,2023-03-31,Not started (baseline: no progress entered),Inferred,C0.5 Keyed Note 22 (plans_2Part-4 p.1); 33 32 00 ¶1.03 (pp.436–437); 33 30 00 ¶3.04.9 (p.428),"Length and pipe size not stated. Bid Item 1 per 04 rule (work not itemized elsewhere) — Inferred. Relocated water pipe follows 33 32 00 (submittals) and 33 30 00 (pressure test, disinfection)."
L-0025,PROPOSED-Existing 8in influent pipe,Existing 8-inch influent pipe — abandon and remove,Process-Mechanical,Civil & Site,Site,Demolished,C0.5 (KN 24); C3.1 (cited),Not linked (PROPOSED tag is not printed; no boxed anchor matched),CWP 02,Demolition & Existing Conditions,1,None found,None found,None found,None found (no MTO line: no tied callout and no tag found on a cited sheet),02 41 00,02 41 00 (spec); C0.5 (sheet); C3.1 (sheet),1,SUB C3.1-01 (sheet),tag 0; spec 0; sheet 1,N,3,ITP C0.5-01 (sheet); ITP C0.5-02 (sheet); ITP C3.1-01 (sheet),tag 0; spec 0; sheet 3,N,None found (Add. 4 checked; Addenda 1-3 not staged),OI-0395 (sheet),2,OI-0327 (spec); OI-0469 (sheet),#77 (tag); #163 (tag),02-C02 Demolition & Existing Conditions — Site demolition ahead of new work,2023-04-01,2023-05-31,2023-03-31,Not started (baseline: no progress entered),Inferred,C0.5 Keyed Note 24 (plans_2Part-4 p.1); 02 41 00 ¶3.01–3.02 (main spec pp.161–162),"Per construction sequence notes on C3.1. Cross-lane: Process & Mechanical (C3.1). Bid Item 1 per 04 rule (work not itemized elsewhere) — Inferred. 02 41 00 has no submittal or testing paragraph; C0.5 General Note requires a demolition plan with schedule (drawing requirement). || [Merge] Exceptions: #77, #163."
L-0026,PROPOSED-Asphalt pavement sawcut and removal,Existing asphalt pavement — sawcut and remove (new surfacing on C2.6),Civil,Civil & Site,Site,Demolished,C0.5 (KN 25); C2.6 (cited by Add. 4); C2.1; C2.6,"C0.5 p.12 [819.36,478.62,915.84,489.06] anchor: C0.5 KN 25: matched: noun SAWCUT (Inferred), number by order (Unresolved) (sheet)",CWP 02,Demolition & Existing Conditions,1,None found,None found,None found,None found (no MTO line: no tied callout and no tag found on a cited sheet),02 41 00; 32 12 16,02 41 00 (spec); 32 12 16 (spec); C0.5 (sheet); C2.6 (sheet); C2.1 (sheet),2,SUB 32 12 16-01 (spec); SUB 32 12 16-02 (spec),tag 0; spec 2; sheet 0,N,3,ITP 32 12 16-01 (spec); ITP C0.5-01 (sheet); ITP C0.5-02 (sheet),tag 0; spec 1; sheet 2,N,"Add. 4 p.1, Clarification 1 — Add. 4 governs",OI-0395 (sheet),3,OI-0327 (spec); OI-0469 (sheet); OI-0472 (sheet),None found,02-C02 Demolition & Existing Conditions — Site demolition ahead of new work,2023-04-01,2023-05-31,2023-03-31,Not started (baseline: no progress entered),Inferred,"C0.5 Keyed Note 25; Add. 4 p.1, Clarification 1 (plans_2Part-4 p.1); 02 41 00 ¶3.01–3.02 (main spec pp.161–162); 32 12 16 ¶3.06 (pp.405–406); (Missing_Pages_Page_004.png, C2.6 — Verified-Visual); (Missing_Pages_Page_002.png, C2.1 — Verified-Visual)","Add. 4: saw-cut information is on C0.5; new surfacing is on C2.6, which is unavailable — Unresolved: needs C2.6. Bid Item 1 per 04 rule (work not itemized elsewhere) — Inferred. 02 41 00 has no submittal or testing paragraph; C0.5 General Note requires a demolition plan with schedule (drawing requirement). Full-depth continuous sawcuts, locations pre-approved by Owner (32 12 16 ¶3.06). [Resplit pass 2026-09-29] C2.6 read: new surfacing is asphalt paving per 3/C7.3 across the yard; C2.1 keyed note 2 repeats the sawcut line per C0.5. The ""needs C2.6"" item is closed."
L-0027,PROPOSED-Existing 8in slab over pre-aeration basin,"Existing 8-inch slab over original pre-aeration basin — saw cut, remove and dispose",Structural,Civil & Site,Site,Demolished,C0.5 (Demo Schedule 1),Not linked (PROPOSED tag is not printed; no boxed anchor matched),CWP 02,Demolition & Existing Conditions,1,None found,None found,None found,None found (no MTO line: no tied callout and no tag found on a cited sheet),02 41 00,02 41 00 (spec); C0.5 (sheet),0,None found,tag 0; spec 0; sheet 0,N,2,ITP C0.5-01 (sheet); ITP C0.5-02 (sheet),tag 0; spec 0; sheet 2,N,None found (Add. 4 checked; Addenda 1-3 not staged),OI-0395 (sheet),2,OI-0327 (spec); OI-0469 (sheet),None found,02-C02 Demolition & Existing Conditions — Site demolition ahead of new work,2023-04-01,2023-05-31,2023-03-31,Not started (baseline: no progress entered),Inferred,C0.5 Demolition Schedule 1 (plans_2Part-4 p.1); 02 41 00 ¶3.01–3.02 (main spec pp.161–162),"Saw cut close to the building's east face; the slab portion under the building stays. Cross-lane check: Process & Mechanical (flow splitter, C3.1–C3.2). Bid Item 1 per 04 rule (work not itemized elsewhere) — Inferred. 02 41 00 has no submittal or testing paragraph; C0.5 General Note requires a demolition plan with schedule (drawing requirement)."
L-0028,PROPOSED-Existing basin internal piping,"Existing internal piping in existing basin — support during fill removal, then remove",Process-Mechanical,Civil & Site,Site,Demolished,C0.5 (Demo Schedule 2–3),Not linked (PROPOSED tag is not printed; no boxed anchor matched),CWP 02,Demolition & Existing Conditions,1,None found,None found,None found,None found (no MTO line: no tied callout and no tag found on a cited sheet),02 41 00,02 41 00 (spec); C0.5 (sheet),0,None found,tag 0; spec 0; sheet 0,N,2,ITP C0.5-01 (sheet); ITP C0.5-02 (sheet),tag 0; spec 0; sheet 2,N,None found (Add. 4 checked; Addenda 1-3 not staged),OI-0395 (sheet),2,OI-0327 (spec); OI-0469 (sheet),None found,02-C02 Demolition & Existing Conditions — Site demolition ahead of new work,2023-04-01,2023-05-31,2023-03-31,Not started (baseline: no progress entered),Inferred,C0.5 Demolition Schedule 2–3 (plans_2Part-4 p.1); 02 41 00 ¶3.01–3.02 (main spec pp.161–162),Remove after the new flow splitter is operational. Cross-lane: Process & Mechanical. Bid Item 1 per 04 rule (work not itemized elsewhere) — Inferred. 02 41 00 has no submittal or testing paragraph; C0.5 General Note requires a demolition plan with schedule (drawing requirement).
L-0029,PROPOSED-Off-site staging area,"Contractor staging area off Mt Baker Road, with vehicle path to the project site",Civil,Civil & Site,Site (off-site staging),Temporary,C0.6,Not linked (PROPOSED tag is not printed; no boxed anchor matched),CWP 01,General Requirements & Temporary Works,1,None found,None found,None found,None found (no MTO line: no tied callout and no tag found on a cited sheet),None found (no spec section cited in rev0),C0.6 (sheet),0,None found,tag 0; spec 0; sheet 0,N,0,None found,tag 0; spec 0; sheet 0,N,None found (Add. 4 checked; Addenda 1-3 not staged),None found,0,None found,None found,01-C02 General Requirements & Temporary Works — Temporary facilities and controls,2023-03-15,2024-10-16,2023-03-14,Not started (baseline: no progress entered),Inferred,"C0.6 Keyed Note 1, legend (plans_2Part-5 p.1)","Silt fence per 3/C0.4 around it (see filter fabric fence row). Owner, size and restoration not stated. Bid Item 1 per 04 rule (work not itemized elsewhere) — Inferred. No submittal or test in this lane's spec sections."
L-0030,Pipe ID 1,8-inch existing effluent (DI gravity),Civil,Civil & Site,Site,Existing,C1.3 (Add. 4 p.7),"C1.3 p.17 [878.28,146.46,978.97,152.09] text-layer (+1 read) — base page superseded by Add. 4 p.7 (tag)",CWP 33,Yard Piping & Utilities,1,None found,None found,None found,None found (no MTO line: no tied callout and no tag found on a cited sheet),33 30 00,C1.3 (tag); 33 30 00 (spec),2,SUB 33 30 00-01 (spec); SUB 33 30 00-02 (spec),tag 0; spec 2; sheet 0,N,3,ITP 33 30 00-01 (spec); ITP 33 30 00-02 (spec); ITP C1.3-01 (sheet),tag 0; spec 2; sheet 1,N,Add. 4 p.7 (C1.3 reissue) and p.3 item — Add. 4 governs,OI-0390 (spec),1,OI-0252 (sheet),None found,"33-C06 Yard Piping & Utilities — Yard piping, vaults and site utilities",2023-04-01,2023-11-01,2023-03-31,Not started (baseline: no progress entered),Inferred,"C1.3 Pipe Identification Legend, base plans_3Part-1 p.1 and Add. 4 p.7",Bid Item 1 per 04 rule (work not itemized elsewhere) — Inferred. Existing line; no new-work submittal or test applies.
L-0031,Pipe ID 2,"4-inch UV disinfection drain and digester supernatant (DI gravity), 2% min",Civil,Civil & Site,Site,New,C1.3 (Add. 4 p.7),"C1.3 p.17 [878.16,157.50,1067.09,168.65] text-layer (+1 read) — base page superseded by Add. 4 p.7 (tag)",CWP 33,Yard Piping & Utilities,1,None found,None found,None found,None found (no MTO line: no tied callout and no tag found on a cited sheet),33 31 00; 33 30 00; 33 05 00,C1.3 (tag); 33 31 00 (spec); 33 30 00 (spec); 33 05 00 (spec),4,SUB 33 05 00-01 (spec); SUB 33 30 00-01 (spec); SUB 33 30 00-02 (spec); SUB 33 31 00-00 (spec),tag 0; spec 4; sheet 0,Y,5,ITP 33 05 00-00 (spec); ITP 33 30 00-01 (spec); ITP 33 30 00-02 (spec); ITP 33 31 00-01 (spec); ITP C1.3-01 (sheet),tag 0; spec 4; sheet 1,Y,Add. 4 p.7 (C1.3 reissue) and p.3 item — Add. 4 governs,OI-0390 (spec),1,OI-0252 (sheet),#88 (tag),"33-C06 Yard Piping & Utilities — Yard piping, vaults and site utilities",2023-04-01,2023-11-01,2023-03-31,Not started (baseline: no progress entered),Inferred,"C1.3 Pipe Identification Legend, base plans_3Part-1 p.1 and Add. 4 p.7; 33 31 00 ¶2.01 C (pp.430–432); 33 30 00 ¶1.02, ¶3.04 (pp.420–429)","Cross-check: Process & Mechanical (in-plant piping, 02 decision D). Bid Item 1 per 04 rule (work not itemized elsewhere) — Inferred. Status 'New' Inferred: proposed legend, only ID 1 is marked existing. || [Merge] Exceptions: #88."
L-0032,Pipe ID 3,"8-inch influent (DI gravity), 0.4% min",Civil,Civil & Site,Site,New,C1.3 (Add. 4 p.7),"C1.3 p.17 [878.16,173.70,1000.08,179.21] text-layer (+1 read) — base page superseded by Add. 4 p.7 (tag)",CWP 33,Yard Piping & Utilities,1,None found,None found,None found,None found (no MTO line: no tied callout and no tag found on a cited sheet),33 31 00; 33 30 00; 33 05 00,C1.3 (tag); 33 31 00 (spec); 33 30 00 (spec); 33 05 00 (spec),4,SUB 33 05 00-01 (spec); SUB 33 30 00-01 (spec); SUB 33 30 00-02 (spec); SUB 33 31 00-00 (spec),tag 0; spec 4; sheet 0,Y,5,ITP 33 05 00-00 (spec); ITP 33 30 00-01 (spec); ITP 33 30 00-02 (spec); ITP 33 31 00-01 (spec); ITP C1.3-01 (sheet),tag 0; spec 4; sheet 1,Y,Add. 4 p.7 (C1.3 reissue) and p.3 item — Add. 4 governs,OI-0390 (spec),1,OI-0252 (sheet),#87 (tag),"33-C06 Yard Piping & Utilities — Yard piping, vaults and site utilities",2023-04-01,2023-11-01,2023-03-31,Not started (baseline: no progress entered),Inferred,"C1.3 Pipe Identification Legend, base plans_3Part-1 p.1 and Add. 4 p.7; 33 31 00 ¶2.01 C (pp.430–432); 33 30 00 ¶1.02, ¶3.04 (pp.420–429)","Bid Item 1 per 04 rule (work not itemized elsewhere) — Inferred. Status 'New' Inferred: proposed legend, only ID 1 is marked existing. || [Merge] Exceptions: #87."
L-0033,Pipe ID 4,"3-inch influent pump station air vent (SS), outlet 8 ft above finish grade, gooseneck down, fastened to exterior building wall",Process-Mechanical,Civil & Site,Site,New,C1.3 (Add. 4 p.7),"C1.3 p.17 [878.16,184.62,1068.43,207.89] text-layer (+1 read) — base page superseded by Add. 4 p.7 (tag)",CWP 33,Yard Piping & Utilities,1,None found,None found,None found,None found (no MTO line: no tied callout and no tag found on a cited sheet),33 30 00; 33 05 00,C1.3 (tag); 33 30 00 (spec); 33 05 00 (spec),3,SUB 33 05 00-01 (spec); SUB 33 30 00-01 (spec); SUB 33 30 00-02 (spec),tag 0; spec 3; sheet 0,Y,4,ITP 33 05 00-00 (spec); ITP 33 30 00-01 (spec); ITP 33 30 00-02 (spec); ITP C1.3-01 (sheet),tag 0; spec 3; sheet 1,Y,Add. 4 p.7 (C1.3 reissue) and p.3 item — Add. 4 governs,OI-0390 (spec),1,OI-0252 (sheet),None found,"33-C06 Yard Piping & Utilities — Yard piping, vaults and site utilities",2023-04-01,2023-11-01,2023-03-31,Not started (baseline: no progress entered),Inferred,"C1.3 Pipe Identification Legend, base plans_3Part-1 p.1 and Add. 4 p.7; 33 30 00 ¶1.02, ¶3.04 (pp.420–429)","Cross-check: Process & Mechanical (Influent Pump Station). Bid Item 1 per 04 rule (work not itemized elsewhere) — Inferred. Status 'New' Inferred: proposed legend, only ID 1 is marked existing."
L-0034,Pipe ID 5,"10-inch UV disinfection effluent (DI gravity), 0.28% min",Civil,Civil & Site,Site,New,C1.3 (Add. 4 p.7),"C1.3 p.17 [878.04,212.82,1051.97,218.33] text-layer (+1 read) — base page superseded by Add. 4 p.7 (tag)",CWP 33,Yard Piping & Utilities,1,None found,None found,None found,None found (no MTO line: no tied callout and no tag found on a cited sheet),33 31 00; 33 30 00; 33 05 00,C1.3 (tag); 33 31 00 (spec); 33 30 00 (spec); 33 05 00 (spec),4,SUB 33 05 00-01 (spec); SUB 33 30 00-01 (spec); SUB 33 30 00-02 (spec); SUB 33 31 00-00 (spec),tag 0; spec 4; sheet 0,Y,5,ITP 33 05 00-00 (spec); ITP 33 30 00-01 (spec); ITP 33 30 00-02 (spec); ITP 33 31 00-01 (spec); ITP C1.3-01 (sheet),tag 0; spec 4; sheet 1,Y,Add. 4 p.7 (C1.3 reissue) and p.3 item — Add. 4 governs,OI-0390 (spec),1,OI-0252 (sheet),#92 (tag),"33-C06 Yard Piping & Utilities — Yard piping, vaults and site utilities",2023-04-01,2023-11-01,2023-03-31,Not started (baseline: no progress entered),Inferred,"C1.3 Pipe Identification Legend, base plans_3Part-1 p.1 and Add. 4 p.7; 33 31 00 ¶2.01 C (pp.430–432); 33 30 00 ¶1.02, ¶3.04 (pp.420–429)","Likely the 'new 10-in effluent' of C0.5 KN 8 — Inferred. Bid Item 1 per 04 rule (work not itemized elsewhere) — Inferred. Status 'New' Inferred: proposed legend, only ID 1 is marked existing. || [Merge] Exceptions: #92."
L-0035,Pipe ID 6,"4-inch building septic (Sch. 80 PVC gravity), 2% min",Civil,Civil & Site,Site,New,C1.3 (Add. 4 p.7),"C1.3 p.17 [878.16,225.78,1040.71,231.29] text-layer (+1 read) — base page superseded by Add. 4 p.7 (tag)",CWP 33,Yard Piping & Utilities,1,None found,None found,None found,None found (no MTO line: no tied callout and no tag found on a cited sheet),33 31 00; 33 30 00; 33 05 00,Appendix H (tag); C1.3 (tag); 33 31 00 (spec); 33 30 00 (spec); 33 05 00 (spec),4,SUB 33 05 00-01 (spec); SUB 33 30 00-01 (spec); SUB 33 30 00-02 (spec); SUB 33 31 00-00 (spec),tag 0; spec 4; sheet 0,Y,5,ITP 33 05 00-00 (spec); ITP 33 30 00-01 (spec); ITP 33 30 00-02 (spec); ITP 33 31 00-01 (spec); ITP C1.3-01 (sheet),tag 0; spec 4; sheet 1,Y,Add. 4 p.7 (C1.3 reissue) and p.3 item — Add. 4 governs,OI-0390 (spec),1,OI-0252 (sheet),None found,"33-C06 Yard Piping & Utilities — Yard piping, vaults and site utilities",2023-04-01,2023-11-01,2023-03-31,Not started (baseline: no progress entered),Inferred,"C1.3 Pipe Identification Legend, base plans_3Part-1 p.1 and Add. 4 p.7; 33 31 00 ¶2.01 C (pp.430–432); 33 30 00 ¶1.02, ¶3.04 (pp.420–429)","Add. 4 red edit corrects 'CLOPE' to 'SLOPE' only. Bid Item 1 per 04 rule (work not itemized elsewhere) — Inferred. Status 'New' Inferred: proposed legend, only ID 1 is marked existing."
L-0036,Pipe ID 7,"2-inch digested sludge (Sch. 80 PVC force main), positive slope throughout",Civil,Civil & Site,Site; Existing building (C1.6A),New,C1.3 (Add. 4 p.7); C1.6A (Add. 4 p.8),"C1.3 p.17 [878.04,236.82,1040.32,247.85] text-layer (+1 read) — base page superseded by Add. 4 p.7 (tag)",CWP 33,Yard Piping & Utilities,1,None found,None found,None found,None found (no MTO line: no tied callout and no tag found on a cited sheet),33 31 00; 33 30 00; 33 05 00,C1.3 (tag); 33 31 00 (spec); 33 30 00 (spec); 33 05 00 (spec); C1.6A (sheet),4,SUB 33 05 00-01 (spec); SUB 33 30 00-01 (spec); SUB 33 30 00-02 (spec); SUB 33 31 00-00 (spec),tag 0; spec 4; sheet 0,Y,6,ITP 33 05 00-00 (spec); ITP 33 30 00-01 (spec); ITP 33 30 00-02 (spec); ITP 33 31 00-01 (spec); ITP C1.3-01 (sheet); ITP C1.6A-01 (sheet),tag 0; spec 4; sheet 2,Y,Add. 4 p.7 (C1.3 reissue) and p.3 item — Add. 4 governs; Add. 4 p.3 and p.8 (C1.6A) — Add. 4 governs,OI-0390 (spec),1,OI-0252 (sheet),#90 (tag),"33-C06 Yard Piping & Utilities — Yard piping, vaults and site utilities",2023-04-01,2023-11-01,2023-03-31,Not started (baseline: no progress entered),Inferred,"C1.3 Pipe Identification Legend, base plans_3Part-1 p.1 and Add. 4 p.7; C1.6A callout (Add. 4 p.8); 33 31 00 ¶2.01 B (pp.430–432); 33 30 00 ¶1.02, ¶3.04 (pp.420–429)","Cross-check: Process & Mechanical (in-plant piping). Under-slab segment on C1.6A (2-in digested sludge, digester to pump and pump to dewatering skid), routed below the existing floor; match to this ID Inferred by size and service. Bid Item 1 per 04 rule (work not itemized elsewhere) — Inferred. Status 'New' Inferred: proposed legend, only ID 1 is marked existing. Force main test at 1.5x operating pressure or 150 psi, 15 min (33 30 00 ¶3.04.8). || [Merge] Exceptions: #90."
L-0037,Pipe ID 8,"4-inch vault drain (Sch. 80 PVC gravity), 2.0%",Civil,Civil & Site,Site,New,C1.3 (Add. 4 p.7); C7.10,"C1.3 p.17 [878.16,252.90,1022.56,258.41] text-layer (+1 read) — base page superseded by Add. 4 p.7 (tag)",CWP 33,Yard Piping & Utilities,1,None found,None found,None found,None found (no MTO line: no tied callout and no tag found on a cited sheet),33 31 00; 33 30 00; 33 05 00,C1.3 (tag); C7.10 (tag); 33 31 00 (spec); 33 30 00 (spec); 33 05 00 (spec),5,SUB 33 05 00-01 (spec); SUB 33 30 00-01 (spec); SUB 33 30 00-02 (spec); SUB 33 31 00-00 (spec); SUB C7.10-01 (sheet),tag 0; spec 4; sheet 1,Y,5,ITP 33 05 00-00 (spec); ITP 33 30 00-01 (spec); ITP 33 30 00-02 (spec); ITP 33 31 00-01 (spec); ITP C1.3-01 (sheet),tag 0; spec 4; sheet 1,Y,Add. 4 p.7 (C1.3 reissue) and p.3 item — Add. 4 governs,OI-0390 (spec),1,OI-0252 (sheet),None found,"33-C06 Yard Piping & Utilities — Yard piping, vaults and site utilities",2023-04-01,2023-11-01,2023-03-31,Not started (baseline: no progress entered),Inferred,"C1.3 Pipe Identification Legend, base plans_3Part-1 p.1 and Add. 4 p.7; C7.10 elevations (plans_7 p.4); 33 31 00 ¶2.01 C (pp.430–432); 33 30 00 ¶1.02, ¶3.04 (pp.420–429)","Flow meter vault floor drains run to the influent pump station (C7.10); match to Pipe ID 8 Inferred. Bid Item 1 per 04 rule (work not itemized elsewhere) — Inferred. Status 'New' Inferred: proposed legend, only ID 1 is marked existing."
L-0038,Pipe ID 9,"1-inch 2W water system air vent (SS), outlet 3 ft above grade, gooseneck down",Process-Mechanical,Civil & Site,Site,New,C1.3 (Add. 4 p.7),"C1.3 p.17 [878.04,263.82,1064.79,280.97] text-layer (+1 read) — base page superseded by Add. 4 p.7 (tag)",CWP 33,Yard Piping & Utilities,1,None found,None found,None found,None found (no MTO line: no tied callout and no tag found on a cited sheet),33 30 00; 33 05 00,C1.3 (tag); 33 30 00 (spec); 33 05 00 (spec),3,SUB 33 05 00-01 (spec); SUB 33 30 00-01 (spec); SUB 33 30 00-02 (spec),tag 0; spec 3; sheet 0,Y,4,ITP 33 05 00-00 (spec); ITP 33 30 00-01 (spec); ITP 33 30 00-02 (spec); ITP C1.3-01 (sheet),tag 0; spec 3; sheet 1,Y,Add. 4 p.7 (C1.3 reissue) and p.3 item — Add. 4 governs,OI-0390 (spec),1,OI-0252 (sheet),None found,"33-C06 Yard Piping & Utilities — Yard piping, vaults and site utilities",2023-04-01,2023-11-01,2023-03-31,Not started (baseline: no progress entered),Inferred,"C1.3 Pipe Identification Legend, base plans_3Part-1 p.1 and Add. 4 p.7; 33 30 00 ¶1.02, ¶3.04 (pp.420–429)","Cross-check: Process & Mechanical (2W system). Bid Item 1 per 04 rule (work not itemized elsewhere) — Inferred. Status 'New' Inferred: proposed legend, only ID 1 is marked existing."
L-0039,Pipe ID 10,"3-inch 2W water line, HDPE (Add. 4; base: 2-inch Sch. 80 PVC force main)",Civil,Civil & Site,Site; Existing building (C1.6A),New,C1.3 (Add. 4 p.7); C1.6A (Add. 4 p.8),"C1.3 p.17 [876.60,286.02,985.12,291.53] text-layer (+1 read) — base page superseded by Add. 4 p.7 (tag)",CWP 33,Yard Piping & Utilities,1,None found,None found,None found,None found (no MTO line: no tied callout and no tag found on a cited sheet),33 31 00; 33 30 00; 33 05 00; 33 33 00,C1.3 (tag); 33 31 00 (spec); 33 30 00 (spec); 33 05 00 (spec); 33 33 00 (spec); C1.6A (sheet),7,SUB 33 05 00-01 (spec); SUB 33 30 00-01 (spec); SUB 33 30 00-02 (spec); SUB 33 31 00-00 (spec); SUB 33 33 00-01 (spec); SUB 33 33 00-02 (spec); SUB 33 33 00-03 (spec),tag 0; spec 7; sheet 0,Y,8,ITP 33 05 00-00 (spec); ITP 33 30 00-01 (spec); ITP 33 30 00-02 (spec); ITP 33 31 00-01 (spec); ITP 33 33 00-01 (spec); ITP 33 33 00-02 (spec); ITP C1.3-01 (sheet); ITP C1.6A-01 (sheet),tag 0; spec 6; sheet 2,Y,Add. 4 p.7 (C1.3 reissue) and p.3 item — Add. 4 governs; Add. 4 p.3 and p.8 (C1.6A) — Add. 4 governs,OI-0390 (spec),1,OI-0252 (sheet),#50 (tag),"33-C06 Yard Piping & Utilities — Yard piping, vaults and site utilities",2023-04-01,2023-11-01,2023-03-31,Not started (baseline: no progress entered),Inferred,"C1.3 Pipe Identification Legend, base plans_3Part-1 p.1 and Add. 4 p.7; C1.6A callout (Add. 4 p.8); 33 31 00 ¶2.01 E (pp.430–432); 33 30 00 ¶1.02, ¶3.04 (pp.420–429); 33 33 00 ¶1.02–1.03, ¶3.03–3.04 (pp.444–446)","Add. 4 p.7 strikes 'SCH. 80 PVC FM', adds 'HDPE' and changes size to 3 in; base plans_3Part-1 p.1 reads 2-in Sch. 80 PVC — Add. 4 governs. Under-slab segment on C1.6A (3-in 2W water reducing to 2-in before the sub-floor run to the dewatering skid), routed below the existing floor; match to this ID Inferred by size and service. Bid Item 1 per 04 rule (work not itemized elsewhere) — Inferred. Status 'New' Inferred: proposed legend, only ID 1 is marked existing. Buried 2W water is PE4710 IPS HDPE DR11 (33 31 00 ¶2.01 E); test 200 psi (33 30 00 ¶3.04.8). HDPE: fusion operator qualifications before ordering pipe; data-logged fusion joints with 3 or 3% destructive tests; ASTM F2164 pressure test (33 33 00). || [Merge] Exceptions: #50."
L-0040,Pipe ID 11,"8-inch Train 3 influent (DI gravity), 0.4% min",Civil,Civil & Site,Site,New,C1.3 (Add. 4 p.7),"C1.3 p.17 [876.84,298.98,1020.75,304.49] text-layer (+1 read) — base page superseded by Add. 4 p.7 (tag)",CWP 33,Yard Piping & Utilities,1,None found,None found,None found,None found (no MTO line: no tied callout and no tag found on a cited sheet),33 31 00; 33 30 00; 33 05 00,C1.3 (tag); C7.10 (tag); 33 31 00 (spec); 33 30 00 (spec); 33 05 00 (spec),4,SUB 33 05 00-01 (spec); SUB 33 30 00-01 (spec); SUB 33 30 00-02 (spec); SUB 33 31 00-00 (spec),tag 0; spec 4; sheet 0,Y,5,ITP 33 05 00-00 (spec); ITP 33 30 00-01 (spec); ITP 33 30 00-02 (spec); ITP 33 31 00-01 (spec); ITP C1.3-01 (sheet),tag 0; spec 4; sheet 1,Y,Add. 4 p.7 (C1.3 reissue) and p.3 item — Add. 4 governs,OI-0390 (spec),1,OI-0252 (sheet),#81 (tag),"33-C06 Yard Piping & Utilities — Yard piping, vaults and site utilities",2023-04-01,2023-11-01,2023-03-31,Not started (baseline: no progress entered),Inferred,"C1.3 Pipe Identification Legend, base plans_3Part-1 p.1 and Add. 4 p.7; 33 31 00 ¶2.01 C (pp.430–432); 33 30 00 ¶1.02, ¶3.04 (pp.420–429)","Bid Item 1 per 04 rule (work not itemized elsewhere) — Inferred. Status 'New' Inferred: proposed legend, only ID 1 is marked existing. || [Merge] Exceptions: #81."
L-0041,Pipe ID 12,2-inch water pipe (Sch. 80 PVC force main),Civil,Civil & Site,Site,New,C1.3 (Add. 4 p.7),"C1.3 p.17 [876.60,311.94,976.46,317.45] text-layer (+1 read) — base page superseded by Add. 4 p.7 (tag)",CWP 33,Yard Piping & Utilities,1,None found,None found,None found,None found (no MTO line: no tied callout and no tag found on a cited sheet),33 32 00; 33 30 00; 33 05 00,C1.3 (tag); 33 32 00 (spec); 33 30 00 (spec); 33 05 00 (spec),4,SUB 33 05 00-01 (spec); SUB 33 30 00-01 (spec); SUB 33 30 00-02 (spec); SUB 33 32 00-01 (spec),tag 0; spec 4; sheet 0,Y,7,ITP 33 05 00-00 (spec); ITP 33 30 00-01 (spec); ITP 33 30 00-02 (spec); ITP 33 32 00-01 (spec); ITP 33 32 00-02 (spec); ITP 33 32 00-03 (spec); ITP C1.3-01 (sheet),tag 0; spec 6; sheet 1,Y,Add. 4 p.7 (C1.3 reissue) and p.3 item — Add. 4 governs,OI-0382 (tag); OI-0390 (spec),3,OI-0430 (tag); OI-0389 (spec); OI-0252 (sheet),#191 (tag),"33-C06 Yard Piping & Utilities — Yard piping, vaults and site utilities",2023-04-01,2023-11-01,2023-03-31,Not started (baseline: no progress entered),Unresolved,"C1.3 Pipe Identification Legend, base plans_3Part-1 p.1 and Add. 4 p.7; 33 32 00 ¶1.03, ¶2.02–2.03 (pp.436–438); 33 30 00 ¶3.04.9 (p.428)","Likely the 'new water service' of C0.5 KN 6 — Inferred. Bid Item 1 per 04 rule (work not itemized elsewhere) — Inferred. Status 'New' Inferred: proposed legend, only ID 1 is marked existing. Material conflict: C1.3 shows 2-in Sch. 80 PVC; 33 32 00 calls for C900 PVC or DI mains and HDPE service pipe (see Issues CS-29) — Unresolved. || [Merge] Exceptions: #191."
L-0042,Pipe ID 13,"8-inch Train 2 influent (DI gravity), 0.4% min",Civil,Civil & Site,Site,New,C1.3 (Add. 4 p.7),"C1.3 p.17 [876.48,324.90,1020.75,330.41] text-layer (+1 read) — base page superseded by Add. 4 p.7 (tag)",CWP 33,Yard Piping & Utilities,1,None found,None found,None found,None found (no MTO line: no tied callout and no tag found on a cited sheet),33 31 00; 33 30 00; 33 05 00,C1.3 (tag); C7.10 (tag); 33 31 00 (spec); 33 30 00 (spec); 33 05 00 (spec),4,SUB 33 05 00-01 (spec); SUB 33 30 00-01 (spec); SUB 33 30 00-02 (spec); SUB 33 31 00-00 (spec),tag 0; spec 4; sheet 0,Y,5,ITP 33 05 00-00 (spec); ITP 33 30 00-01 (spec); ITP 33 30 00-02 (spec); ITP 33 31 00-01 (spec); ITP C1.3-01 (sheet),tag 0; spec 4; sheet 1,Y,Add. 4 p.7 (C1.3 reissue) and p.3 item — Add. 4 governs,OI-0390 (spec),1,OI-0252 (sheet),#80 (tag),"33-C06 Yard Piping & Utilities — Yard piping, vaults and site utilities",2023-04-01,2023-11-01,2023-03-31,Not started (baseline: no progress entered),Inferred,"C1.3 Pipe Identification Legend, base plans_3Part-1 p.1 and Add. 4 p.7; 33 31 00 ¶2.01 C (pp.430–432); 33 30 00 ¶1.02, ¶3.04 (pp.420–429)","C1.3 KN 1: cut existing 8-in pipe and connect new 8-in influent to Train 2. Bid Item 1 per 04 rule (work not itemized elsewhere) — Inferred. Status 'New' Inferred: proposed legend, only ID 1 is marked existing. || [Merge] Exceptions: #80."
L-0043,Pipe ID 14,"8-inch Train 1 influent (DI gravity), 0.4% min",Civil,Civil & Site,Site,New,C1.3 (Add. 4 p.7),"C1.3 p.17 [876.60,337.86,1020.75,343.37] text-layer (+1 read) — base page superseded by Add. 4 p.7 (tag)",CWP 33,Yard Piping & Utilities,1,None found,None found,None found,None found (no MTO line: no tied callout and no tag found on a cited sheet),33 31 00; 33 30 00; 33 05 00,C1.3 (tag); 33 31 00 (spec); 33 30 00 (spec); 33 05 00 (spec),4,SUB 33 05 00-01 (spec); SUB 33 30 00-01 (spec); SUB 33 30 00-02 (spec); SUB 33 31 00-00 (spec),tag 0; spec 4; sheet 0,Y,5,ITP 33 05 00-00 (spec); ITP 33 30 00-01 (spec); ITP 33 30 00-02 (spec); ITP 33 31 00-01 (spec); ITP C1.3-01 (sheet),tag 0; spec 4; sheet 1,Y,Add. 4 p.7 (C1.3 reissue) and p.3 item — Add. 4 governs,OI-0390 (spec),1,OI-0252 (sheet),#79 (tag),"33-C06 Yard Piping & Utilities — Yard piping, vaults and site utilities",2023-04-01,2023-11-01,2023-03-31,Not started (baseline: no progress entered),Inferred,"C1.3 Pipe Identification Legend, base plans_3Part-1 p.1 and Add. 4 p.7; 33 31 00 ¶2.01 C (pp.430–432); 33 30 00 ¶1.02, ¶3.04 (pp.420–429)","C1.3 KN 2: extend new 8-in pipe to Train 1. Bid Item 1 per 04 rule (work not itemized elsewhere) — Inferred. Status 'New' Inferred: proposed legend, only ID 1 is marked existing. || [Merge] Exceptions: #79."
L-0044,Pipe ID 15,"2-inch Train 3 WAS (Sch. 80 PVC gravity), positive drainage throughout",Civil,Civil & Site,Site; Existing building (C1.6A),New,C1.3 (Add. 4 p.7); C1.6A (Add. 4 p.8),"C1.3 p.17 [876.48,348.78,1062.12,359.93] text-layer (+1 read) — base page superseded by Add. 4 p.7 (tag)",CWP 33,Yard Piping & Utilities,1,None found,None found,None found,None found (no MTO line: no tied callout and no tag found on a cited sheet),33 31 00; 33 30 00; 33 05 00,C1.3 (tag); 33 31 00 (spec); 33 30 00 (spec); 33 05 00 (spec); C1.6A (sheet),4,SUB 33 05 00-01 (spec); SUB 33 30 00-01 (spec); SUB 33 30 00-02 (spec); SUB 33 31 00-00 (spec),tag 0; spec 4; sheet 0,Y,6,ITP 33 05 00-00 (spec); ITP 33 30 00-01 (spec); ITP 33 30 00-02 (spec); ITP 33 31 00-01 (spec); ITP C1.3-01 (sheet); ITP C1.6A-01 (sheet),tag 0; spec 4; sheet 2,Y,Add. 4 p.7 (C1.3 reissue) and p.3 item — Add. 4 governs; Add. 4 p.3 and p.8 (C1.6A) — Add. 4 governs,OI-0382 (tag); OI-0390 (spec),1,OI-0252 (sheet),#85 (tag),"33-C06 Yard Piping & Utilities — Yard piping, vaults and site utilities",2023-04-01,2023-11-01,2023-03-31,Not started (baseline: no progress entered),Unresolved,"C1.3 Pipe Identification Legend, base plans_3Part-1 p.1 and Add. 4 p.7; C1.6A callout (Add. 4 p.8); 33 31 00 ¶2.01 F (pp.430–432); 33 30 00 ¶1.02, ¶3.04 (pp.420–429)","Cross-check: Process & Mechanical (in-plant piping). Under-slab segment on C1.6A (2-in WAS, Train #3 to pump), routed below the existing floor; match to this ID Inferred by size and service. Bid Item 1 per 04 rule (work not itemized elsewhere) — Inferred. Status 'New' Inferred: proposed legend, only ID 1 is marked existing. Material conflict: C1.3 shows Sch. 80 PVC; 33 31 00 ¶2.01 F.2 requires buried WAS discharge piping in DI (see Issues CS-29) — Unresolved. || [Merge] Exceptions: #85."
L-0045,Pipe ID 16,"8-inch Train 2 effluent (DI gravity), 0.4% min",Civil,Civil & Site,Site; Existing building (C1.6A),New,C1.3 (Add. 4 p.7); C1.6A (Add. 4 p.8),"C1.3 p.17 [876.48,364.86,1022.15,370.37] text-layer (+1 read) — base page superseded by Add. 4 p.7 (tag)",CWP 33,Yard Piping & Utilities,1,None found,None found,None found,None found (no MTO line: no tied callout and no tag found on a cited sheet),33 31 00; 33 30 00; 33 05 00,C1.3 (tag); 33 31 00 (spec); 33 30 00 (spec); 33 05 00 (spec); C1.6A (sheet),4,SUB 33 05 00-01 (spec); SUB 33 30 00-01 (spec); SUB 33 30 00-02 (spec); SUB 33 31 00-00 (spec),tag 0; spec 4; sheet 0,Y,6,ITP 33 05 00-00 (spec); ITP 33 30 00-01 (spec); ITP 33 30 00-02 (spec); ITP 33 31 00-01 (spec); ITP C1.3-01 (sheet); ITP C1.6A-01 (sheet),tag 0; spec 4; sheet 2,Y,Add. 4 p.7 (C1.3 reissue) and p.3 item — Add. 4 governs; Add. 4 p.3 and p.8 (C1.6A) — Add. 4 governs,OI-0390 (spec),1,OI-0252 (sheet),#83 (tag),"33-C06 Yard Piping & Utilities — Yard piping, vaults and site utilities",2023-04-01,2023-11-01,2023-03-31,Not started (baseline: no progress entered),Inferred,"C1.3 Pipe Identification Legend, base plans_3Part-1 p.1 and Add. 4 p.7; C1.6A callout (Add. 4 p.8); 33 31 00 ¶2.01 C (pp.430–432); 33 30 00 ¶1.02, ¶3.04 (pp.420–429)","Under-slab segment on C1.6A (8-in secondary effluent, Train #2 clarifier to UV disinfection), routed below the existing floor; match to this ID Inferred by size and service. Bid Item 1 per 04 rule (work not itemized elsewhere) — Inferred. Status 'New' Inferred: proposed legend, only ID 1 is marked existing. || [Merge] Exceptions: #83."
L-0046,Pipe ID 17,"8-inch Train 3 effluent (DI gravity), 0.4% min",Civil,Civil & Site,Site,New,C1.3 (Add. 4 p.7),"C1.3 p.17 [876.48,377.82,1022.15,383.33] text-layer (+1 read) — base page superseded by Add. 4 p.7 (tag)",CWP 33,Yard Piping & Utilities,1,None found,None found,None found,None found (no MTO line: no tied callout and no tag found on a cited sheet),33 31 00; 33 30 00; 33 05 00,C1.3 (tag); 33 31 00 (spec); 33 30 00 (spec); 33 05 00 (spec),4,SUB 33 05 00-01 (spec); SUB 33 30 00-01 (spec); SUB 33 30 00-02 (spec); SUB 33 31 00-00 (spec),tag 0; spec 4; sheet 0,Y,5,ITP 33 05 00-00 (spec); ITP 33 30 00-01 (spec); ITP 33 30 00-02 (spec); ITP 33 31 00-01 (spec); ITP C1.3-01 (sheet),tag 0; spec 4; sheet 1,Y,Add. 4 p.7 (C1.3 reissue) and p.3 item — Add. 4 governs,OI-0390 (spec),1,OI-0252 (sheet),#84 (tag),"33-C06 Yard Piping & Utilities — Yard piping, vaults and site utilities",2023-04-01,2023-11-01,2023-03-31,Not started (baseline: no progress entered),Inferred,"C1.3 Pipe Identification Legend, base plans_3Part-1 p.1 and Add. 4 p.7; 33 31 00 ¶2.01 C (pp.430–432); 33 30 00 ¶1.02, ¶3.04 (pp.420–429)","Bid Item 1 per 04 rule (work not itemized elsewhere) — Inferred. Status 'New' Inferred: proposed legend, only ID 1 is marked existing. || [Merge] Exceptions: #84."
L-0047,Pipe ID 18,"6-inch influent to flow splitter (DI force main), positive slope throughout",Civil,Civil & Site,Site,New,C1.3 (Add. 4 p.7),"C1.3 p.17 [876.48,388.86,1041.15,399.89] text-layer (+1 read) — base page superseded by Add. 4 p.7 (tag)",CWP 33,Yard Piping & Utilities,1,None found,None found,None found,None found (no MTO line: no tied callout and no tag found on a cited sheet),33 31 00; 33 30 00; 33 05 00,C1.3 (tag); 33 31 00 (spec); 33 30 00 (spec); 33 05 00 (spec),4,SUB 33 05 00-01 (spec); SUB 33 30 00-01 (spec); SUB 33 30 00-02 (spec); SUB 33 31 00-00 (spec),tag 0; spec 4; sheet 0,Y,5,ITP 33 05 00-00 (spec); ITP 33 30 00-01 (spec); ITP 33 30 00-02 (spec); ITP 33 31 00-01 (spec); ITP C1.3-01 (sheet),tag 0; spec 4; sheet 1,Y,Add. 4 p.7 (C1.3 reissue) and p.3 item — Add. 4 governs,OI-0390 (spec),1,OI-0252 (sheet),#86 (tag),"33-C06 Yard Piping & Utilities — Yard piping, vaults and site utilities",2023-04-01,2023-11-01,2023-03-31,Not started (baseline: no progress entered),Inferred,"C1.3 Pipe Identification Legend, base plans_3Part-1 p.1 and Add. 4 p.7; 33 31 00 ¶2.01 B (pp.430–432); 33 30 00 ¶1.02, ¶3.04 (pp.420–429)","Cross-check: Process & Mechanical (Influent Flow Splitter). Bid Item 1 per 04 rule (work not itemized elsewhere) — Inferred. Status 'New' Inferred: proposed legend, only ID 1 is marked existing. Force main test at 1.5x operating pressure or 150 psi, 15 min (33 30 00 ¶3.04.8). || [Merge] Exceptions: #86."
L-0048,Pipe ID 19,2-inch digester WAS influent (Sch. 80 PVC gravity),Civil,Civil & Site,Site; Existing building (C1.6A),New,C1.3 (Add. 4 p.7); C1.6A (Add. 4 p.8),"C1.3 p.17 [876.48,404.94,1018.37,410.45] text-layer (+1 read) — base page superseded by Add. 4 p.7 (tag)",CWP 33,Yard Piping & Utilities,1,None found,None found,None found,None found (no MTO line: no tied callout and no tag found on a cited sheet),33 31 00; 33 30 00; 33 05 00,C1.3 (tag); 33 31 00 (spec); 33 30 00 (spec); 33 05 00 (spec); C1.6A (sheet),4,SUB 33 05 00-01 (spec); SUB 33 30 00-01 (spec); SUB 33 30 00-02 (spec); SUB 33 31 00-00 (spec),tag 0; spec 4; sheet 0,Y,6,ITP 33 05 00-00 (spec); ITP 33 30 00-01 (spec); ITP 33 30 00-02 (spec); ITP 33 31 00-01 (spec); ITP C1.3-01 (sheet); ITP C1.6A-01 (sheet),tag 0; spec 4; sheet 2,Y,Add. 4 p.7 (C1.3 reissue) and p.3 item — Add. 4 governs; Add. 4 p.3 and p.8 (C1.6A) — Add. 4 governs,OI-0382 (tag); OI-0390 (spec),1,OI-0252 (sheet),#91 (tag),"33-C06 Yard Piping & Utilities — Yard piping, vaults and site utilities",2023-04-01,2023-11-01,2023-03-31,Not started (baseline: no progress entered),Unresolved,"C1.3 Pipe Identification Legend, base plans_3Part-1 p.1 and Add. 4 p.7; C1.6A callout (Add. 4 p.8); 33 31 00 ¶2.01 F (pp.430–432); 33 30 00 ¶1.02, ¶3.04 (pp.420–429)","Cross-check: Process & Mechanical (in-plant piping). Under-slab segment on C1.6A (2-in WAS, pump to digester), routed below the existing floor; match to this ID Inferred by size and service. Bid Item 1 per 04 rule (work not itemized elsewhere) — Inferred. Status 'New' Inferred: proposed legend, only ID 1 is marked existing. Material conflict: C1.3 shows Sch. 80 PVC; 33 31 00 ¶2.01 F.2 requires buried WAS discharge piping in DI (see Issues CS-29) — Unresolved. || [Merge] Exceptions: #91."
L-0049,Pipe ID 20,6-inch Cell 3 air (SS),Process-Mechanical,Civil & Site,Site,New,C1.3 (Add. 4 p.7),"C1.3 p.17 [876.72,417.90,939.30,423.41] text-layer (+1 read) — base page superseded by Add. 4 p.7 (tag)",CWP 33,Yard Piping & Utilities,1,None found,None found,None found,None found (no MTO line: no tied callout and no tag found on a cited sheet),33 31 00; 33 30 00; 33 05 00,C1.3 (tag); 33 31 00 (spec); 33 30 00 (spec); 33 05 00 (spec),4,SUB 33 05 00-01 (spec); SUB 33 30 00-01 (spec); SUB 33 30 00-02 (spec); SUB 33 31 00-00 (spec),tag 0; spec 4; sheet 0,Y,5,ITP 33 05 00-00 (spec); ITP 33 30 00-01 (spec); ITP 33 30 00-02 (spec); ITP 33 31 00-01 (spec); ITP C1.3-01 (sheet),tag 0; spec 4; sheet 1,Y,Add. 4 p.7 (C1.3 reissue) and p.3 item — Add. 4 governs,OI-0382 (tag); OI-0390 (spec),1,OI-0252 (sheet),#93 (tag); #159 (tag),"33-C06 Yard Piping & Utilities — Yard piping, vaults and site utilities",2023-04-01,2023-11-01,2023-03-31,Not started (baseline: no progress entered),Unresolved,"C1.3 Pipe Identification Legend, base plans_3Part-1 p.1 and Add. 4 p.7; 33 31 00 ¶2.01 D (pp.430–432); 33 30 00 ¶1.02, ¶3.04 (pp.420–429)","Cross-check: Process & Mechanical (process air). Bid Item 1 per 04 rule (work not itemized elsewhere) — Inferred. Status 'New' Inferred: proposed legend, only ID 1 is marked existing. Material conflict: C1.3 shows SS; 33 31 00 ¶2.01 D.2 requires buried aeration piping 4 in and larger in poly-wrapped DI (see Issues CS-29) — Unresolved. || [Merge] Exceptions: #93, #159."
L-0050,Pipe ID 21,4-inch digester air (SS),Process-Mechanical,Civil & Site,Site; Existing building (C1.6A),New,C1.3 (Add. 4 p.7); C1.6A (Add. 4 p.8),"C1.3 p.17 [877.08,430.86,948.36,436.37] text-layer (+1 read) — base page superseded by Add. 4 p.7 (tag)",CWP 33,Yard Piping & Utilities,1,None found,None found,None found,None found (no MTO line: no tied callout and no tag found on a cited sheet),33 31 00; 33 30 00; 33 05 00,C1.3 (tag); 33 31 00 (spec); 33 30 00 (spec); 33 05 00 (spec); C1.6A (sheet),4,SUB 33 05 00-01 (spec); SUB 33 30 00-01 (spec); SUB 33 30 00-02 (spec); SUB 33 31 00-00 (spec),tag 0; spec 4; sheet 0,Y,6,ITP 33 05 00-00 (spec); ITP 33 30 00-01 (spec); ITP 33 30 00-02 (spec); ITP 33 31 00-01 (spec); ITP C1.3-01 (sheet); ITP C1.6A-01 (sheet),tag 0; spec 4; sheet 2,Y,Add. 4 p.7 (C1.3 reissue) and p.3 item — Add. 4 governs; Add. 4 p.3 and p.8 (C1.6A) — Add. 4 governs,OI-0382 (tag); OI-0390 (spec),1,OI-0252 (sheet),#94 (tag),"33-C06 Yard Piping & Utilities — Yard piping, vaults and site utilities",2023-04-01,2023-11-01,2023-03-31,Not started (baseline: no progress entered),Unresolved,"C1.3 Pipe Identification Legend, base plans_3Part-1 p.1 and Add. 4 p.7; C1.6A callout (Add. 4 p.8); 33 31 00 ¶2.01 D (pp.430–432); 33 30 00 ¶1.02, ¶3.04 (pp.420–429)","Cross-check: Process & Mechanical (process air). Under-slab segment on C1.6A (4-in air, blower to digester), routed below the existing floor; match to this ID Inferred by size and service. Bid Item 1 per 04 rule (work not itemized elsewhere) — Inferred. Status 'New' Inferred: proposed legend, only ID 1 is marked existing. Material conflict: C1.3 shows SS; 33 31 00 ¶2.01 D.2 requires buried aeration piping 4 in and larger in poly-wrapped DI (see Issues CS-29) — Unresolved. || [Merge] Exceptions: #94."
L-0051,Pipe ID 22,"1-inch yard hydrants, 3 locations (Add. 4)",Civil,Civil & Site,Site,New,C1.3 (Add. 4 p.7); C7.1 (Det. 1); C7.5 (Det. 1),"C1.3 Add. 4 p.7 [875.62,442.09,1034.01,453.49] text-layer (tag)",CWP 33,Yard Piping & Utilities,1,3,EA,MTO-0012 (tag),Verified — 1 line totaled,33 31 00; 33 30 00; 33 05 00,C1.3 (tag); C7.1 (tag); C7.5 (tag); 33 31 00 (spec); 33 30 00 (spec); 33 05 00 (spec),7,SUB 33 05 00-01 (spec); SUB 33 30 00-01 (spec); SUB 33 30 00-02 (spec); SUB 33 31 00-00 (spec); SUB C7.1-01 (sheet); SUB C7.5-01 (sheet); SUB C7.5-02 (sheet),tag 0; spec 4; sheet 3,Y,6,ITP 33 05 00-00 (spec); ITP 33 30 00-01 (spec); ITP 33 30 00-02 (spec); ITP 33 31 00-01 (spec); ITP C1.3-01 (sheet); ITP C7.1-01 (sheet),tag 0; spec 4; sheet 2,Y,Add. 4 p.7 (C1.3 reissue) and p.3 item — Add. 4 governs,OI-0390 (spec),1,OI-0252 (sheet),#52 (tag); #180 (tag),"33-C06 Yard Piping & Utilities — Yard piping, vaults and site utilities",2023-04-01,2023-11-01,2023-03-31,Not started (baseline: no progress entered),Unresolved,"C1.3 Pipe Identification Legend, base plans_3Part-1 p.1 and Add. 4 p.7; C7.1 Detail 1 (plans_6 p.3); C7.5 Detail 1 (plans_6 p.7); 33 31 00 ¶2.01 K (pp.430–432); 33 30 00 ¶1.02, ¶3.04 (pp.420–429)","Which yard hydrant detail applies is not stated: C7.1 Det. 1 (1-in frostproof with vacuum breaker) or C7.5 Det. 1 (2W plant water station, non-potable sign, hose rack) — Unresolved (see Issues). Added by Add. 4 p.7 as an additional piping label (Add. 4 p.3). Bid Item 1 per 04 rule (work not itemized elsewhere) — Inferred. Status 'New' Inferred: proposed legend, only ID 1 is marked existing. 33 31 00 ¶2.01 K: two 3/4-in x 50-ft fire hoses per 1-in yard hydrant. || [Merge] Exceptions: #52, #180."
L-0052,Pipe ID 23,"1-inch 2W water line, HDPE (Add. 4)",Civil,Civil & Site,Site; Existing building (C1.6A),New,C1.3 (Add. 4 p.7); C1.6A (Add. 4 p.8),"C1.3 Add. 4 p.7 [875.62,456.21,992.29,492.12] ocr (tag)",CWP 33,Yard Piping & Utilities,1,None found,None found,None found,None found (no MTO line: no tied callout and no tag found on a cited sheet),33 31 00; 33 30 00; 33 05 00; 33 33 00,C1.3 (tag); 33 31 00 (spec); 33 30 00 (spec); 33 05 00 (spec); 33 33 00 (spec); C1.6A (sheet),7,SUB 33 05 00-01 (spec); SUB 33 30 00-01 (spec); SUB 33 30 00-02 (spec); SUB 33 31 00-00 (spec); SUB 33 33 00-01 (spec); SUB 33 33 00-02 (spec); SUB 33 33 00-03 (spec),tag 0; spec 7; sheet 0,Y,8,ITP 33 05 00-00 (spec); ITP 33 30 00-01 (spec); ITP 33 30 00-02 (spec); ITP 33 31 00-01 (spec); ITP 33 33 00-01 (spec); ITP 33 33 00-02 (spec); ITP C1.3-01 (sheet); ITP C1.6A-01 (sheet),tag 0; spec 6; sheet 2,Y,Add. 4 p.7 (C1.3 reissue) and p.3 item — Add. 4 governs; Add. 4 p.3 and p.8 (C1.6A) — Add. 4 governs,OI-0390 (spec),2,OI-0253 (tag); OI-0252 (sheet),#51 (tag); #146 (tag),"33-C06 Yard Piping & Utilities — Yard piping, vaults and site utilities",2023-04-01,2023-11-01,2023-03-31,Not started (baseline: no progress entered),Inferred,"C1.3 Pipe Identification Legend, base plans_3Part-1 p.1 and Add. 4 p.7; C1.6A callout (Add. 4 p.8); 33 31 00 ¶2.01 E (pp.430–432); 33 30 00 ¶1.02, ¶3.04 (pp.420–429); 33 33 00 ¶1.02–1.03, ¶3.03–3.04 (pp.444–446)","Added by Add. 4 p.7 (Add. 4 p.3: additional piping labels). Under-slab segment on C1.6A (1-in 2W water, bladder tanks to 3-in 2W pipe), routed below the existing floor; match to this ID Inferred by size and service. Bid Item 1 per 04 rule (work not itemized elsewhere) — Inferred. Status 'New' Inferred: proposed legend, only ID 1 is marked existing. Buried 2W water is PE4710 IPS HDPE DR11 (33 31 00 ¶2.01 E); test 200 psi (33 30 00 ¶3.04.8). HDPE: fusion operator qualifications before ordering pipe; data-logged fusion joints with 3 or 3% destructive tests; ASTM F2164 pressure test (33 33 00). || [Merge] Exceptions: #51, #146."
L-0053,Pipe ID 24,"8-inch Train 1 effluent (DI gravity), 0.4% min (Add. 4)",Civil,Civil & Site,Site,New,C1.3 (Add. 4 p.7),"C1.3 Add. 4 p.7 [875.74,503.46,1096.69,534.83] ocr (tag)",CWP 33,Yard Piping & Utilities,1,None found,None found,None found,None found (no MTO line: no tied callout and no tag found on a cited sheet),33 31 00; 33 30 00; 33 05 00,C1.3 (tag); 33 31 00 (spec); 33 30 00 (spec); 33 05 00 (spec),4,SUB 33 05 00-01 (spec); SUB 33 30 00-01 (spec); SUB 33 30 00-02 (spec); SUB 33 31 00-00 (spec),tag 0; spec 4; sheet 0,Y,5,ITP 33 05 00-00 (spec); ITP 33 30 00-01 (spec); ITP 33 30 00-02 (spec); ITP 33 31 00-01 (spec); ITP C1.3-01 (sheet),tag 0; spec 4; sheet 1,Y,Add. 4 p.7 (C1.3 reissue) and p.3 item — Add. 4 governs,OI-0390 (spec),1,OI-0252 (sheet),#82 (tag),"33-C06 Yard Piping & Utilities — Yard piping, vaults and site utilities",2023-04-01,2023-11-01,2023-03-31,Not started (baseline: no progress entered),Inferred,"C1.3 Pipe Identification Legend, base plans_3Part-1 p.1 and Add. 4 p.7; 33 31 00 ¶2.01 C (pp.430–432); 33 30 00 ¶1.02, ¶3.04 (pp.420–429)","Added by Add. 4 p.7 (Add. 4 p.3: additional piping labels). Bid Item 1 per 04 rule (work not itemized elsewhere) — Inferred. Status 'New' Inferred: proposed legend, only ID 1 is marked existing. || [Merge] Exceptions: #82."
L-0054,Pipe ID 25,"4-inch pressate drain (DI gravity), 2% min (Add. 4)",Civil,Civil & Site,Site; Existing building (C1.6A),New,C1.3 (Add. 4 p.7); C1.6A (Add. 4 p.8),"C1.3 Add. 4 p.7 [875.74,539.65,1086.11,550.64] text-layer (tag)",CWP 33,Yard Piping & Utilities,1,None found,None found,None found,None found (no MTO line: no tied callout and no tag found on a cited sheet),33 31 00; 33 30 00; 33 05 00,C1.3 (tag); 33 31 00 (spec); 33 30 00 (spec); 33 05 00 (spec); C1.6A (sheet),4,SUB 33 05 00-01 (spec); SUB 33 30 00-01 (spec); SUB 33 30 00-02 (spec); SUB 33 31 00-00 (spec),tag 0; spec 4; sheet 0,Y,6,ITP 33 05 00-00 (spec); ITP 33 30 00-01 (spec); ITP 33 30 00-02 (spec); ITP 33 31 00-01 (spec); ITP C1.3-01 (sheet); ITP C1.6A-01 (sheet),tag 0; spec 4; sheet 2,Y,Add. 4 p.7 (C1.3 reissue) and p.3 item — Add. 4 governs; Add. 4 p.3 and p.8 (C1.6A) — Add. 4 governs,OI-0390 (spec),1,OI-0252 (sheet),#89 (tag),"33-C06 Yard Piping & Utilities — Yard piping, vaults and site utilities",2023-04-01,2023-11-01,2023-03-31,Not started (baseline: no progress entered),Inferred,"C1.3 Pipe Identification Legend, base plans_3Part-1 p.1 and Add. 4 p.7; C1.6A callout (Add. 4 p.8); 33 31 00 ¶2.01 C (pp.430–432); 33 30 00 ¶1.02, ¶3.04 (pp.420–429)","Added by Add. 4 p.7 (Add. 4 p.3: additional piping labels). Cross-check: Process & Mechanical (dewatering). Under-slab segment on C1.6A (4-in pressate drain, dewatering skid to influent pump station), routed below the existing floor; match to this ID Inferred by size and service. Bid Item 1 per 04 rule (work not itemized elsewhere) — Inferred. Status 'New' Inferred: proposed legend, only ID 1 is marked existing. || [Merge] Exceptions: #89."
L-0055,Pipe ID 26,"4-inch building floor drain (DI gravity), 2% min (Add. 4)",Civil,Civil & Site,Site,New,C1.3 (Add. 4 p.7),"C1.3 Add. 4 p.7 [875.80,555.72,1111.54,566.83] text-layer (tag)",CWP 33,Yard Piping & Utilities,1,None found,None found,None found,None found (no MTO line: no tied callout and no tag found on a cited sheet),33 31 00; 33 30 00; 33 05 00,C1.3 (tag); 33 31 00 (spec); 33 30 00 (spec); 33 05 00 (spec),4,SUB 33 05 00-01 (spec); SUB 33 30 00-01 (spec); SUB 33 30 00-02 (spec); SUB 33 31 00-00 (spec),tag 0; spec 4; sheet 0,Y,5,ITP 33 05 00-00 (spec); ITP 33 30 00-01 (spec); ITP 33 30 00-02 (spec); ITP 33 31 00-01 (spec); ITP C1.3-01 (sheet),tag 0; spec 4; sheet 1,Y,Add. 4 p.7 (C1.3 reissue) and p.3 item — Add. 4 governs,OI-0390 (spec),1,OI-0252 (sheet),None found,"33-C06 Yard Piping & Utilities — Yard piping, vaults and site utilities",2023-04-01,2023-11-01,2023-03-31,Not started (baseline: no progress entered),Inferred,"C1.3 Pipe Identification Legend, base plans_3Part-1 p.1 and Add. 4 p.7; 33 31 00 ¶2.01 C (pp.430–432); 33 30 00 ¶1.02, ¶3.04 (pp.420–429)","Added by Add. 4 p.7 (Add. 4 p.3: additional piping labels). Bid Item 1 per 04 rule (work not itemized elsewhere) — Inferred. Status 'New' Inferred: proposed legend, only ID 1 is marked existing."
L-0056,PROPOSED-Existing Train 1 influent pipe,Existing Train 1 influent pipe — abandon and plug,Civil,Civil & Site,Site,Existing,C1.3 (Add. 4 p.7) KN 2,"C1.3 Add. 4 p.7 [851.58,501.48,1096.69,628.74] anchor: C1.3 KN 2: matched: noun PLUG (Inferred), number read (Inferred) (sheet)",CWP 02,Demolition & Existing Conditions,1,None found,None found,None found,None found (no MTO line: no tied callout and no tag found on a cited sheet),02 41 00,02 41 00 (spec); C1.3 (sheet),0,None found,tag 0; spec 0; sheet 0,N,1,ITP C1.3-01 (sheet),tag 0; spec 0; sheet 1,N,Add. 4 p.7 (C1.3 reissue) and p.3 item — Add. 4 governs,None found,2,OI-0327 (spec); OI-0252 (sheet),None found,"02-C03 Demolition & Existing Conditions — Yard piping, vaults and site utilities",2023-04-01,2023-11-01,2023-03-31,Not started (baseline: no progress entered),Inferred,C1.3 Keyed Note 2 (Add. 4 p.7); 02 41 00 ¶3.01 B.1 (p.161),"Abandoned and plugged in place, not removed. Bid Item 1 per 04 rule (work not itemized elsewhere) — Inferred. Plug or grout per 02 41 00 ¶3.01 B.1."
L-0057,Hot Box #1,2W water hot box #1 — flow meter and isolation valve (relocated per Add. 4),Civil,Civil & Site,Site,New,C1.3 (Add. 4 p.7); C7.6 (Det. 1),"C1.1 p.15 [1021.24,87.13,1062.54,94.20] bluebeam-ocr — sheet not cited (tag); C1.3 Add. 4 p.7 [391.31,713.38,430.88,724.37] text-layer (tag); C7.6 p.48 [186.00,734.92,296.47,751.68] text-layer (+1 read) (tag); E4.3 p.72 [174.42,313.08,202.64,318.11] text-layer (+1 read) — sheet not cited (tag); E6.3 p.76 [991.26,621.18,1022.04,625.14] ocr (+3 reads) — sheet not cited (tag); E7.4 p.81 [845.95,280.68,875.57,285.71] text-layer — sheet not cited (tag); E10.2 p.95 [332.01,616.02,363.03,621.05] text-layer — sheet not cited (tag)",CWP 43,Blowers & 2W Plant Water System,1,1,EA,MTO-0013 (tag),Verified — 1 line totaled,None found (no spec section cited in rev0),C1.3 (tag); C7.6 (tag); E10.2 (tag); E4.3 (tag); E7.4 (tag),0,None found,tag 0; spec 0; sheet 0,N,1,ITP C1.3-01 (sheet),tag 0; spec 0; sheet 1,N,Add. 4 p.7 (C1.3 reissue) and p.3 item — Add. 4 governs,OI-0368 (tag),3,OI-0202 (tag); OI-0377 (tag); OI-0252 (sheet),#16 (tag); #95 (tag); #149 (tag); #193 (tag); #206 (tag),"43-C05 Blowers & 2W Plant Water System — Yard piping, vaults and site utilities",2023-04-01,2023-11-01,2023-03-31,Not started (baseline: no progress entered),Inferred,"Add. 4 p.7 markup 'Move Hot Box #1 and #2 as shown'; Add. 4 p.3 C1.3 item; C7.6 Detail 1, Material List (plans_6 p.8)","Locked, insulated, heated enclosure on 58x24x4-in slab; holds 1-in flow meter, ASCO 8221 solenoid valve, Spears check valve, Orenco FCA flow control assembly; heat trace and receptacle. Add. 4: moved and reoriented for vehicle traffic; adjust conduit, wiring and plumbing. Status 'New' Inferred. Cross-check: Process & Mechanical (2W system) and Electrical & Controls (conduit and wiring; 04 lists Item 6 for these moves). Bid Item 1 per 04 rule (work not itemized elsewhere) — Inferred. No submittal or test in this lane's spec sections; 2W system equipment is in 43 22 10 (Process & Mechanical). || [Merge] Exceptions: #16, #95, #149, #193, #206."
L-0058,Hot Box #2,2W water hot box #2 — air gap piping (relocated per Add. 4),Civil,Civil & Site,Site,New,C1.3 (Add. 4 p.7); C7.6 (Det. 2–3),"C1.1 p.15 [1020.60,104.76,1054.80,110.34] ocr (+1 read) — sheet not cited (tag); C7.6 p.48 [654.12,290.80,764.59,307.56] text-layer (+1 read) (tag); E4.3 p.72 [174.96,68.10,203.18,73.13] text-layer (+1 read) — sheet not cited (tag); E6.3 p.76 [1006.38,613.62,1037.70,617.58] ocr (+1 read) — sheet not cited (tag)",CWP 43,Blowers & 2W Plant Water System,1,1,EA,MTO-0014 (tag),Verified — 1 line totaled,None found (no spec section cited in rev0),C1.3 (tag); C7.6 (tag); E4.3 (tag),0,None found,tag 0; spec 0; sheet 0,N,1,ITP C1.3-01 (sheet),tag 0; spec 0; sheet 1,N,Add. 4 p.7 (C1.3 reissue) and p.3 item — Add. 4 governs,None found,2,OI-0415 (tag); OI-0252 (sheet),#17 (tag); #169 (tag); #183 (tag),"43-C05 Blowers & 2W Plant Water System — Yard piping, vaults and site utilities",2023-04-01,2023-11-01,2023-03-31,Not started (baseline: no progress entered),Inferred,Add. 4 p.7 markup 'Move Hot Box #1 and #2 as shown'; Add. 4 p.3 C1.3 item; C7.6 Details 2–3 (plans_6 p.8),"Air gap piping (two pipe diameters) to funnel and 4-in Sch. 80 PVC drain; enclosure Hot Box HB2ST or approved equal. Add. 4: moved and reoriented for vehicle traffic; adjust conduit, wiring and plumbing. Status 'New' Inferred. Cross-check: Process & Mechanical (2W system) and Electrical & Controls (conduit and wiring; 04 lists Item 6 for these moves). Bid Item 1 per 04 rule (work not itemized elsewhere) — Inferred. No submittal or test in this lane's spec sections; 2W system equipment is in 43 22 10 (Process & Mechanical). || [Merge] Exceptions: #17, #169, #183."
L-0059,Buried Valve ID 1,6-inch gate valve — influent flow meter isolation,Civil,Civil & Site,Site,New,C1.4; C7.3 (Det. 2),"C1.4 p.18 [878.28,147.06,1033.74,152.09] text-layer (tag)",CWP 33,Yard Piping & Utilities,1,1,EA,MTO-0015 (tag),Verified — 1 line totaled,33 30 00; 33 05 00,C1.4 (tag); 33 30 00 (spec); 33 05 00 (spec); C7.3 (sheet),4,SUB 33 05 00-01 (spec); SUB 33 30 00-01 (spec); SUB 33 30 00-02 (spec); SUB C1.4-01 (sheet),tag 0; spec 3; sheet 1,Y,5,ITP 33 05 00-00 (spec); ITP 33 30 00-01 (spec); ITP 33 30 00-02 (spec); ITP C1.4-01 (sheet); ITP C7.3-01 (sheet),tag 0; spec 3; sheet 2,Y,None found (Add. 4 checked; Addenda 1-3 not staged),OI-0390 (spec),0,None found,#177 (tag),"33-C06 Yard Piping & Utilities — Yard piping, vaults and site utilities",2023-04-01,2023-11-01,2023-03-31,Not started (baseline: no progress entered),Inferred,"C1.4 Buried Valve Identification Legend (plans_3Part-2 p.1); C7.3 Detail 2 schedule (plans_6 p.5); 33 30 00 ¶1.02 D, ¶3.04.6 (pp.421, 428); 33 05 00 ¶3.025 B (p.419)",Same description on C7.3 Detail 2 schedule. Label marker and valve box per C7.3 Det. 4. Status 'New' Inferred (proposed legend). Cross-check: Process & Mechanical (45 05 00 Valves). Bid Item 1 per 04 rule (work not itemized elsewhere) — Inferred. Tested with the adjacent pipeline; buried valve nuts and bolts bituminous-coated and valve poly-wrapped (33 05 00 ¶3.025 B). || [Merge] Exceptions: #177.
L-0060,Buried Valve ID 2,8-inch gate valve — Train 2 flow meter isolation,Civil,Civil & Site,Site,New,C1.4; C7.3 (Det. 2); C7.10,"C1.4 p.18 [878.16,160.02,1028.44,165.05] text-layer (tag)",CWP 33,Yard Piping & Utilities,1,1,EA,MTO-0016 (tag),Verified — 1 line totaled,33 30 00; 33 05 00,C1.4 (tag); 33 30 00 (spec); 33 05 00 (spec); C7.3 (sheet); C7.10 (sheet),5,SUB 33 05 00-01 (spec); SUB 33 30 00-01 (spec); SUB 33 30 00-02 (spec); SUB C1.4-01 (sheet); SUB C7.10-01 (sheet),tag 0; spec 3; sheet 2,Y,5,ITP 33 05 00-00 (spec); ITP 33 30 00-01 (spec); ITP 33 30 00-02 (spec); ITP C1.4-01 (sheet); ITP C7.3-01 (sheet),tag 0; spec 3; sheet 2,Y,None found (Add. 4 checked; Addenda 1-3 not staged),OI-0380 (tag); OI-0390 (spec),0,None found,None found,"33-C06 Yard Piping & Utilities — Yard piping, vaults and site utilities",2023-04-01,2023-11-01,2023-03-31,Not started (baseline: no progress entered),Unresolved,"C1.4 Buried Valve Identification Legend (plans_3Part-2 p.1); C7.3 Detail 2 schedule (plans_6 p.5); C7.10 Detail 1 (plans_7 p.4); 33 30 00 ¶1.02 D, ¶3.04.6 (pp.421, 428); 33 05 00 ¶3.025 B (p.419)","C7.10 shows 8-in plug valves upstream and downstream of the meter, not one 8-in gate valve (see Issues CS-15) — Unresolved. Same description on C7.3 Detail 2 schedule. Label marker and valve box per C7.3 Det. 4. Status 'New' Inferred (proposed legend). Cross-check: Process & Mechanical (45 05 00 Valves). Bid Item 1 per 04 rule (work not itemized elsewhere) — Inferred. Tested with the adjacent pipeline; buried valve nuts and bolts bituminous-coated and valve poly-wrapped (33 05 00 ¶3.025 B)."
L-0061,Buried Valve ID 3,8-inch gate valve — Train 3 flow meter isolation,Civil,Civil & Site,Site,New,C1.4; C7.3 (Det. 2); C7.10,"C1.4 p.18 [878.16,172.86,1028.44,178.01] text-layer (tag)",CWP 33,Yard Piping & Utilities,1,1,EA,MTO-0017 (tag),Verified — 1 line totaled,33 30 00; 33 05 00,C1.4 (tag); 33 30 00 (spec); 33 05 00 (spec); C7.3 (sheet); C7.10 (sheet),5,SUB 33 05 00-01 (spec); SUB 33 30 00-01 (spec); SUB 33 30 00-02 (spec); SUB C1.4-01 (sheet); SUB C7.10-01 (sheet),tag 0; spec 3; sheet 2,Y,5,ITP 33 05 00-00 (spec); ITP 33 30 00-01 (spec); ITP 33 30 00-02 (spec); ITP C1.4-01 (sheet); ITP C7.3-01 (sheet),tag 0; spec 3; sheet 2,Y,None found (Add. 4 checked; Addenda 1-3 not staged),OI-0380 (tag); OI-0390 (spec),0,None found,None found,"33-C06 Yard Piping & Utilities — Yard piping, vaults and site utilities",2023-04-01,2023-11-01,2023-03-31,Not started (baseline: no progress entered),Unresolved,"C1.4 Buried Valve Identification Legend (plans_3Part-2 p.1); C7.3 Detail 2 schedule (plans_6 p.5); C7.10 Detail 2 (plans_7 p.4); 33 30 00 ¶1.02 D, ¶3.04.6 (pp.421, 428); 33 05 00 ¶3.025 B (p.419)","C7.10 shows 8-in plug valves upstream and downstream of the meter, not one 8-in gate valve (see Issues CS-15) — Unresolved. Same description on C7.3 Detail 2 schedule. Label marker and valve box per C7.3 Det. 4. Status 'New' Inferred (proposed legend). Cross-check: Process & Mechanical (45 05 00 Valves). Bid Item 1 per 04 rule (work not itemized elsewhere) — Inferred. Tested with the adjacent pipeline; buried valve nuts and bolts bituminous-coated and valve poly-wrapped (33 05 00 ¶3.025 B)."
L-0062,Buried Valve ID 4,4-inch gate valve — drain flow meter isolation,Civil,Civil & Site,Site,New,C1.4; C7.3 (Det. 2),"C1.4 p.18 [878.16,186.42,1024.92,191.45] text-layer (tag)",CWP 33,Yard Piping & Utilities,1,1,EA,MTO-0018 (tag),Verified — 1 line totaled,33 30 00; 33 05 00,C1.4 (tag); 33 30 00 (spec); 33 05 00 (spec); C7.3 (sheet),4,SUB 33 05 00-01 (spec); SUB 33 30 00-01 (spec); SUB 33 30 00-02 (spec); SUB C1.4-01 (sheet),tag 0; spec 3; sheet 1,Y,5,ITP 33 05 00-00 (spec); ITP 33 30 00-01 (spec); ITP 33 30 00-02 (spec); ITP C1.4-01 (sheet); ITP C7.3-01 (sheet),tag 0; spec 3; sheet 2,Y,None found (Add. 4 checked; Addenda 1-3 not staged),OI-0390 (spec),0,None found,None found,"33-C06 Yard Piping & Utilities — Yard piping, vaults and site utilities",2023-04-01,2023-11-01,2023-03-31,Not started (baseline: no progress entered),Inferred,"C1.4 Buried Valve Identification Legend (plans_3Part-2 p.1); C7.3 Detail 2 schedule (plans_6 p.5); 33 30 00 ¶1.02 D, ¶3.04.6 (pp.421, 428); 33 05 00 ¶3.025 B (p.419)",Same description on C7.3 Detail 2 schedule. Label marker and valve box per C7.3 Det. 4. Status 'New' Inferred (proposed legend). Cross-check: Process & Mechanical (45 05 00 Valves). Bid Item 1 per 04 rule (work not itemized elsewhere) — Inferred. Tested with the adjacent pipeline; buried valve nuts and bolts bituminous-coated and valve poly-wrapped (33 05 00 ¶3.025 B).
L-0063,Buried Valve ID 5,4-inch gate valve — drain flow meter isolation,Civil,Civil & Site,Site,New,C1.4; C7.3 (Det. 2),"C1.4 p.18 [878.04,199.98,1024.92,205.01] text-layer (tag)",CWP 33,Yard Piping & Utilities,1,1,EA,MTO-0019 (tag),Verified — 1 line totaled,33 30 00; 33 05 00,C1.4 (tag); 33 30 00 (spec); 33 05 00 (spec); C7.3 (sheet),4,SUB 33 05 00-01 (spec); SUB 33 30 00-01 (spec); SUB 33 30 00-02 (spec); SUB C1.4-01 (sheet),tag 0; spec 3; sheet 1,Y,5,ITP 33 05 00-00 (spec); ITP 33 30 00-01 (spec); ITP 33 30 00-02 (spec); ITP C1.4-01 (sheet); ITP C7.3-01 (sheet),tag 0; spec 3; sheet 2,Y,None found (Add. 4 checked; Addenda 1-3 not staged),OI-0390 (spec),0,None found,None found,"33-C06 Yard Piping & Utilities — Yard piping, vaults and site utilities",2023-04-01,2023-11-01,2023-03-31,Not started (baseline: no progress entered),Inferred,"C1.4 Buried Valve Identification Legend (plans_3Part-2 p.1); C7.3 Detail 2 schedule (plans_6 p.5); 33 30 00 ¶1.02 D, ¶3.04.6 (pp.421, 428); 33 05 00 ¶3.025 B (p.419)",Same description on C7.3 Detail 2 schedule. Label marker and valve box per C7.3 Det. 4. Status 'New' Inferred (proposed legend). Cross-check: Process & Mechanical (45 05 00 Valves). Bid Item 1 per 04 rule (work not itemized elsewhere) — Inferred. Tested with the adjacent pipeline; buried valve nuts and bolts bituminous-coated and valve poly-wrapped (33 05 00 ¶3.025 B).
L-0064,Buried Valve ID 6,4-inch gate valve — treated effluent outlet box drain,Civil,Civil & Site,Site,New,C1.4; C7.3 (Det. 2),"C1.4 p.18 [878.16,212.94,1047.27,217.97] text-layer (tag)",CWP 33,Yard Piping & Utilities,1,1,EA,MTO-0020 (tag),Verified — 1 line totaled,33 30 00; 33 05 00,C1.4 (tag); 33 30 00 (spec); 33 05 00 (spec); C7.3 (sheet),4,SUB 33 05 00-01 (spec); SUB 33 30 00-01 (spec); SUB 33 30 00-02 (spec); SUB C1.4-01 (sheet),tag 0; spec 3; sheet 1,Y,5,ITP 33 05 00-00 (spec); ITP 33 30 00-01 (spec); ITP 33 30 00-02 (spec); ITP C1.4-01 (sheet); ITP C7.3-01 (sheet),tag 0; spec 3; sheet 2,Y,None found (Add. 4 checked; Addenda 1-3 not staged),OI-0379 (tag); OI-0390 (spec),0,None found,None found,"33-C06 Yard Piping & Utilities — Yard piping, vaults and site utilities",2023-04-01,2023-11-01,2023-03-31,Not started (baseline: no progress entered),Unresolved,"C1.4 Buried Valve Identification Legend (plans_3Part-2 p.1); C7.3 Detail 2 schedule (plans_6 p.5); 33 30 00 ¶1.02 D, ¶3.04.6 (pp.421, 428); 33 05 00 ¶3.025 B (p.419)",C7.3 labeling schedule differs for this ID (see Issues CS-13) — Unresolved. Status 'New' Inferred (proposed legend). Cross-check: Process & Mechanical (45 05 00 Valves). Bid Item 1 per 04 rule (work not itemized elsewhere) — Inferred. Tested with the adjacent pipeline; buried valve nuts and bolts bituminous-coated and valve poly-wrapped (33 05 00 ¶3.025 B).
L-0065,Buried Valve ID 7,4-inch gate valve — treated effluent outlet box drain,Civil,Civil & Site,Site,New,C1.4; C7.3 (Det. 2),"C1.4 p.18 [878.04,225.90,1047.27,230.93] text-layer (tag)",CWP 33,Yard Piping & Utilities,1,1,EA,MTO-0021 (tag),Verified — 1 line totaled,33 30 00; 33 05 00,C1.4 (tag); 33 30 00 (spec); 33 05 00 (spec); C7.3 (sheet),4,SUB 33 05 00-01 (spec); SUB 33 30 00-01 (spec); SUB 33 30 00-02 (spec); SUB C1.4-01 (sheet),tag 0; spec 3; sheet 1,Y,5,ITP 33 05 00-00 (spec); ITP 33 30 00-01 (spec); ITP 33 30 00-02 (spec); ITP C1.4-01 (sheet); ITP C7.3-01 (sheet),tag 0; spec 3; sheet 2,Y,None found (Add. 4 checked; Addenda 1-3 not staged),OI-0379 (tag); OI-0390 (spec),0,None found,None found,"33-C06 Yard Piping & Utilities — Yard piping, vaults and site utilities",2023-04-01,2023-11-01,2023-03-31,Not started (baseline: no progress entered),Unresolved,"C1.4 Buried Valve Identification Legend (plans_3Part-2 p.1); C7.3 Detail 2 schedule (plans_6 p.5); 33 30 00 ¶1.02 D, ¶3.04.6 (pp.421, 428); 33 05 00 ¶3.025 B (p.419)",C7.3 labeling schedule differs for this ID (see Issues CS-13) — Unresolved. Status 'New' Inferred (proposed legend). Cross-check: Process & Mechanical (45 05 00 Valves). Bid Item 1 per 04 rule (work not itemized elsewhere) — Inferred. Tested with the adjacent pipeline; buried valve nuts and bolts bituminous-coated and valve poly-wrapped (33 05 00 ¶3.025 B).
L-0066,Buried Valve ID 8,4-inch gate valve — UV disinfection drain,Civil,Civil & Site,Site,New,C1.4; C7.3 (Det. 2),"C1.4 p.18 [878.16,238.86,1007.03,243.89] text-layer (tag)",CWP 33,Yard Piping & Utilities,1,1,EA,MTO-0022 (tag),Verified — 1 line totaled,33 30 00; 33 05 00,C1.4 (tag); 33 30 00 (spec); 33 05 00 (spec); C7.3 (sheet),4,SUB 33 05 00-01 (spec); SUB 33 30 00-01 (spec); SUB 33 30 00-02 (spec); SUB C1.4-01 (sheet),tag 0; spec 3; sheet 1,Y,5,ITP 33 05 00-00 (spec); ITP 33 30 00-01 (spec); ITP 33 30 00-02 (spec); ITP C1.4-01 (sheet); ITP C7.3-01 (sheet),tag 0; spec 3; sheet 2,Y,None found (Add. 4 checked; Addenda 1-3 not staged),OI-0379 (tag); OI-0390 (spec),0,None found,None found,"33-C06 Yard Piping & Utilities — Yard piping, vaults and site utilities",2023-04-01,2023-11-01,2023-03-31,Not started (baseline: no progress entered),Unresolved,"C1.4 Buried Valve Identification Legend (plans_3Part-2 p.1); C7.3 Detail 2 schedule (plans_6 p.5); 33 30 00 ¶1.02 D, ¶3.04.6 (pp.421, 428); 33 05 00 ¶3.025 B (p.419)",C7.3 labeling schedule differs for this ID (see Issues CS-13) — Unresolved. Status 'New' Inferred (proposed legend). Cross-check: Process & Mechanical (45 05 00 Valves). Bid Item 1 per 04 rule (work not itemized elsewhere) — Inferred. Tested with the adjacent pipeline; buried valve nuts and bolts bituminous-coated and valve poly-wrapped (33 05 00 ¶3.025 B).
L-0067,Buried Valve ID 9,4-inch gate valve — sample sump drain,Civil,Civil & Site,Site,New,C1.4; C7.3 (Det. 2),"C1.4 p.18 [878.04,251.82,999.50,256.85] text-layer (tag)",CWP 33,Yard Piping & Utilities,1,1,EA,MTO-0023 (tag),Verified — 1 line totaled,33 30 00; 33 05 00,C1.4 (tag); 33 30 00 (spec); 33 05 00 (spec); C7.3 (sheet),4,SUB 33 05 00-01 (spec); SUB 33 30 00-01 (spec); SUB 33 30 00-02 (spec); SUB C1.4-01 (sheet),tag 0; spec 3; sheet 1,Y,5,ITP 33 05 00-00 (spec); ITP 33 30 00-01 (spec); ITP 33 30 00-02 (spec); ITP C1.4-01 (sheet); ITP C7.3-01 (sheet),tag 0; spec 3; sheet 2,Y,None found (Add. 4 checked; Addenda 1-3 not staged),OI-0379 (tag); OI-0390 (spec),0,None found,None found,"33-C06 Yard Piping & Utilities — Yard piping, vaults and site utilities",2023-04-01,2023-11-01,2023-03-31,Not started (baseline: no progress entered),Unresolved,"C1.4 Buried Valve Identification Legend (plans_3Part-2 p.1); C7.3 Detail 2 schedule (plans_6 p.5); 33 30 00 ¶1.02 D, ¶3.04.6 (pp.421, 428); 33 05 00 ¶3.025 B (p.419)",C7.3 labeling schedule differs for this ID (see Issues CS-13) — Unresolved. Status 'New' Inferred (proposed legend). Cross-check: Process & Mechanical (45 05 00 Valves). Bid Item 1 per 04 rule (work not itemized elsewhere) — Inferred. Tested with the adjacent pipeline; buried valve nuts and bolts bituminous-coated and valve poly-wrapped (33 05 00 ¶3.025 B).
L-0068,Buried Valve ID 10,4-inch gate valve — pump station clean-out drain,Civil,Civil & Site,Site,New,C1.4; C7.3 (Det. 2),"C1.4 p.18 [876.60,264.78,1032.46,269.81] text-layer (tag)",CWP 33,Yard Piping & Utilities,1,1,EA,MTO-0024 (tag),Verified — 1 line totaled,33 30 00; 33 05 00,C1.4 (tag); 33 30 00 (spec); 33 05 00 (spec); C7.3 (sheet),4,SUB 33 05 00-01 (spec); SUB 33 30 00-01 (spec); SUB 33 30 00-02 (spec); SUB C1.4-01 (sheet),tag 0; spec 3; sheet 1,Y,5,ITP 33 05 00-00 (spec); ITP 33 30 00-01 (spec); ITP 33 30 00-02 (spec); ITP C1.4-01 (sheet); ITP C7.3-01 (sheet),tag 0; spec 3; sheet 2,Y,None found (Add. 4 checked; Addenda 1-3 not staged),OI-0379 (tag); OI-0390 (spec),0,None found,None found,"33-C06 Yard Piping & Utilities — Yard piping, vaults and site utilities",2023-04-01,2023-11-01,2023-03-31,Not started (baseline: no progress entered),Unresolved,"C1.4 Buried Valve Identification Legend (plans_3Part-2 p.1); C7.3 Detail 2 schedule (plans_6 p.5); 33 30 00 ¶1.02 D, ¶3.04.6 (pp.421, 428); 33 05 00 ¶3.025 B (p.419)",C7.3 labeling schedule differs for this ID (see Issues CS-13) — Unresolved. Status 'New' Inferred (proposed legend). Cross-check: Process & Mechanical (45 05 00 Valves). Bid Item 1 per 04 rule (work not itemized elsewhere) — Inferred. Tested with the adjacent pipeline; buried valve nuts and bolts bituminous-coated and valve poly-wrapped (33 05 00 ¶3.025 B).
L-0069,Buried Valve ID 11,4-inch gate valve — pump station clean-out drain,Civil,Civil & Site,Site,New,C1.4; C7.3 (Det. 2),"C1.4 p.18 [876.84,277.74,1032.46,282.77] text-layer (tag)",CWP 33,Yard Piping & Utilities,1,1,EA,MTO-0025 (tag),Verified — 1 line totaled,33 30 00; 33 05 00,C1.4 (tag); 33 30 00 (spec); 33 05 00 (spec); C7.3 (sheet),4,SUB 33 05 00-01 (spec); SUB 33 30 00-01 (spec); SUB 33 30 00-02 (spec); SUB C1.4-01 (sheet),tag 0; spec 3; sheet 1,Y,5,ITP 33 05 00-00 (spec); ITP 33 30 00-01 (spec); ITP 33 30 00-02 (spec); ITP C1.4-01 (sheet); ITP C7.3-01 (sheet),tag 0; spec 3; sheet 2,Y,None found (Add. 4 checked; Addenda 1-3 not staged),OI-0379 (tag); OI-0390 (spec),0,None found,None found,"33-C06 Yard Piping & Utilities — Yard piping, vaults and site utilities",2023-04-01,2023-11-01,2023-03-31,Not started (baseline: no progress entered),Unresolved,"C1.4 Buried Valve Identification Legend (plans_3Part-2 p.1); C7.3 Detail 2 schedule (plans_6 p.5); 33 30 00 ¶1.02 D, ¶3.04.6 (pp.421, 428); 33 05 00 ¶3.025 B (p.419)",C7.3 labeling schedule differs for this ID (see Issues CS-13) — Unresolved. Status 'New' Inferred (proposed legend). Cross-check: Process & Mechanical (45 05 00 Valves). Bid Item 1 per 04 rule (work not itemized elsewhere) — Inferred. Tested with the adjacent pipeline; buried valve nuts and bolts bituminous-coated and valve poly-wrapped (33 05 00 ¶3.025 B).
L-0070,Buried Valve ID 12,8-inch plug valve — effluent flow meter isolation,Civil,Civil & Site,Site,New,C1.4; C7.3 (Det. 2),"C1.4 p.18 [876.60,290.70,1035.14,295.73] text-layer (tag)",CWP 33,Yard Piping & Utilities,1,1,EA,MTO-0026 (tag),Verified — 1 line totaled,33 30 00; 33 05 00,C1.4 (tag); 33 30 00 (spec); 33 05 00 (spec); C7.3 (sheet),4,SUB 33 05 00-01 (spec); SUB 33 30 00-01 (spec); SUB 33 30 00-02 (spec); SUB C1.4-01 (sheet),tag 0; spec 3; sheet 1,Y,5,ITP 33 05 00-00 (spec); ITP 33 30 00-01 (spec); ITP 33 30 00-02 (spec); ITP C1.4-01 (sheet); ITP C7.3-01 (sheet),tag 0; spec 3; sheet 2,Y,None found (Add. 4 checked; Addenda 1-3 not staged),OI-0379 (tag); OI-0390 (spec),0,None found,None found,"33-C06 Yard Piping & Utilities — Yard piping, vaults and site utilities",2023-04-01,2023-11-01,2023-03-31,Not started (baseline: no progress entered),Unresolved,"C1.4 Buried Valve Identification Legend (plans_3Part-2 p.1); C7.3 Detail 2 schedule (plans_6 p.5); 33 30 00 ¶1.02 D, ¶3.04.6 (pp.421, 428); 33 05 00 ¶3.025 B (p.419)",C7.3 labeling schedule differs for this ID (see Issues CS-13) — Unresolved. Status 'New' Inferred (proposed legend). Cross-check: Process & Mechanical (45 05 00 Valves). Bid Item 1 per 04 rule (work not itemized elsewhere) — Inferred. Tested with the adjacent pipeline; buried valve nuts and bolts bituminous-coated and valve poly-wrapped (33 05 00 ¶3.025 B).
L-0071,Buried Valve ID 13,4-inch gate valve — drain flow meter isolation,Civil,Civil & Site,Site,New,C1.4; C7.3 (Det. 2),"C1.4 p.18 [876.48,303.66,1024.92,308.69] text-layer (tag)",CWP 33,Yard Piping & Utilities,1,1,EA,MTO-0027 (tag),Verified — 1 line totaled,33 30 00; 33 05 00,C1.4 (tag); 33 30 00 (spec); 33 05 00 (spec); C7.3 (sheet),4,SUB 33 05 00-01 (spec); SUB 33 30 00-01 (spec); SUB 33 30 00-02 (spec); SUB C1.4-01 (sheet),tag 0; spec 3; sheet 1,Y,5,ITP 33 05 00-00 (spec); ITP 33 30 00-01 (spec); ITP 33 30 00-02 (spec); ITP C1.4-01 (sheet); ITP C7.3-01 (sheet),tag 0; spec 3; sheet 2,Y,None found (Add. 4 checked; Addenda 1-3 not staged),OI-0379 (tag); OI-0390 (spec),0,None found,None found,"33-C06 Yard Piping & Utilities — Yard piping, vaults and site utilities",2023-04-01,2023-11-01,2023-03-31,Not started (baseline: no progress entered),Unresolved,"C1.4 Buried Valve Identification Legend (plans_3Part-2 p.1); C7.3 Detail 2 schedule (plans_6 p.5); 33 30 00 ¶1.02 D, ¶3.04.6 (pp.421, 428); 33 05 00 ¶3.025 B (p.419)",C7.3 labeling schedule differs for this ID (see Issues CS-13) — Unresolved. Status 'New' Inferred (proposed legend). Cross-check: Process & Mechanical (45 05 00 Valves). Bid Item 1 per 04 rule (work not itemized elsewhere) — Inferred. Tested with the adjacent pipeline; buried valve nuts and bolts bituminous-coated and valve poly-wrapped (33 05 00 ¶3.025 B).
L-0072,PROPOSED-Existing slab coring and repair,"Existing building slab — core or saw cut for under-slab piping, then repair",Structural,Civil & Site,Existing building (C1.6A),Existing,C1.6A (Add. 4 p.8),Not linked (PROPOSED tag is not printed; no boxed anchor matched),CWP 03,Concrete (Cast-in-Place & Precast),1,None found,None found,None found,None found (no MTO line: no tied callout and no tag found on a cited sheet),None found (no spec section cited in rev0),C1.6A (sheet),0,None found,tag 0; spec 0; sheet 0,N,1,ITP C1.6A-01 (sheet),tag 0; spec 0; sheet 1,N,Add. 4 p.8 (C1.6A) and p.3 item — Add. 4 governs,None found,0,None found,#78 (tag),"03-C08 Concrete (Cast-in-Place & Precast) — Yard piping, vaults and site utilities",2023-04-01,2023-11-01,2023-03-31,Not started (baseline: no progress entered),Inferred,C1.6A sheet note (Add. 4 p.8); Add. 4 p.3 C1.6A item,"Clean-edge cuts only; repair to match the Blower Building slab design per S4.1 Detail 8; new rebar doweled and epoxied, 4-in min embedment. Cross-lane: Structural & Building (S4.1 Detail 8). Bid Item 1 per 04 rule (work not itemized elsewhere) — Inferred. No submittal or test in this lane's spec sections; concrete repair per S4.1 and 03 30 00 (Structural & Building). || [Merge] Exceptions: #78."
L-0073,SD-1,"Storm drain alignment SD-1, 12-inch, 42 + 19 + 42 LF at 0.5%",Civil,Civil & Site,Site,New,C2.2,"C2.2 p.21 [385.87,733.32,430.58,745.89] text-layer (+4 reads) (tag)",CWP 33,Yard Piping & Utilities,1,Not totaled: no Verified line,LF,MTO-0031 (tag); MTO-0028 (sheet); MTO-0029 (sheet); MTO-0030 (sheet),"Inferred — not totaled; lines: 1 Verified, 3 Inferred (MTO Lines: Not Totaled Because)",33 30 00; 33 41 00,C2.2 (tag); 33 30 00 (spec); 33 41 00 (spec),3,SUB 33 30 00-01 (spec); SUB 33 30 00-02 (spec); SUB 33 41 00-01 (spec),tag 0; spec 3; sheet 0,Y,3,ITP 33 30 00-01 (spec); ITP 33 30 00-02 (spec); ITP 33 41 00-01 (spec),tag 0; spec 3; sheet 0,Y,None found (Add. 4 checked; Addenda 1-3 not staged),OI-0383 (tag); OI-0390 (spec),3,OI-0289 (tag); OI-0324 (spec); OI-0389 (spec),#3 (tag); #207 (tag),"33-C06 Yard Piping & Utilities — Yard piping, vaults and site utilities",2023-04-01,2023-11-01,2023-03-31,Not started (baseline: no progress entered),Unresolved,"C2.2 Alignment SD-1 plan and profile (plans_3Part-5 p.1); 33 30 00 ¶1.02, ¶3.04.7 a (pp.420, 428); 33 41 00 ¶1.03, ¶2.02 A (pp.447–448)","Pipe material not stated on C2.2. Status 'New' Inferred: labeled without 'EXIST.' (existing structures are labeled 'EXIST. SDCB'). Bid Item 1 per 04 rule (work not itemized elsewhere) — Inferred. New storm pipe is pressure-tested (33 30 00 ¶3.04.7 a; method per WSDOT, see 33 30 00 note). Material per 33 41 00 ¶2.02 A: double-wall corrugated PE, DI where cover is under 18 in, CDF where under 1 ft; C2.2 shows only 1.9–2.4 ft from rim to invert at the catch basins, so DI or CDF may apply — Unresolved (see Issues CS-35). || [Merge] Exceptions: #3, #207."
L-0074,PROPOSED-4in roof drain at SD-1,4-inch roof drain connection from SDCB #9 (8 LF and 17 LF at 2.00%),Civil,Civil & Site,Site,New,C2.2,Not linked (PROPOSED tag is not printed; no boxed anchor matched),CWP 33,Yard Piping & Utilities,1,Not totaled: no Verified line,LF,MTO-0032 (sheet); MTO-0033 (sheet),Inferred — not totaled; lines: 2 Inferred (MTO Lines: Not Totaled Because),33 30 00; 33 41 00,33 30 00 (spec); 33 41 00 (spec); C2.2 (sheet); C0.5 (sheet),3,SUB 33 30 00-01 (spec); SUB 33 30 00-02 (spec); SUB 33 41 00-01 (spec),tag 0; spec 3; sheet 0,Y,3,ITP 33 30 00-01 (spec); ITP 33 30 00-02 (spec); ITP 33 41 00-01 (spec),tag 0; spec 3; sheet 0,Y,None found (Add. 4 checked; Addenda 1-3 not staged),OI-0390 (spec),2,OI-0324 (spec); OI-0389 (spec),None found,"33-C06 Yard Piping & Utilities — Yard piping, vaults and site utilities",2023-04-01,2023-11-01,2023-03-31,Not started (baseline: no progress entered),Inferred,"C2.2 profile STA 1+14.26 (plans_3Part-5 p.1); 33 30 00 ¶1.02, ¶3.04.7 a (pp.420, 428); 33 41 00 ¶1.03, ¶2.02 A (pp.447–448)","Likely the 'new 4-in roof drain gravity pipe' of C0.5 KN 2 — Inferred. Bid Item 1 per 04 rule (work not itemized elsewhere) — Inferred. New storm pipe is pressure-tested (33 30 00 ¶3.04.7 a; method per WSDOT, see 33 30 00 note). Roof drain is PVC, tight-lined to the catch basin with 12 in minimum cover (33 41 00 ¶2.02 A.4, ¶3.02 G)."
L-0075,SDCB #5,"Storm drain catch basin #5, Type 1, rim 22.94 (STA 0+47.05)",Civil,Civil & Site,Site,New,C2.2; C2.1; C2.3,"C2.1 p.20 [281.52,532.98,302.04,538.56] ocr (+1 read) (tag); C2.2 p.21 [282.15,88.27,301.87,93.27] bluebeam-ocr (+1 read) (tag); C2.3 p.22 [88.02,658.79,93.02,679.90] bluebeam-ocr (+1 read) (tag)",CWP 33,Yard Piping & Utilities,1,Not totaled: no Verified line,EA,MTO-0034 (tag),Inferred — not totaled; lines: 1 Inferred (MTO Lines: Not Totaled Because),33 41 00,C0.3 (tag); C2.1 (tag); C2.2 (tag); C2.3 (tag); 33 41 00 (spec),1,SUB 33 41 00-01 (spec),tag 0; spec 1; sheet 0,Y,1,ITP 33 41 00-01 (spec),tag 0; spec 1; sheet 0,N,None found (Add. 4 checked; Addenda 1-3 not staged),None found,2,OI-0324 (spec); OI-0389 (spec),None found,"33-C06 Yard Piping & Utilities — Yard piping, vaults and site utilities",2023-04-01,2023-11-01,2023-03-31,Not started (baseline: no progress entered),Unresolved,"C2.2 profile (plans_3Part-5 p.1); 33 41 00 ¶1.03 A.1, ¶2.02 C, ¶3.02 E (pp.447–449); (Missing_Pages_Page_003.png, C2.3 — Verified-Visual)","12-in W, N, S inverts 20.55. Status 'New' Inferred: labeled without 'EXIST.' (existing structures are labeled 'EXIST. SDCB'). Bid Item 1 per 04 rule (work not itemized elsewhere) — Inferred. Submittal: catch basin with frame, grate and lid. Type 1 catch basin per WSDOT 9-05.50(3) and Standard Plan B-5.20-03 — Unresolved: external reference, not staged. [Resplit pass 2026-09-29] C2.3 SD-2: Type 1, STA 0+05.00, 12-in (W), (N), (S) inverts 20.55."
L-0076,SDCB #8,"Storm drain catch basin #8, Type 1, rim 22.78 (STA 0+67.46)",Civil,Civil & Site,Site,New,C2.2; C2.4; C2.1,"C0.3 p.10 [360.54,667.45,376.10,671.50] bluebeam-ocr — sheet not cited (tag); C2.1 p.20 [360.50,673.20,376.28,677.20] bluebeam-ocr (tag); C2.2 p.21 [414.90,664.38,420.48,686.34] ocr (+2 reads) (tag); C2.4 p.23 [82.10,87.82,101.82,92.82] bluebeam-ocr (tag)",CWP 33,Yard Piping & Utilities,1,Not totaled: no Verified line,EA,MTO-0035 (tag),Inferred — not totaled; lines: 1 Inferred (MTO Lines: Not Totaled Because),33 41 00,C0.3 (tag); C2.1 (tag); C2.2 (tag); C2.4 (tag); 33 41 00 (spec),1,SUB 33 41 00-01 (spec),tag 0; spec 1; sheet 0,Y,2,ITP 33 41 00-01 (spec); ITP C2.4-01 (sheet),tag 0; spec 1; sheet 1,N,None found (Add. 4 checked; Addenda 1-3 not staged),None found,2,OI-0324 (spec); OI-0389 (spec),None found,"33-C06 Yard Piping & Utilities — Yard piping, vaults and site utilities",2023-04-01,2023-11-01,2023-03-31,Not started (baseline: no progress entered),Unresolved,"C2.2 profile (plans_3Part-5 p.1); C2.4 plan (plans_3Part-7 p.1); 33 41 00 ¶1.03 A.1, ¶2.02 C, ¶3.02 E (pp.447–449); (Missing_Pages_Page_002.png, C2.1 — Verified-Visual)","Status 'New' Inferred: labeled without 'EXIST.' (existing structures are labeled 'EXIST. SDCB'). Bid Item 1 per 04 rule (work not itemized elsewhere) — Inferred. Submittal: catch basin with frame, grate and lid. Type 1 catch basin per WSDOT 9-05.50(3) and Standard Plan B-5.20-03 — Unresolved: external reference, not staged. [Resplit pass 2026-09-29] C2.1 rim 22.78."
L-0077,SDCB #9,"Storm drain catch basin #9, Type 1, rim 22.75 (STA 1+09.93)",Civil,Civil & Site,Site,New,C2.2; C2.4; C2.1,"C2.1 p.20 [485.46,680.94,505.80,686.52] ocr (+1 read) (tag); C2.2 p.21 [485.46,236.16,505.80,241.56] ocr (+2 reads) (tag)",CWP 33,Yard Piping & Utilities,1,Not totaled: no Verified line,EA,MTO-0036 (tag),Inferred — not totaled; lines: 1 Inferred (MTO Lines: Not Totaled Because),33 41 00,C0.3 (tag); C2.1 (tag); C2.2 (tag); C2.4 (tag); 33 41 00 (spec),1,SUB 33 41 00-01 (spec),tag 0; spec 1; sheet 0,Y,2,ITP 33 41 00-01 (spec); ITP C2.4-01 (sheet),tag 0; spec 1; sheet 1,N,None found (Add. 4 checked; Addenda 1-3 not staged),None found,2,OI-0324 (spec); OI-0389 (spec),None found,"33-C06 Yard Piping & Utilities — Yard piping, vaults and site utilities",2023-04-01,2023-11-01,2023-03-31,Not started (baseline: no progress entered),Unresolved,"C2.2 profile (plans_3Part-5 p.1); C2.4 plan (plans_3Part-7 p.1); 33 41 00 ¶1.03 A.1, ¶2.02 C, ¶3.02 E (pp.447–449); (Missing_Pages_Page_002.png, C2.1 — Verified-Visual)","12-in W invert 20.85; 4-in roof drain NE invert 20.85. Status 'New' Inferred: labeled without 'EXIST.' (existing structures are labeled 'EXIST. SDCB'). Bid Item 1 per 04 rule (work not itemized elsewhere) — Inferred. Submittal: catch basin with frame, grate and lid. Type 1 catch basin per WSDOT 9-05.50(3) and Standard Plan B-5.20-03 — Unresolved: external reference, not staged. [Resplit pass 2026-09-29] C2.1 rim 22.75."
L-0078,SDCB #7,"Storm drain catch basin #7, Type 1, rim 23.00 (west trench drain)",Civil,Civil & Site,Site,New,C2.4; C2.1; C2.3,"C2.1 p.20 [413.10,467.10,433.44,472.50] ocr (+1 read) (tag); C2.3 p.22 [240.50,157.42,259.94,162.42] bluebeam-ocr (+1 read) (tag); C2.4 p.23 [343.20,176.82,362.92,181.82] bluebeam-ocr (+1 read) (tag)",CWP 33,Yard Piping & Utilities,1,Not totaled: no Verified line,EA,MTO-0037 (tag),Inferred — not totaled; lines: 1 Inferred (MTO Lines: Not Totaled Because),33 41 00,C0.3 (tag); C2.1 (tag); C2.3 (tag); C2.4 (tag); 33 41 00 (spec),1,SUB 33 41 00-01 (spec),tag 0; spec 1; sheet 0,Y,2,ITP 33 41 00-01 (spec); ITP C2.4-01 (sheet),tag 0; spec 1; sheet 1,N,None found (Add. 4 checked; Addenda 1-3 not staged),None found,2,OI-0324 (spec); OI-0389 (spec),None found,"33-C06 Yard Piping & Utilities — Yard piping, vaults and site utilities",2023-04-01,2023-11-01,2023-03-31,Not started (baseline: no progress entered),Unresolved,"C2.4 plan and profile (plans_3Part-7 p.1); 33 41 00 ¶1.03 A.1, ¶2.02 C, ¶3.02 E (pp.447–449); (Missing_Pages_Page_003.png, C2.3 — Verified-Visual)","12-in W and 6-in E inverts 20.77; trench drain connects on north side. Status 'New' Inferred: labeled without 'EXIST.' (existing structures are labeled 'EXIST. SDCB'). Bid Item 1 per 04 rule (work not itemized elsewhere) — Inferred. Submittal: catch basin with frame, grate and lid. Type 1 catch basin per WSDOT 9-05.50(3) and Standard Plan B-5.20-03 — Unresolved: external reference, not staged. [Resplit pass 2026-09-29] C2.3 SD-2: Type 1, STA 0+53.59, 12-in (W) and 6-in (E) inverts 20.77; trench drain on the north side."
L-0079,SDCB #10,"Storm drain catch basin #10, Type 1, rim 23.10 (STA 0+77.60, east trench drain)",Civil,Civil & Site,Site,New,C2.4; C2.1; C2.3,"C0.3 p.10 [539.34,437.56,557.13,441.61] bluebeam-ocr — sheet not cited (tag); C2.1 p.20 [558.54,442.62,581.94,446.94] ocr (+1 read) (tag); C2.3 p.22 [386.28,132.66,409.50,138.24] ocr (+2 reads) (tag); C2.4 p.23 [174.42,679.14,180.00,703.98] ocr (+2 reads) (tag)",CWP 33,Yard Piping & Utilities,1,Not totaled: no Verified line,EA,MTO-0038 (tag),Inferred — not totaled; lines: 1 Inferred (MTO Lines: Not Totaled Because),33 41 00,C0.3 (tag); C2.1 (tag); C2.3 (tag); C2.4 (tag); 33 41 00 (spec),1,SUB 33 41 00-01 (spec),tag 0; spec 1; sheet 0,Y,2,ITP 33 41 00-01 (spec); ITP C2.4-01 (sheet),tag 0; spec 1; sheet 1,N,None found (Add. 4 checked; Addenda 1-3 not staged),None found,2,OI-0324 (spec); OI-0389 (spec),None found,"33-C06 Yard Piping & Utilities — Yard piping, vaults and site utilities",2023-04-01,2023-11-01,2023-03-31,Not started (baseline: no progress entered),Unresolved,"C2.4 plan and profile (plans_3Part-7 p.1); 33 41 00 ¶1.03 A.1, ¶2.02 C, ¶3.02 E (pp.447–449); (Missing_Pages_Page_003.png, C2.3 — Verified-Visual)","6-in W invert 20.88; trench drains connect on north and south sides. Status 'New' Inferred: labeled without 'EXIST.' (existing structures are labeled 'EXIST. SDCB'). Bid Item 1 per 04 rule (work not itemized elsewhere) — Inferred. Submittal: catch basin with frame, grate and lid. Type 1 catch basin per WSDOT 9-05.50(3) and Standard Plan B-5.20-03 — Unresolved: external reference, not staged. [Resplit pass 2026-09-29] C2.3 SD-2: Type 1, STA 0+77.60, 6-in (W) invert 20.88; trench drains on the north and south sides."
L-0080,SDCB #2,"Storm drain catch basin #2, rim 22.65",Civil,Civil & Site,Site,New,C2.4; C2.1; C2.3,"C0.3 p.10 [349.79,139.92,365.36,143.97] bluebeam-ocr — sheet not cited (tag); C2.1 p.20 [350.65,144.75,366.20,148.75] bluebeam-ocr (tag); C2.3 p.22 [655.02,660.78,660.60,682.74] ocr (+2 reads) (tag); C2.4 p.23 [629.46,52.38,649.98,57.78] ocr (+1 read) (tag)",CWP 33,Yard Piping & Utilities,1,Not totaled: no Verified line,EA,MTO-0039 (tag),Inferred — not totaled; lines: 1 Inferred (MTO Lines: Not Totaled Because),33 41 00,C0.3 (tag); C2.1 (tag); C2.3 (tag); C2.4 (tag); 33 41 00 (spec),1,SUB 33 41 00-01 (spec),tag 0; spec 1; sheet 0,Y,2,ITP 33 41 00-01 (spec); ITP C2.4-01 (sheet),tag 0; spec 1; sheet 1,N,None found (Add. 4 checked; Addenda 1-3 not staged),None found,2,OI-0324 (spec); OI-0389 (spec),None found,"33-C06 Yard Piping & Utilities — Yard piping, vaults and site utilities",2023-04-01,2023-11-01,2023-03-31,Not started (baseline: no progress entered),Unresolved,"C2.4 plan rim label (plans_3Part-7 p.1); 33 41 00 ¶1.03 A.1, ¶2.02 C, ¶3.02 E (pp.447–449); (Missing_Pages_Page_003.png, C2.3 — Verified-Visual)","Type and inverts not shown on available sheets; C2.1 and C2.3 are unavailable — Unresolved. Status 'New' Inferred: labeled without 'EXIST.' (existing structures are labeled 'EXIST. SDCB'). Bid Item 1 per 04 rule (work not itemized elsewhere) — Inferred. Submittal: catch basin with frame, grate and lid. Type 1 catch basin per WSDOT 9-05.50(3) and Standard Plan B-5.20-03 — Unresolved: external reference, not staged. [Resplit pass 2026-09-29] C2.3 SD-3: Type 1, STA 0+44.53, 12-in (NW) and (SE) inverts 19.5. Type and inverts now shown; the WSDOT standard-plan reference is still not staged."
L-0081,SDCB #3,"Storm drain catch basin #3, rim 22.70",Civil,Civil & Site,Site,New,C2.4; C2.1; C2.3,"C0.3 p.10 [454.07,183.87,469.85,187.91] bluebeam-ocr — sheet not cited (tag); C2.1 p.20 [474.25,176.27,501.86,183.27] bluebeam-ocr (tag); C2.3 p.22 [816.22,653.45,821.22,674.55] bluebeam-ocr (tag); C2.4 p.23 [571.90,205.69,603.45,213.69] bluebeam-ocr (tag)",CWP 33,Yard Piping & Utilities,1,Not totaled: no Verified line,EA,MTO-0040 (tag),Inferred — not totaled; lines: 1 Inferred (MTO Lines: Not Totaled Because),33 41 00,C0.3 (tag); C2.1 (tag); C2.3 (tag); C2.4 (tag); 33 41 00 (spec),1,SUB 33 41 00-01 (spec),tag 0; spec 1; sheet 0,Y,2,ITP 33 41 00-01 (spec); ITP C2.4-01 (sheet),tag 0; spec 1; sheet 1,N,None found (Add. 4 checked; Addenda 1-3 not staged),None found,2,OI-0324 (spec); OI-0389 (spec),None found,"33-C06 Yard Piping & Utilities — Yard piping, vaults and site utilities",2023-04-01,2023-11-01,2023-03-31,Not started (baseline: no progress entered),Unresolved,"C2.4 plan rim label (plans_3Part-7 p.1); 33 41 00 ¶1.03 A.1, ¶2.02 C, ¶3.02 E (pp.447–449); (Missing_Pages_Page_003.png, C2.3 — Verified-Visual)","Type and inverts not shown on available sheets; C2.1 and C2.3 are unavailable — Unresolved. Status 'New' Inferred: labeled without 'EXIST.' (existing structures are labeled 'EXIST. SDCB'). Bid Item 1 per 04 rule (work not itemized elsewhere) — Inferred. Submittal: catch basin with frame, grate and lid. Type 1 catch basin per WSDOT 9-05.50(3) and Standard Plan B-5.20-03 — Unresolved: external reference, not staged. [Resplit pass 2026-09-29] C2.3 SD-3: Type 1, STA 0+89.19, 12-in (NW), 6-in (E), 4-in (SE) inverts 19.7. Type and inverts now shown; WSDOT reference still not staged."
L-0082,SDCB #4,"Storm drain catch basin #4, rim 23.15",Civil,Civil & Site,Site,New,C2.4; C2.1; C2.3,"C2.1 p.20 [608.04,167.22,628.74,172.80] ocr (+1 read) (tag); C2.3 p.22 [900.22,656.40,905.22,677.50] bluebeam-ocr (+1 read) (tag); C2.4 p.23 [571.90,270.42,591.62,275.42] bluebeam-ocr (tag)",CWP 33,Yard Piping & Utilities,1,Not totaled: no Verified line,EA,MTO-0041 (tag),Inferred — not totaled; lines: 1 Inferred (MTO Lines: Not Totaled Because),33 41 00,C0.3 (tag); C2.1 (tag); C2.3 (tag); C2.4 (tag); 33 41 00 (spec),1,SUB 33 41 00-01 (spec),tag 0; spec 1; sheet 0,Y,2,ITP 33 41 00-01 (spec); ITP C2.4-01 (sheet),tag 0; spec 1; sheet 1,N,None found (Add. 4 checked; Addenda 1-3 not staged),None found,2,OI-0324 (spec); OI-0389 (spec),None found,"33-C06 Yard Piping & Utilities — Yard piping, vaults and site utilities",2023-04-01,2023-11-01,2023-03-31,Not started (baseline: no progress entered),Unresolved,"C2.4 plan rim label (plans_3Part-7 p.1); 33 41 00 ¶1.03 A.1, ¶2.02 C, ¶3.02 E (pp.447–449); (Missing_Pages_Page_003.png, C2.3 — Verified-Visual)","Type and inverts not shown on available sheets; C2.1 and C2.3 are unavailable — Unresolved. Status 'New' Inferred: labeled without 'EXIST.' (existing structures are labeled 'EXIST. SDCB'). Bid Item 1 per 04 rule (work not itemized elsewhere) — Inferred. Submittal: catch basin with frame, grate and lid. Type 1 catch basin per WSDOT 9-05.50(3) and Standard Plan B-5.20-03 — Unresolved: external reference, not staged. [Resplit pass 2026-09-29] C2.3 SD-3: Type 1, STA 1+26.67, 6-in (W) invert 19.79; trench drain connected on the east side. Type and inverts now shown; WSDOT reference still not staged."
L-0083,SDCB #6,"Storm drain catch basin #6, rim 23.00",Civil,Civil & Site,Site,New,C2.4; C2.1; C2.3,"C2.1 p.20 [371.30,479.05,386.85,483.05] bluebeam-ocr (tag); C2.3 p.22 [190.27,655.62,195.27,676.45] bluebeam-ocr (+1 read) (tag); C2.4 p.23 [271.60,107.22,291.32,112.22] bluebeam-ocr (tag)",CWP 33,Yard Piping & Utilities,1,Not totaled: no Verified line,EA,MTO-0042 (tag),Inferred — not totaled; lines: 1 Inferred (MTO Lines: Not Totaled Because),33 41 00,C0.3 (tag); C2.1 (tag); C2.3 (tag); C2.4 (tag); 33 41 00 (spec),1,SUB 33 41 00-01 (spec),tag 0; spec 1; sheet 0,Y,2,ITP 33 41 00-01 (spec); ITP C2.4-01 (sheet),tag 0; spec 1; sheet 1,N,None found (Add. 4 checked; Addenda 1-3 not staged),None found,2,OI-0324 (spec); OI-0389 (spec),None found,"33-C06 Yard Piping & Utilities — Yard piping, vaults and site utilities",2023-04-01,2023-11-01,2023-03-31,Not started (baseline: no progress entered),Unresolved,"C2.4 plan rim label (plans_3Part-7 p.1); 33 41 00 ¶1.03 A.1, ¶2.02 C, ¶3.02 E (pp.447–449); (Missing_Pages_Page_003.png, C2.3 — Verified-Visual)","Type and inverts not shown on available sheets; C2.1 and C2.3 are unavailable — Unresolved. Status 'New' Inferred: labeled without 'EXIST.' (existing structures are labeled 'EXIST. SDCB'). Bid Item 1 per 04 rule (work not itemized elsewhere) — Inferred. Submittal: catch basin with frame, grate and lid. Type 1 catch basin per WSDOT 9-05.50(3) and Standard Plan B-5.20-03 — Unresolved: external reference, not staged. [Resplit pass 2026-09-29] C2.3 SD-2: Type 1, STA 0+33.42, 12-in (E), (S) and 4-in (NW) inverts 20.68. Type and inverts now shown; WSDOT reference still not staged."
L-0084,SDCB 1076,Existing storm drain catch basin 1076 (Type 1) — new 12-inch connection on east side at IE 20.35,Civil,Civil & Site,Site,Existing,C2.2; C0.1,None found (tag searched on every page),CWP 33,Yard Piping & Utilities,1,None found,None found,None found,None found (no MTO line: no tied callout and no tag found on a cited sheet),33 41 00,C0.3 (tag); C2.2 (tag); 33 41 00 (spec); C0.1 (sheet),2,SUB 33 41 00-01 (spec); SUB C0.1-01 (sheet),tag 0; spec 1; sheet 1,N,1,ITP 33 41 00-01 (spec),tag 0; spec 1; sheet 0,N,None found (Add. 4 checked; Addenda 1-3 not staged),None found,2,OI-0324 (spec); OI-0389 (spec),None found,"33-C06 Yard Piping & Utilities — Yard piping, vaults and site utilities",2023-04-01,2023-11-01,2023-03-31,Not started (baseline: no progress entered),Inferred,C2.2 profile STA 0+04.63 (plans_3Part-5 p.1); C0.1 storm structure table (plans_1 p.8),Existing structure; new connection only. Bid Item 1 per 04 rule (work not itemized elsewhere) — Inferred. Existing structure; new connection only.
L-0085,PROPOSED-East trench drains,"East trench drains, north and south of SDCB #10, rim 23.10",Civil,Civil & Site,Site,New,C2.4; C7.4 (Det. 5),Not linked (PROPOSED tag is not printed; no boxed anchor matched),CWP 33,Yard Piping & Utilities,1,None found,None found,None found,None found (no MTO line: no tied callout and no tag found on a cited sheet),33 41 00,33 41 00 (spec); C2.4 (sheet); C7.4 (sheet),1,SUB 33 41 00-01 (spec),tag 0; spec 1; sheet 0,N,2,ITP 33 41 00-01 (spec); ITP C2.4-01 (sheet),tag 0; spec 1; sheet 1,N,"Add. 4 p.2, 33 41 00 ¶2.02 F — Add. 4 governs",None found,3,OI-0324 (spec); OI-0389 (spec); OI-0469 (sheet),None found,"33-C06 Yard Piping & Utilities — Yard piping, vaults and site utilities",2023-04-01,2023-11-01,2023-03-31,Not started (baseline: no progress entered),Inferred,C2.4 east trench drain profile (plans_3Part-7 p.1); Add. 4 p.2; C7.4 Detail 5 (plans_6 p.6),"Concrete surround per C7.4 Det. 5. Product per Add. 4: Zurn Z886-HD or approved equal, HDPE channel 4-in wide with 0.75% built-in slope, slotted ductile iron grates, Load Class C. Bid Item 1 per 04 rule (work not itemized elsewhere) — Inferred. Trench drains are not named in the 33 41 00 ¶1.03 submittal list (Add. 4 added only the product paragraph); general submittal rules sit in 01 33 00 (Contract & General, not read)."
L-0086,PROPOSED-West trench drain,"West trench drain, about 51 ft, north side of SDCB #7",Civil,Civil & Site,Site,New,C2.4; C7.4 (Det. 5),Not linked (PROPOSED tag is not printed; no boxed anchor matched),CWP 33,Yard Piping & Utilities,1,None found,None found,None found,None found (no MTO line: no tied callout and no tag found on a cited sheet),33 41 00,33 41 00 (spec); C2.4 (sheet); C7.4 (sheet),1,SUB 33 41 00-01 (spec),tag 0; spec 1; sheet 0,N,2,ITP 33 41 00-01 (spec); ITP C2.4-01 (sheet),tag 0; spec 1; sheet 1,N,"Add. 4 p.2, 33 41 00 ¶2.02 F — Add. 4 governs",None found,3,OI-0324 (spec); OI-0389 (spec); OI-0469 (sheet),None found,"33-C06 Yard Piping & Utilities — Yard piping, vaults and site utilities",2023-04-01,2023-11-01,2023-03-31,Not started (baseline: no progress entered),Inferred,C2.4 west trench drain plan and profile (plans_3Part-7 p.1); Add. 4 p.2; C7.4 Detail 5 (plans_6 p.6),"Concrete surround per C7.4 Det. 5. Product per Add. 4: Zurn Z886-HD or approved equal, HDPE channel 4-in wide with 0.75% built-in slope, slotted ductile iron grates, Load Class C. Bid Item 1 per 04 rule (work not itemized elsewhere) — Inferred. Trench drains are not named in the 33 41 00 ¶1.03 submittal list (Add. 4 added only the product paragraph); general submittal rules sit in 01 33 00 (Contract & General, not read)."
L-0087,PROPOSED-Block retaining wall,"Block (gravity) retaining wall, STA 0+05.00 to 1+31.00",Civil,Civil & Site,Site,New,C2.5; C0.2; C0.5; C2.1,Not linked (PROPOSED tag is not printed; no boxed anchor matched),CWP 32,"Paving, Fencing, Walls & Landscaping",1,None found,None found,None found,None found (no MTO line: no tied callout and no tag found on a cited sheet),32 32 23,C2.5 (tag); 32 32 23 (spec); C0.2 (sheet); C0.5 (sheet); C2.1 (sheet),2,SUB 32 32 23-01 (spec); SUB C0.2-01 (sheet),tag 0; spec 1; sheet 1,Y,3,ITP 32 32 23-01 (spec); ITP C0.5-01 (sheet); ITP C0.5-02 (sheet),tag 0; spec 1; sheet 2,Y,None found (Add. 4 checked; Addenda 1-3 not staged),OI-0395 (sheet),2,OI-0007 (sheet); OI-0469 (sheet),None found,"32-C02 Paving, Fencing, Walls & Landscaping — Site finish work (fencing, walls, landscaping, bollards)",2024-08-01,2024-09-30,2023-03-14,Not started (baseline: no progress entered),Unresolved,"C2.5 plan, profile, Keyed Note 1 (plans_3Part-8 p.1); 32 32 23 ¶1.01, ¶1.04, ¶3.01 (pp.408–411); (Missing_Pages_Page_002.png, C2.1 — Verified-Visual)","Wall detail on 1/C7.8 and coordinate detail on 5/C7.7, both unavailable — Unresolved. Length 126 ft by stationing — Inferred. Existing wall end cut to match (C0.5 KN 18). Bid Item 1 per 04 rule (work not itemized elsewhere) — Inferred. Contractor-designed wall (Washington PE-stamped drawings and calculations, manufacturer certification); Keystone Compaq II or equal; foundation soils tested before leveling pad. [Resplit pass 2026-09-29] C2.1 keyed note 1: Keystone block retaining wall; plan and profile on C2.5, details 1/C7.8 (C7.8 still unavailable)."
L-0088,PROPOSED-Chain link fence 126 LF,"Chain link fence along retaining wall, 126 LF, 6-ft fabric with 3-strand barbed wire (7 ft total), connected to existing fence",Civil,Civil & Site,Site,New,C2.5; C2.1,Not linked (PROPOSED tag is not printed; no boxed anchor matched),CWP 32,"Paving, Fencing, Walls & Landscaping",1,Not totaled: no Verified line,LF,MTO-0043 (sheet),Inferred — not totaled; lines: 1 Inferred (MTO Lines: Not Totaled Because),02 83 00,C2.5 (tag); 02 83 00 (spec); C2.1 (sheet),1,SUB 02 83 00-01 (spec),tag 0; spec 1; sheet 0,Y,0,None found,tag 0; spec 0; sheet 0,N,None found (Add. 4 checked; Addenda 1-3 not staged),None found,1,OI-0003 (tag),None found,"32-C02 Paving, Fencing, Walls & Landscaping — Site finish work (fencing, walls, landscaping, bollards)",2024-08-01,2024-09-30,2023-03-14,Not started (baseline: no progress entered),Unresolved,"C2.5 Keyed Note 4 (plans_3Part-8 p.1); 02 83 00 ¶1.01 A, ¶1.04 (main spec p.163); (Missing_Pages_Page_002.png, C2.1 — Verified-Visual)","'Per specifications'. Bid Item 1 per 04 rule (work not itemized elsewhere) — Inferred. 02 83 00 ¶1.01 A: all chain-link fence is 6-ft fabric with 3-strand barbed wire, 7 ft total; C2.5 mark read as 6"" taken as 6 ft — Inferred. Submittals: samples and shop drawings (¶1.04). [Resplit pass 2026-09-29] C2.1 keyed notes 6 and 8: 149 LF and 134 LF of 6-ft chain link fence, each connected to existing — differs from the 126 LF here (Unresolved). The 6-ft mark on C2.1 supports reading C2.5's ""6"""" as 6 ft (Inferred)."
L-0089,PROPOSED-New septic tank,New septic tank (replaces SSMH 1285),Civil,Civil & Site,Site,New,C0.5 (KN 4); C7.1 (Det. 3),"C0.5 p.12 [820.55,112.68,1096.74,125.28] anchor: C0.5 KN 4: matched: noun SEPTIC (Inferred), number read (Inferred) (sheet)",CWP 33,Yard Piping & Utilities,1,None found,None found,None found,None found (no MTO line: no tied callout and no tag found on a cited sheet),Appendix H,Appendix H (spec); C0.5 (sheet); C7.1 (sheet),1,SUB C7.1-01 (sheet),tag 0; spec 0; sheet 1,N,3,ITP C0.5-01 (sheet); ITP C0.5-02 (sheet); ITP C7.1-01 (sheet),tag 0; spec 0; sheet 3,N,None found (Add. 4 checked; Addenda 1-3 not staged),OI-0395 (sheet),1,OI-0469 (sheet),None found,"33-C06 Yard Piping & Utilities — Yard piping, vaults and site utilities",2023-04-01,2023-11-01,2023-03-31,Not started (baseline: no progress entered),Inferred,C0.5 Keyed Note 4 (plans_2Part-4 p.1); Appendix H (main spec p.638),"Named as a prerequisite for removing SSMH 1285; size and location not stated on the available sheets. Bid Item 1 per 04 rule (work not itemized elsewhere) — Inferred. Appendix H: 1,000-gallon single-compartment tank; Contractor's proposed tank must match the Appendix H layout (layout page p.639 not readable, 02 decision G) and include traffic-rated risers and manhole lids (C7.1 Det. 3 link Inferred). No spec section in this lane."
L-0090,PROPOSED-Floor drains,"Floor drains, 4-inch stainless steel with 2-inch trap",Civil,Civil & Site,Not stated (in Train 2 and Train 3 flow meter vaults per C7.10),New,C7.1 (Det. 2); C7.10,"C7.1 p.43 [408.96,286.86,417.17,301.63] anchor: C7.1 Det. 2: matched: noun TRAP (Inferred) in detail ""TYPICAL YARD HYDRANT"" (sheet)",CWP 33,Yard Piping & Utilities,1,None found,None found,None found,None found (no MTO line: no tied callout and no tag found on a cited sheet),33 31 00,33 31 00 (spec); C7.1 (sheet); C7.10 (sheet),3,SUB 33 31 00-00 (spec); SUB C7.1-01 (sheet); SUB C7.10-01 (sheet),tag 0; spec 1; sheet 2,N,2,ITP 33 31 00-01 (spec); ITP C7.1-01 (sheet),tag 0; spec 1; sheet 1,N,None found (Add. 4 checked; Addenda 1-3 not staged),None found,1,OI-0399 (tag),None found,33-C04 Yard Piping & Utilities — Train 3,2023-08-01,2024-07-08,2023-03-31,Not started (baseline: no progress entered),Inferred,C7.1 Detail 2 (plans_6 p.3); C7.10 Details 1–2 (plans_7 p.4); 33 31 00 ¶2.01 C.3 (p.430),"Quantity not stated. Cross-check: Process & Mechanical (15 40 00 Misc. Plumbing). Bid Item 1 per 04 rule (work not itemized elsewhere) — Inferred. 33 31 00 sends floor drain piping to 'Plumbing Spec 22 10 00', not in the manual (see Issues CS-22); cross-check 15 40 00 (Process & Mechanical)."
L-0091,PROPOSED-Parking stall striping,"Parking stall striping, including van-accessible stall and signs",Civil,Civil & Site,Site,New,C7.1 (Det. 4); C2.6,"C7.1 p.43 [132.12,744.18,140.33,758.95] anchor: C7.1 Det. 4: matched: noun PARKING (Verified) in detail ""PARKING STALL STRIPING"" (sheet)",CWP 32,"Paving, Fencing, Walls & Landscaping",1,None found,None found,None found,None found (no MTO line: no tied callout and no tag found on a cited sheet),None found (no spec section cited in rev0),C7.1 (sheet); C2.6 (sheet),1,SUB C7.1-01 (sheet),tag 0; spec 0; sheet 1,N,1,ITP C7.1-01 (sheet),tag 0; spec 0; sheet 1,N,None found (Add. 4 checked; Addenda 1-3 not staged),None found,2,OI-0203 (tag); OI-0472 (sheet),#96 (tag),"32-C01 Paving, Fencing, Walls & Landscaping — Final surfacing and pavement",2024-08-01,2024-08-31,2023-03-14,Not started (baseline: no progress entered),Unresolved,"C7.1 Detail 4 (plans_6 p.3); (Missing_Pages_Page_004.png, C2.6 — Verified-Visual)","Location and count not on available sheets (paving plan C2.6 unavailable). Striping per WSDOT 8-22 — Unresolved: external reference, not staged. Bid Item 1 per 04 rule (work not itemized elsewhere) — Inferred. No submittal or test in this lane's spec sections. [Resplit pass 2026-09-29] C2.6 keyed note 2: stall striping, handicap symbol and disabled parking signage per 4/C7.1 along the west side; stall count not stated. || [Merge] Exceptions: #96."
L-0092,PROPOSED-Gravity sewer cleanouts,Gravity sewer cleanouts (6-in or 8-in) with cast iron ring and cover in concrete block,Civil,Civil & Site,Site,New,C7.1 (Det. 5),"C7.1 p.43 [419.52,744.18,427.73,758.95] anchor: C7.1 Det. 5: matched: noun GRAVITY (Verified) in detail ""PARKING STALL STRIPING"" (sheet)",CWP 33,Yard Piping & Utilities,1,None found,None found,None found,None found (no MTO line: no tied callout and no tag found on a cited sheet),33 31 00; 33 30 00,33 31 00 (spec); 33 30 00 (spec); C7.1 (sheet),4,SUB 33 30 00-01 (spec); SUB 33 30 00-02 (spec); SUB 33 31 00-00 (spec); SUB C7.1-01 (sheet),tag 0; spec 3; sheet 1,Y,4,ITP 33 30 00-01 (spec); ITP 33 30 00-02 (spec); ITP 33 31 00-01 (spec); ITP C7.1-01 (sheet),tag 0; spec 3; sheet 1,Y,None found (Add. 4 checked; Addenda 1-3 not staged),OI-0390 (spec),0,None found,None found,"33-C06 Yard Piping & Utilities — Yard piping, vaults and site utilities",2023-04-01,2023-11-01,2023-03-31,Not started (baseline: no progress entered),Inferred,C7.1 Detail 5 (plans_6 p.3); 33 31 00 ¶2.01 C; 33 30 00 ¶3.04.7 b,Locations and count not stated on available sheets. Bid Item 1 per 04 rule (work not itemized elsewhere) — Inferred. Part of the gravity sewer system: tested with the line.
L-0093,PROPOSED-Tracer wire and locater boxes,"Tracer wire (#10 AWG insulated), locater boxes, and detectable warning tape on new utilities",Civil,Civil & Site,Site,New,"C7.1 (Det. 6); C7.4 (Det. 2, Note I)","C7.1 p.43 [771.84,744.18,780.05,758.95] anchor: C7.1 Det. 6: matched: noun TRACER (Verified) in detail ""GRAVITY SEWER CLEANOUT DETAIL TRACER WIRE LOCATER BOX DETAIL"" (sheet); C7.4 p.46 [714.84,310.74,723.05,325.51] anchor: C7.4 Det. 2: matched: noun TAPE (Inferred) in detail ""TYPICAL TRENCHING & BACKFILL"" (sheet)",CWP 31,"Earthwork, Dewatering & Erosion Control",1,None found,None found,None found,None found (no MTO line: no tied callout and no tag found on a cited sheet),31 23 33; 33 30 00,C7.1 (tag); 31 23 33 (spec); 33 30 00 (spec); C7.4 (sheet),4,SUB 31 23 33-01 (spec); SUB 33 30 00-01 (spec); SUB 33 30 00-02 (spec); SUB C7.1-01 (sheet),tag 0; spec 3; sheet 1,Y,5,ITP 31 23 33-01 (spec); ITP 31 23 33-02 (spec); ITP 33 30 00-01 (spec); ITP 33 30 00-02 (spec); ITP C7.1-01 (sheet),tag 0; spec 4; sheet 1,N,None found (Add. 4 checked; Addenda 1-3 not staged),OI-0392 (tag); OI-0386 (spec); OI-0390 (spec),3,OI-0245 (spec); OI-0247 (spec); OI-0469 (sheet),None found,"31-C04 Earthwork, Dewatering & Erosion Control — Yard piping, vaults and site utilities",2023-04-01,2023-11-01,2023-03-14,Not started (baseline: no progress entered),Unresolved,C7.1 Detail 6 Notes 1–6 (plans_6 p.3); C7.4 Detail 2 Keyed Note I (plans_6 p.6); 31 23 33 ¶2.03 (pp.394–395); 33 30 00 ¶3.03 (pp.426–427),"Drawing requires a conductivity/locate test on completion and final box locations to the Engineer (C7.1 Det. 6 Notes 5–6). Bid Item 1 per 04 rule (work not itemized elsewhere) — Inferred. 31 23 33 ¶2.03 adds APWA color-coded 2-in detectable warning tape over every new utility. 33 30 00 requires tracer wire on all new piping and a submittal of box locations; wire gauge, tie spacing and scope conflict with C7.1 and C7.4 (see Issues CS-28) — Unresolved. The conductivity test is a C7.1 drawing note, not a spec requirement."
L-0094,PROPOSED-Concrete walkway,"Concrete walkway / pavement, 6-inch minimum, #3 at 12 in each way",Civil,Civil & Site,Site,New,C7.2 (Det. 1); C7.4 (Det. 4); C2.6,"C7.2 p.44 [127.20,244.02,135.41,258.79] anchor: C7.2 Det. 1: matched: noun WALKWAY (Verified) in detail """" (sheet); C7.4 p.46 [415.68,742.38,423.89,757.15] anchor: C7.4 Det. 4: matched: noun WALKWAY (Inferred) in detail """" (sheet)",CWP 32,"Paving, Fencing, Walls & Landscaping",1,None found,None found,None found,None found (no MTO line: no tied callout and no tag found on a cited sheet),None found (no spec section cited in rev0),C7.2 (tag); C7.4 (sheet); C2.6 (sheet),1,SUB C7.2-01 (sheet),tag 0; spec 0; sheet 1,N,0,None found,tag 0; spec 0; sheet 0,N,None found (Add. 4 checked; Addenda 1-3 not staged),None found,3,OI-0204 (tag); OI-0469 (sheet); OI-0472 (sheet),#97 (tag),"32-C01 Paving, Fencing, Walls & Landscaping — Final surfacing and pavement",2024-08-01,2024-08-31,2023-03-14,Not started (baseline: no progress entered),Inferred,"C7.2 Detail 1 (plans_6 p.4); C7.4 Detail 4 (plans_6 p.6); (Missing_Pages_Page_004.png, C2.6 — Verified-Visual)",Location and area not on available sheets (C2.6 unavailable). Bid Item 1 per 04 rule (work not itemized elsewhere) — Inferred. No submittal or test in this lane's spec sections; concrete per 03 30 00 (Structural & Building). [Resplit pass 2026-09-29] C2.6: concrete walkways per 1/C7.2 along the west side of the existing District building. || [Merge] Exceptions: #97.
L-0095,PROPOSED-WWTP tank and building signs,"WWTP tank and building signs, 9 (UV Disinfection Chamber, Blower Building, Dewatering Facility, Influent Pump Station, Aerobic Digester, Train 1–3, 2W Water System Pump Station)",General,Civil & Site,Site,New,C7.3 (Det. 1),"C7.3 p.45 [66.50,469.56,74.50,485.56] anchor: C7.3 Det. 1: matched: noun SIGN (Inferred) in detail ""WWTP TANK SIGN SIGN DETAILS"" (sheet)",CWP 10,Specialties,1,None found,None found,None found,None found (no MTO line: no tied callout and no tag found on a cited sheet),None found (no spec section cited in rev0),C7.3 (sheet),0,None found,tag 0; spec 0; sheet 0,N,1,ITP C7.3-01 (sheet),tag 0; spec 0; sheet 1,N,None found (Add. 4 checked; Addenda 1-3 not staged),None found,1,OI-0205 (tag),#98 (tag),"10-C03 Specialties — Yard piping, vaults and site utilities",2023-04-01,2023-11-01,2023-03-31,Not started (baseline: no progress entered),Inferred,C7.3 Detail 1 (plans_6 p.5),Locations field-determined by Owner. UV sign drawn as 'DISENFECTION' — confirm spelling before fabrication. Bid Item 1 per 04 rule (work not itemized elsewhere) — Inferred. No submittal or test in this lane's spec sections. || [Merge] Exceptions: #98.
L-0096,PROPOSED-Buried valve label markers,Bronze buried valve label markers (Berntsen #C35FB) with cast iron valve boxes and concrete pads,Civil,Civil & Site,Site,New,"C7.3 (Det. 2, 4); C1.4","C7.3 p.45 [595.90,741.71,603.90,757.71] anchor: C7.3 Det. 2: detail found (045 716.76,215.64,719.10,219.24) titled ""I S'"", detail region 696.76,2.00,863.10,228.69 does not hold the row's quantity or specific noun, C7.3 Det. 4: matched: noun CAST (Inferred) in detail ""VALVE"" (sheet)",CWP 33,Yard Piping & Utilities,1,None found,None found,None found,None found (no MTO line: no tied callout and no tag found on a cited sheet),None found (no spec section cited in rev0),C7.3 (tag); C1.4 (sheet),1,SUB C1.4-01 (sheet),tag 0; spec 0; sheet 1,N,2,ITP C1.4-01 (sheet); ITP C7.3-01 (sheet),tag 0; spec 0; sheet 2,N,None found (Add. 4 checked; Addenda 1-3 not staged),OI-0379 (tag),1,OI-0206 (tag),#99 (tag),"33-C06 Yard Piping & Utilities — Yard piping, vaults and site utilities",2023-04-01,2023-11-01,2023-03-31,Not started (baseline: no progress entered),Unresolved,"C7.3 Details 2, 4 and notes (plans_6 p.5)","Quantity conflict: note says 14 markers, schedule lists 17 valves, C1.4 lists 13 — Unresolved (see Issues CS-13). Bid Item 1 per 04 rule (work not itemized elsewhere) — Inferred. No submittal or test in this lane's spec sections. || [Merge] Exceptions: #99."
L-0097,PROPOSED-HMA pavement,"Asphalt concrete pavement, 4-in HMA Class 1/2-in PG 58H-22 over 4-in CSBC and 12-in gravel base, thickened edge",Civil,Civil & Site,Site,New,C7.3 (Det. 3); C7.4 (Det. 2); C2.6,"C7.3 p.45 [59.30,738.88,67.08,752.88] anchor: C7.3 Det. 3: matched: noun CLASS (Inferred) in detail ""ASPHALT CONCRETE PAVEMENT PAVEMENT WITH THICKENED EDGE"" (sheet)",CWP 32,"Paving, Fencing, Walls & Landscaping",1,None found,None found,None found,None found (no MTO line: no tied callout and no tag found on a cited sheet),32 12 16,32 12 16 (tag); C7.3 (tag); C7.4 (sheet); C2.6 (sheet),2,SUB 32 12 16-01 (spec); SUB 32 12 16-02 (spec),tag 0; spec 2; sheet 0,Y,2,ITP 32 12 16-01 (spec); ITP C7.3-01 (sheet),tag 0; spec 1; sheet 1,Y,None found (Add. 4 checked; Addenda 1-3 not staged),None found,2,OI-0469 (sheet); OI-0472 (sheet),#73 (tag),"32-C01 Paving, Fencing, Walls & Landscaping — Final surfacing and pavement",2024-08-01,2024-08-31,2023-03-14,Not started (baseline: no progress entered),Unresolved,"C7.3 Detail 3 (plans_6 p.5); C7.4 Detail 2 Keyed Note B (plans_6 p.6); 32 12 16 ¶1.02, ¶2.01, ¶3.05 (pp.404–405); (Missing_Pages_Page_004.png, C2.6 — Verified-Visual)","Paving limits are on C2.6 (unavailable; Add. 4 Clarification 1). Materials per WSDOT 5-04, 9-03.9(3), 9-03.10 — Unresolved: external reference, not staged. Base paving under Item 1 per 04 rule — Inferred; Items 8, 12 and 13 sit in the 'Extra Work Items' group (04) — Inferred for extra quantities only. Mix design certificates 5 days before placement; Contractor QC testing including in-place density. [Resplit pass 2026-09-29] C2.6: paving limits now shown — asphalt per 3/C7.3 across the yard to the property lines. WSDOT materials still not staged. || [Merge] Exceptions: #73."
L-0098,PROPOSED-Gravel surfacing,"Gravel surfacing, 4-in compacted base course over subgrade at 95%",Civil,Civil & Site,Site,New,C7.3 (Det. 5); C2.6,"C7.3 p.45 [868.10,210.11,876.10,226.11] anchor: C7.3 Det. 5: matched: noun COURSE (Inferred) in detail ""I S'"" (sheet)",CWP 32,"Paving, Fencing, Walls & Landscaping",1,None found,None found,None found,None found (no MTO line: no tied callout and no tag found on a cited sheet),None found (no spec section cited in rev0),C7.3 (tag); C2.6 (sheet),0,None found,tag 0; spec 0; sheet 0,N,1,ITP C7.3-01 (sheet),tag 0; spec 0; sheet 1,N,None found (Add. 4 checked; Addenda 1-3 not staged),None found,1,OI-0472 (sheet),#73 (tag),"32-C01 Paving, Fencing, Walls & Landscaping — Final surfacing and pavement",2024-08-01,2024-08-31,2023-03-14,Not started (baseline: no progress entered),Unresolved,"C7.3 Detail 5 (plans_6 p.5); (Missing_Pages_Page_004.png, C2.6 — Verified-Visual)","Location not on available sheets. Base course per WSDOT 9-03.9(3) — Unresolved: external reference, not staged. Bid Item 1 per 04 rule (work not itemized elsewhere) — Inferred. No submittal or test in this lane's spec sections beyond 31 20 00 material submittals. [Resplit pass 2026-09-29] C2.6: gravel per 5/C7.3 and a 1-ft gravel shoulder between the property line and the asphalt (keyed note 1). || [Merge] Exceptions: #73."
L-0099,PROPOSED-Post hydrant,Post hydrant on 2-inch HDPE supply with buried 2-inch gate valve,Civil,Civil & Site,Site,New,C7.5 (Det. 2),"C7.5 p.47 [83.64,734.34,91.85,749.11] anchor: C7.5 Det. 2: matched: noun POST (Verified) in detail """" (sheet)",CWP 33,Yard Piping & Utilities,1,None found,None found,None found,None found (no MTO line: no tied callout and no tag found on a cited sheet),33 30 00,C7.5 (tag); 33 30 00 (spec),4,SUB 33 30 00-01 (spec); SUB 33 30 00-02 (spec); SUB C7.5-01 (sheet); SUB C7.5-02 (sheet),tag 0; spec 2; sheet 2,Y,2,ITP 33 30 00-01 (spec); ITP 33 30 00-02 (spec),tag 0; spec 2; sheet 0,Y,None found (Add. 4 checked; Addenda 1-3 not staged),OI-0390 (spec),0,None found,#53 (tag),"33-C06 Yard Piping & Utilities — Yard piping, vaults and site utilities",2023-04-01,2023-11-01,2023-03-31,Not started (baseline: no progress entered),Unresolved,"C7.5 Detail 2 (plans_6 p.7); 33 30 00 ¶1.02, ¶3.04 (pp.420–429)","Size 'see plan'; location, size and count not on available sheets — Unresolved. Bid Item 1 per 04 rule (work not itemized elsewhere) — Inferred. Supply piping submitted and tested per 33 30 00. || [Merge] Exceptions: #53."
L-0100,"PROPOSED-Composite manholes, double manhole condition",Lightweight composite manholes (Morrison Bros. 418LC-3800 AM or equal) in cast-in-place traffic ring,Civil,Civil & Site,Not stated,New,C7.5 (Det. 3),"C7.5 p.47 [745.56,500.46,753.77,515.23] anchor: C7.5 Det. 3: matched: noun MANHOLE (Verified) in detail """" (sheet)",CWP 33,Yard Piping & Utilities,1,None found,None found,None found,None found (no MTO line: no tied callout and no tag found on a cited sheet),33 30 00,33 30 00 (spec); C7.5 (sheet),4,SUB 33 30 00-01 (spec); SUB 33 30 00-02 (spec); SUB C7.5-01 (sheet); SUB C7.5-02 (sheet),tag 0; spec 2; sheet 2,N,2,ITP 33 30 00-01 (spec); ITP 33 30 00-02 (spec),tag 0; spec 2; sheet 0,N,None found (Add. 4 checked; Addenda 1-3 not staged),OI-0390 (spec),0,None found,None found,"33-C06 Yard Piping & Utilities — Yard piping, vaults and site utilities",2023-04-01,2023-11-01,2023-03-31,Not started (baseline: no progress entered),Unresolved,C7.5 Detail 3 (plans_6 p.7); 33 30 00 ¶2.01 C.6 (p.422),"Where the double manhole condition occurs is not stated on available sheets — Unresolved. Foundation gravel per WSDOT 9-03.12(1)A — Unresolved: external reference, not staged. Bid Item 1 per 04 rule (work not itemized elsewhere) — Inferred. Pipe penetrations sealed with Link-Seal or Kor-N-Seal boots (33 30 00 ¶2.01 C.6). No structure submittal or test in this lane's sections; precast structures are specified in 03 40 00 (Structural & Building)."
L-0101,PROPOSED-Influent sample sump,"Influent sample sump, 24-in x 6-ft precast well curb (H2 Precast WC-24 or equal) with traffic-rated riser and lid",Civil,Civil & Site,Site,New,C7.5 (Det. 4); C7.1 (Det. 3); C1.3; C1.4,"C7.5 p.47 [670.80,735.18,679.01,749.95] anchor: C7.5 Det. 4: matched: noun SAMPLE (Verified) in detail """" (sheet); C7.1 p.43 [698.16,286.86,706.37,301.63] anchor: C7.1 Det. 3: matched: noun TRAFFIC (Verified) in detail ""TYPICAL FLOOR DRAIN"" (sheet)",CWP 31,"Earthwork, Dewatering & Erosion Control",1,None found,None found,None found,None found (no MTO line: no tied callout and no tag found on a cited sheet),31 20 00; 33 30 00,C7.5 (tag); 31 20 00 (spec); 33 30 00 (spec); C7.1 (sheet); C1.3 (sheet); C1.4 (sheet),7,SUB 31 20 00-01 (spec); SUB 33 30 00-01 (spec); SUB 33 30 00-02 (spec); SUB C1.4-01 (sheet); SUB C7.1-01 (sheet); SUB C7.5-01 (sheet); SUB C7.5-02 (sheet),tag 0; spec 3; sheet 4,N,7,ITP 31 20 00-01 (spec); ITP 31 20 00-02 (spec); ITP 33 30 00-01 (spec); ITP 33 30 00-02 (spec); ITP C1.3-01 (sheet); ITP C1.4-01 (sheet); ITP C7.1-01 (sheet),tag 0; spec 4; sheet 3,N,None found (Add. 4 checked; Addenda 1-3 not staged),OI-0390 (spec),5,OI-0240 (spec); OI-0241 (spec); OI-0324 (spec); OI-0451 (spec); OI-0252 (sheet),#4 (tag),"31-C04 Earthwork, Dewatering & Erosion Control — Yard piping, vaults and site utilities",2023-04-01,2023-11-01,2023-03-14,Not started (baseline: no progress entered),Inferred,C7.5 Detail 4 (plans_6 p.7); C7.1 Detail 3 (plans_6 p.3); C1.3 revision 2 'Add Inf. Sample Sump' (Add. 4 p.7); 31 20 00 ¶3.01 D (p.386); 33 30 00 ¶2.01 C.6 (p.422),"8-in DI in at IE 19.65 (field-confirm), 8-in influent IE 19.55, 4-in drain IE 18.20 (Buried Valve ID 9, sample sump drain). Bid Item 1 per 04 rule (work not itemized elsewhere) — Inferred. 31 20 00 ¶3.01 D: 12-in minimum CSBC under vaults and mat foundations. Pipe penetrations sealed with Link-Seal or Kor-N-Seal boots (33 30 00 ¶2.01 C.6). No structure submittal or test in this lane's sections; precast structures are specified in 03 40 00 (Structural & Building). || [Merge] Exceptions: #4."
L-0102,PROPOSED-Hot Box #1 flow meter,"1-inch flow meter in Hot Box #1, 'per electrical design requirements'",Controls,Civil & Site,Site,New,C7.6 (Det. 1),"C7.6 p.48 [131.04,747.30,139.25,762.07] anchor: C7.6 Det. 1: matched: noun DESIGN (Inferred) in detail """" (sheet)",CWP 26,"Electrical, Instrumentation & Controls",1,None found,None found,None found,None found (no MTO line: no tied callout and no tag found on a cited sheet),None found (no spec section cited in rev0),C7.6 (sheet),0,None found,tag 0; spec 0; sheet 0,N,0,None found,tag 0; spec 0; sheet 0,N,None found (Add. 4 checked; Addenda 1-3 not staged),None found,0,None found,#11 (tag),"26-C10 Electrical, Instrumentation & Controls — 480V service, MCC and PLC panel",2023-04-01,2023-10-04,2023-03-14,Not started (baseline: no progress entered),Inferred,C7.6 Material List 3 (plans_6 p.8),Cross-lane: Electrical & Controls (instrument). Bid Item 1 per 04 rule (work not itemized elsewhere) — Inferred. No submittal or test in this lane's spec sections; instrument requirements sit with Electrical & Controls. || [Merge] Exceptions: #11.
L-0103,PROPOSED-Hot Box #1 solenoid valve,"Solenoid valve, ASCO Redhat 8221, 3/4-inch, slow-closing, normally closed, 120 VAC, NEMA 4X",Process-Mechanical,Civil & Site,Site,New,C7.6 (Det. 1),"C7.6 p.48 [131.04,747.30,139.25,762.07] anchor: C7.6 Det. 1: matched: noun ASCO (Inferred) in detail """" (sheet)",CWP 43,Blowers & 2W Plant Water System,1,None found,None found,None found,None found (no MTO line: no tied callout and no tag found on a cited sheet),None found (no spec section cited in rev0),C7.6 (sheet),0,None found,tag 0; spec 0; sheet 0,N,0,None found,tag 0; spec 0; sheet 0,N,None found (Add. 4 checked; Addenda 1-3 not staged),None found,1,OI-0207 (tag),#49 (tag); #100 (tag),"43-C05 Blowers & 2W Plant Water System — Yard piping, vaults and site utilities",2023-04-01,2023-11-01,2023-03-31,Not started (baseline: no progress entered),Inferred,C7.6 Material List 1 (plans_6 p.8),"Cross-check: Electrical & Controls (120 VAC power, control) and Process & Mechanical (2W system). Bid Item 1 per 04 rule (work not itemized elsewhere) — Inferred. No submittal or test in this lane's spec sections; see 43 22 10 (Process & Mechanical) and E sheets. || [Merge] Exceptions: #49, #100."
L-0104,PROPOSED-Train 2 flow meter vault,"Train 2 flow meter vault, precast 4'-2"" x 4'-2"" x 5'-0"" (Utility Vault 506-LA or equal), H-20 hatch Halliday H1R3636, Bilco LadderUp",Civil,Civil & Site,Train 2,New,C7.10 (Det. 1),"C7.10 p.52 [121.80,649.98,130.01,664.75] anchor: C7.10 Det. 1: matched: noun VAULT (Verified) in detail ""TRAIN 2 FLOW METER VAULT, PLAN"" (sheet)",CWP 31,"Earthwork, Dewatering & Erosion Control",1,None found,None found,None found,None found (no MTO line: no tied callout and no tag found on a cited sheet),31 20 00; 33 30 00,31 20 00 (spec); 33 30 00 (spec); C7.10 (sheet),4,SUB 31 20 00-01 (spec); SUB 33 30 00-01 (spec); SUB 33 30 00-02 (spec); SUB C7.10-01 (sheet),tag 0; spec 3; sheet 1,N,4,ITP 31 20 00-01 (spec); ITP 31 20 00-02 (spec); ITP 33 30 00-01 (spec); ITP 33 30 00-02 (spec),tag 0; spec 4; sheet 0,N,"Add. 4 p.1, Clarification 2 — Add. 4 governs",OI-0390 (spec),4,OI-0240 (spec); OI-0241 (spec); OI-0324 (spec); OI-0451 (spec),#5 (tag),"31-C01 Earthwork, Dewatering & Erosion Control — Influent pump station and flow splitter",2023-06-01,2023-10-25,2023-03-14,Not started (baseline: no progress entered),Inferred,"C7.10 Detail 1 (plans_7 p.4); Add. 4 p.1, Clarification 2; 31 20 00 ¶3.01 D (p.386); 33 30 00 ¶2.01 C.6 (p.422)",Exterior precast joints sealed with CANUSA-CPS WrapidSeal or equal (Add. 4). Status 'New' Inferred. Bid Item 1 per 04 rule (work not itemized elsewhere) — Inferred. 31 20 00 ¶3.01 D: 12-in minimum CSBC under vaults and mat foundations. Pipe penetrations sealed with Link-Seal or Kor-N-Seal boots (33 30 00 ¶2.01 C.6). No structure submittal or test in this lane's sections; precast structures are specified in 03 40 00 (Structural & Building). || [Merge] Exceptions: #5.
L-0105,PROPOSED-Train 3 flow meter vault,"Train 3 flow meter vault, precast 4'-2"" x 4'-2"" x 5'-0"" (Utility Vault 506-LA or equal), H-20 hatch Halliday H1R3636, Bilco LadderUp",Civil,Civil & Site,Train 3,New,C7.10 (Det. 2),"C7.10 p.52 [640.92,649.98,649.13,664.75] anchor: C7.10 Det. 2: matched: noun VAULT (Verified) in detail ""TRAIN 3 FLOW METER VAULT, PLAN"" (sheet)",CWP 31,"Earthwork, Dewatering & Erosion Control",1,None found,None found,None found,None found (no MTO line: no tied callout and no tag found on a cited sheet),31 20 00; 33 30 00,31 20 00 (spec); 33 30 00 (spec); C7.10 (sheet),4,SUB 31 20 00-01 (spec); SUB 33 30 00-01 (spec); SUB 33 30 00-02 (spec); SUB C7.10-01 (sheet),tag 0; spec 3; sheet 1,N,4,ITP 31 20 00-01 (spec); ITP 31 20 00-02 (spec); ITP 33 30 00-01 (spec); ITP 33 30 00-02 (spec),tag 0; spec 4; sheet 0,N,"Add. 4 p.1, Clarification 2 — Add. 4 governs",OI-0390 (spec),4,OI-0240 (spec); OI-0241 (spec); OI-0324 (spec); OI-0451 (spec),#6 (tag),"31-C03 Earthwork, Dewatering & Erosion Control — Train 3",2023-08-01,2024-07-08,2023-03-14,Not started (baseline: no progress entered),Inferred,"C7.10 Detail 2 (plans_7 p.4); Add. 4 p.1, Clarification 2; 31 20 00 ¶3.01 D (p.386); 33 30 00 ¶2.01 C.6 (p.422)",Exterior precast joints sealed with CANUSA-CPS WrapidSeal or equal (Add. 4). Status 'New' Inferred. Bid Item 1 per 04 rule (work not itemized elsewhere) — Inferred. 31 20 00 ¶3.01 D: 12-in minimum CSBC under vaults and mat foundations. Pipe penetrations sealed with Link-Seal or Kor-N-Seal boots (33 30 00 ¶2.01 C.6). No structure submittal or test in this lane's sections; precast structures are specified in 03 40 00 (Structural & Building). || [Merge] Exceptions: #6.
L-0106,PROPOSED-Train 2 flow meter,"Train 2 flow meter, 8-inch, in Train 2 flow meter vault",Controls,Civil & Site,Train 2,New,C7.10 (Det. 1),"C7.10 p.52 [121.80,649.98,130.01,664.75] anchor: C7.10 Det. 1: matched: noun VAULT (Verified) in detail ""TRAIN 2 FLOW METER VAULT, PLAN"" (sheet)",CWP 26,"Electrical, Instrumentation & Controls",1,None found,None found,None found,None found (no MTO line: no tied callout and no tag found on a cited sheet),None found (no spec section cited in rev0),C7.10 (sheet),1,SUB C7.10-01 (sheet),tag 0; spec 0; sheet 1,N,0,None found,tag 0; spec 0; sheet 0,N,None found (Add. 4 checked; Addenda 1-3 not staged),None found,0,None found,#7 (tag),"26-C08 Electrical, Instrumentation & Controls — Influent pump station and flow splitter",2023-06-01,2023-10-25,2023-03-14,Not started (baseline: no progress entered),Inferred,C7.10 Detail 1 (plans_7 p.4),Meter type not stated on C7.10. Cross-lane: Electrical & Controls (instrument; Add. 4 p.2 changes the 26 80 00 electromagnetic meter model — applicability here Inferred). Bid Item 1 per 04 rule (work not itemized elsewhere) — Inferred. No submittal or test in this lane's spec sections; flow meters are specified in 26 80 00 (Electrical & Controls). || [Merge] Exceptions: #7.
L-0107,PROPOSED-Train 3 flow meter,"Train 3 flow meter, 8-inch, in Train 3 flow meter vault",Controls,Civil & Site,Train 3,New,C7.10 (Det. 2),"C7.10 p.52 [640.92,649.98,649.13,664.75] anchor: C7.10 Det. 2: matched: noun VAULT (Verified) in detail ""TRAIN 3 FLOW METER VAULT, PLAN"" (sheet)",CWP 26,"Electrical, Instrumentation & Controls",1,None found,None found,None found,None found (no MTO line: no tied callout and no tag found on a cited sheet),None found (no spec section cited in rev0),C7.10 (sheet),1,SUB C7.10-01 (sheet),tag 0; spec 0; sheet 1,N,0,None found,tag 0; spec 0; sheet 0,N,None found (Add. 4 checked; Addenda 1-3 not staged),None found,0,None found,#8 (tag),"26-C14 Electrical, Instrumentation & Controls — Train 3",2023-08-01,2024-07-08,2023-03-14,Not started (baseline: no progress entered),Inferred,C7.10 Detail 2 (plans_7 p.4),Meter type not stated on C7.10. Cross-lane: Electrical & Controls (instrument; Add. 4 p.2 changes the 26 80 00 electromagnetic meter model — applicability here Inferred). Bid Item 1 per 04 rule (work not itemized elsewhere) — Inferred. No submittal or test in this lane's spec sections; flow meters are specified in 26 80 00 (Electrical & Controls). || [Merge] Exceptions: #8.
L-0108,PROPOSED-Hydroseeded restoration areas,"Hydroseeded grass restoration of disturbed areas (topsoil, seed, fertilizer, mulch)",Civil,Civil & Site,Site,New,"C7.4 (Det. 2, Notes A, C); C0.2 (Item 22)","C7.4 p.46 [714.84,310.74,723.05,325.51] anchor: C7.4 Det. 2: matched: noun GRASS (Verified) in detail ""TYPICAL TRENCHING & BACKFILL"" (sheet)",CWP 32,"Paving, Fencing, Walls & Landscaping",1,None found,None found,None found,None found (no MTO line: no tied callout and no tag found on a cited sheet),02 92 00,02 92 00 (tag); C7.4 (sheet); C0.2 (sheet),3,SUB 02 92 00-01 (spec); SUB 02 92 00-02 (spec); SUB C0.2-01 (sheet),tag 0; spec 2; sheet 1,Y,0,None found,tag 0; spec 0; sheet 0,N,None found (Add. 4 checked; Addenda 1-3 not staged),None found,2,OI-0007 (sheet); OI-0469 (sheet),None found,"32-C02 Paving, Fencing, Walls & Landscaping — Site finish work (fencing, walls, landscaping, bollards)",2024-08-01,2024-09-30,2023-03-14,Not started (baseline: no progress entered),Unresolved,"02 92 00 ¶1.1, ¶1.03, ¶2.2–3.1 (main spec pp.169–171); C7.4 Detail 2 (plans_6 p.6)","Submittals: product data, seed blue tags, maintenance instructions. One-year seeding guarantee (¶1.3). Topsoil and hydroseeding defer to WSDOT — Unresolved: external reference, not staged. Areas not on available sheets. Bid Item 1 per 04 rule (work not itemized elsewhere) — Inferred."
L-0109,PROPOSED-Temporary construction sign,"Temporary construction sign, 4 x 8 ft plywood, Ecology and CDBG Commerce requirements",General,Civil & Site,Site,Temporary,None found (no sheet cited in rev0),Not linked (PROPOSED tag is not printed; no boxed anchor matched),CWP 01,General Requirements & Temporary Works,1,None found,None found,None found,None found (no MTO line: no tied callout and no tag found on a cited sheet),15 08 13,15 08 13 (tag),1,SUB 15 08 13-01 (spec),tag 0; spec 1; sheet 0,Y,0,None found,tag 0; spec 0; sheet 0,N,None found (Add. 4 checked; Addenda 1-3 not staged),None found,1,OI-0474 (tag),#72 (tag),01-C02 General Requirements & Temporary Works — Temporary facilities and controls,2023-03-15,2024-10-16,2023-03-14,Not started (baseline: no progress entered),Inferred,"15 08 13 ¶A, ¶1.01, ¶1.02 (main spec p.252)",Submittal: proof of graphics. Location not stated. Bid Item 1 per 04 rule (work not itemized elsewhere) — Inferred. || [Merge] Exceptions: #72.
L-0110,PROPOSED-Dewatering system,"Contractor dewatering system: pumps, backup pumps, standby generator, wells or well points, discharge treatment",Process-Mechanical,Civil & Site,Site,Temporary,C0.2 (Element 10),Not linked (PROPOSED tag is not printed; no boxed anchor matched),CWP 31,"Earthwork, Dewatering & Erosion Control",1,None found,None found,None found,None found (no MTO line: no tied callout and no tag found on a cited sheet),31 23 19; 31 20 00,31 23 19 (spec); 31 20 00 (spec); C0.2 (sheet),3,SUB 31 20 00-01 (spec); SUB 31 23 19-01 (spec); SUB C0.2-01 (sheet),tag 0; spec 2; sheet 1,Y,3,ITP 31 20 00-01 (spec); ITP 31 20 00-02 (spec); ITP 31 23 19-01 (spec),tag 0; spec 3; sheet 0,Y,None found (Add. 4 checked; Addenda 1-3 not staged),None found,6,OI-0388 (tag); OI-0240 (spec); OI-0241 (spec); OI-0324 (spec); OI-0451 (spec); OI-0007 (sheet),#15 (tag); #69 (tag),"31-C02 Earthwork, Dewatering & Erosion Control — Temporary facilities and controls",2023-03-15,2024-10-16,2023-03-14,Not started (baseline: no progress entered),Inferred,"31 23 19 ¶1.2, Part 2, ¶3.2–3.3 (main spec pp.389–392)","Submittal: dewatering plan. Testing: Rossum sand test of discharge (10 ppm silica max) and settlement monitoring. No discharge to sanitary sewer, outfall or WWTP. Standby generator here is the dewatering system's own, not the Add. 4 temporary back-up generator. Dewatering incidental per 31 20 00 ¶1.04 — cost basis see Issues CS-25. Bid Item 1 per 04 rule (work not itemized elsewhere) — Inferred. || [Merge] Exceptions: #15, #69."
L-0111,PROPOSED-Compost berm,Compost berm (TESC),Civil,Civil & Site,Site,Temporary,None found (no sheet cited in rev0),Not linked (PROPOSED tag is not printed; no boxed anchor matched),CWP 31,"Earthwork, Dewatering & Erosion Control",4,None found,None found,None found,None found (no MTO line: no tied callout and no tag found on a cited sheet),31 32 11,31 32 11 (tag),1,SUB 31 32 11-01 (spec),tag 0; spec 1; sheet 0,Y,1,ITP 31 32 11-01 (spec),tag 0; spec 1; sheet 0,N,None found (Add. 4 checked; Addenda 1-3 not staged),None found,1,OI-0474 (tag),#71 (tag),"31-C02 Earthwork, Dewatering & Erosion Control — Temporary facilities and controls",2023-03-15,2024-10-16,2023-03-14,Not started (baseline: no progress entered),Unresolved,"31 32 11 ¶1.04 A.2, ¶2.01 D (pp.398–399); (Missing_Pages_Page_001.png, C0.3 — Verified-Visual)","Named only in the submittal list; location not on available sheets (C0.3 unavailable) — Unresolved. Compost per WSDOT 9-14.4(8) — Unresolved: external reference, not staged. Bid Item 4 — Inferred (04: TESC and 31 32 11 in Item 4 scope). [Resplit pass 2026-09-29] Not shown on C0.3 either. || [Merge] Exceptions: #71."
L-0112,PROPOSED-Orange barrier fence,Orange high-visibility barrier fence (TESC / clearing limits),Civil,Civil & Site,Site,Temporary,C0.4 (Det. 3 note),Not linked (PROPOSED tag is not printed; no boxed anchor matched),CWP 31,"Earthwork, Dewatering & Erosion Control",4,None found,None found,None found,None found (no MTO line: no tied callout and no tag found on a cited sheet),31 32 11,31 32 11 (tag); C0.4 (sheet),1,SUB 31 32 11-01 (spec),tag 0; spec 1; sheet 0,Y,1,ITP 31 32 11-01 (spec),tag 0; spec 1; sheet 0,N,None found (Add. 4 checked; Addenda 1-3 not staged),None found,0,None found,#71 (tag),"31-C02 Earthwork, Dewatering & Erosion Control — Temporary facilities and controls",2023-03-15,2024-10-16,2023-03-14,Not started (baseline: no progress entered),Unresolved,"31 32 11 ¶1.04 A.4, ¶2.01 F (pp.398–399); C0.4 Detail 3 note (plans_2Part-3 p.1)","Per WSDOT 9-14.5(8); C0.4 cites WSDOT Standard Plans I-30.16-01 / I-30.17-01 — Unresolved: external reference, not staged. Location not on available sheets. Bid Item 4 — Inferred. || [Merge] Exceptions: #71."
L-0113,PROPOSED-Temporary shoring and trench safety systems,"Temporary shoring, bracing and trench excavation safety systems (PE-designed where required)",Civil,Civil & Site,Site,Temporary,G0.3 (Note 7),Not linked (PROPOSED tag is not printed; no boxed anchor matched),CWP 31,"Earthwork, Dewatering & Erosion Control",2,None found,None found,None found,None found (no MTO line: no tied callout and no tag found on a cited sheet),31 40 00; 31 23 33,31 40 00 (spec); 31 23 33 (spec); G0.3 (sheet),2,SUB 31 23 33-01 (spec); SUB 31 40 00-01 (spec),tag 0; spec 2; sheet 0,Y,3,ITP 31 23 33-01 (spec); ITP 31 23 33-02 (spec); ITP G0.3-01 (sheet),tag 0; spec 2; sheet 1,N,None found (Add. 4 checked; Addenda 1-3 not staged),OI-0386 (spec),2,OI-0245 (spec); OI-0247 (spec),#70 (tag),"31-C02 Earthwork, Dewatering & Erosion Control — Temporary facilities and controls",2023-03-15,2024-10-16,2023-03-14,Not started (baseline: no progress entered),Inferred,"31 40 00 ¶1.02–1.04, ¶3.03 (pp.401–403); G0.3 General Note 7 (plans_1 p.3)","Submittals: shoring drawings and calculations; settlement monitoring and contingency plan for excavations over 10 ft. Bid Item 2 'Trench Safety Excavation Provisions' (04) — match by name, Inferred; shoring of non-trench excavations falls to Item 1 per 04 rule — Inferred. || [Merge] Exceptions: #70."
L-0114,PROPOSED-Temporary cold-mix patches,"Temporary cold-mix (MC-2) asphalt patches at trench crossings, 2 in minimum",Civil,Civil & Site,Site,Temporary,None found (no sheet cited in rev0),Not linked (PROPOSED tag is not printed; no boxed anchor matched),CWP 32,"Paving, Fencing, Walls & Landscaping",1,None found,None found,None found,None found (no MTO line: no tied callout and no tag found on a cited sheet),32 12 16,32 12 16 (spec),2,SUB 32 12 16-01 (spec); SUB 32 12 16-02 (spec),tag 0; spec 2; sheet 0,N,1,ITP 32 12 16-01 (spec),tag 0; spec 1; sheet 0,N,None found (Add. 4 checked; Addenda 1-3 not staged),None found,1,OI-0474 (tag),None found,"32-C03 Paving, Fencing, Walls & Landscaping — Temporary facilities and controls",2023-03-15,2024-10-16,2023-03-14,Not started (baseline: no progress entered),Inferred,"32 12 16 ¶2.02, ¶3.03 (p.405)","Placed, maintained daily, removed and wasted by Contractor; locations per plans or Owner direction. Bid Item 1 per 04 rule (work not itemized elsewhere) — Inferred."
L-0115,PROPOSED-Retaining wall footing drain,Retaining wall footing drain with drain rock and drainage geotextile,Civil,Civil & Site,Site,New,C2.5; C2.1,Not linked (PROPOSED tag is not printed; no boxed anchor matched),CWP 32,"Paving, Fencing, Walls & Landscaping",1,None found,None found,None found,None found (no MTO line: no tied callout and no tag found on a cited sheet),32 32 23; 33 31 00; 31 23 33; 33 41 00; Appendix C,32 32 23 (spec); 33 31 00 (spec); 31 23 33 (spec); 33 41 00 (spec); Appendix C (spec); C2.5 (sheet); C2.1 (sheet),4,SUB 31 23 33-01 (spec); SUB 32 32 23-01 (spec); SUB 33 31 00-00 (spec); SUB 33 41 00-01 (spec),tag 0; spec 4; sheet 0,N,5,ITP 31 23 33-01 (spec); ITP 31 23 33-02 (spec); ITP 32 32 23-01 (spec); ITP 33 31 00-01 (spec); ITP 33 41 00-01 (spec),tag 0; spec 5; sheet 0,N,None found (Add. 4 checked; Addenda 1-3 not staged),OI-0384 (tag); OI-0386 (spec),4,OI-0245 (spec); OI-0247 (spec); OI-0324 (spec); OI-0389 (spec),None found,"32-C02 Paving, Fencing, Walls & Landscaping — Site finish work (fencing, walls, landscaping, bollards)",2024-08-01,2024-09-30,2023-03-14,Not started (baseline: no progress entered),Unresolved,"32 32 23 ¶3.03 D (p.412); 33 31 00 ¶2.01 A (p.430); 31 23 33 ¶2.04–2.06 (p.395); 33 41 00 ¶2.02 A.5, E, ¶3.02 F, ¶3.04 (pp.448–450); Appendix C §3.7 (p.550); (Missing_Pages_Page_002.png, C2.1 — Verified-Visual)","Pipe per 33 31 00 ¶2.01 A: 4-in perforated corrugated PE (WSDOT 9-05.2(7) — Unresolved: external reference, not staged); drain rock per WSDOT 9-03.12(4). Layout on 1/C7.8 (unavailable) — Unresolved. Bid Item 1 per 04 rule (work not itemized elsewhere) — Inferred. 33 41 00 calls for perforated corrugated PE footing drain with PVC tight line and defers bedding and construction to the geotechnical report; Appendix C §3.7 calls for rigid perforated pipe in 1-in washed gravel with non-woven geotextile (see Issues CS-31) — Unresolved. [Resplit pass 2026-09-29] C2.1 keyed note 9 shows the footing drain."
L-0116,SDCB #1,"Storm drain catch basin #1, Type 1L, rim 22.3; 12-in (SE) invert 19.3",Civil,Civil & Site,Site,New,C0.3; C2.1 (KN 7); C2.3 (SD-3),"C1.3 p.17 [139.70,580.77,160.03,585.77] bluebeam-ocr — base page superseded by Add. 4 p.7, sheet not cited (tag); C2.1 p.20 [155.34,137.34,174.42,142.92] ocr (+2 reads) (tag); C2.3 p.22 [512.64,669.96,518.22,691.20] ocr (+2 reads) (tag)",CWP 33,Yard Piping & Utilities,1,Not totaled: no Verified line,EA,MTO-0044 (tag),Inferred — not totaled; lines: 1 Inferred (MTO Lines: Not Totaled Because),33 41 00,C0.3 (tag); C2.1 (tag); C2.3 (tag); 33 41 00 (spec),1,SUB 33 41 00-01 (spec),tag 0; spec 1; sheet 0,Y,1,ITP 33 41 00-01 (spec),tag 0; spec 1; sheet 0,N,None found (Add. 4 checked; Addenda 1-3 not staged),None found,3,OI-0324 (spec); OI-0389 (spec); OI-0471 (sheet),None found,"33-C06 Yard Piping & Utilities — Yard piping, vaults and site utilities",2023-04-01,2023-11-01,2023-03-31,Not started (baseline: no progress entered),Unresolved,"(Missing_Pages_Page_003.png, C2.3 — Verified-Visual); (Missing_Pages_Page_002.png, C2.1 — Verified-Visual); (Missing_Pages_Page_001.png, C0.3 — Verified-Visual)",[Resplit pass 2026-09-29] New row. At the presumed location of the existing storm sewer (existing 18-in line); location to be adjusted after potholing (C2.1 keyed note 7) — Unresolved until potholed. Inlet protection on C0.3. Bid Item and spec copied from the other SDCB rows (Inferred).
L-0117,SD-2,Storm drain alignment SD-2: SDCB #5 → #6 → #7 → #10; 48 LF of 12-in and 23 LF of 6-in at 0.5%; 4-in roof drain 21 LF at 2.00%,Civil,Civil & Site,Site,New,C2.3 (plan and profile); C2.1,"C2.3 p.22 [228.07,732.72,272.78,745.29] text-layer (+5 reads) (tag)",CWP 33,Yard Piping & Utilities,1,Not totaled: no Verified line,LF,MTO-0047 (tag); MTO-0045 (sheet); MTO-0046 (sheet),"Unresolved — not totaled; lines: 1 Verified, 1 Inferred, 1 Unresolved (MTO Lines: Not Totaled Because)",33 30 00; 33 41 00,C2.3 (tag); 33 30 00 (spec); 33 41 00 (spec); C2.1 (sheet),3,SUB 33 30 00-01 (spec); SUB 33 30 00-02 (spec); SUB 33 41 00-01 (spec),tag 0; spec 3; sheet 0,Y,3,ITP 33 30 00-01 (spec); ITP 33 30 00-02 (spec); ITP 33 41 00-01 (spec),tag 0; spec 3; sheet 0,Y,None found (Add. 4 checked; Addenda 1-3 not staged),OI-0390 (spec),2,OI-0324 (spec); OI-0389 (spec),None found,"33-C06 Yard Piping & Utilities — Yard piping, vaults and site utilities",2023-04-01,2023-11-01,2023-03-31,Not started (baseline: no progress entered),Inferred,"(Missing_Pages_Page_003.png, C2.3 — Verified-Visual)",[Resplit pass 2026-09-29] New row. Trench drains connect at SDCB #7 (north) and SDCB #10 (north and south). Pipe material not labeled in the profile. Spec and Bid Item copied from SD-1 (Inferred).
L-0118,SD-3,Storm drain alignment SD-3: SDCB #1 → #2 → #3 → #4 → trench drain; 83 LF of 12-in and 28 LF of 6-in at 0.5%,Civil,Civil & Site,Site,New,C2.3 (plan and profile); C2.1,"C2.3 p.22 [773.83,318.00,818.54,330.57] text-layer (+5 reads) (tag)",CWP 33,Yard Piping & Utilities,1,Not totaled: no Verified line,LF,MTO-0049 (tag); MTO-0048 (sheet),"Inferred — not totaled; lines: 1 Verified, 1 Inferred (MTO Lines: Not Totaled Because)",33 30 00; 33 41 00,C2.3 (tag); 33 30 00 (spec); 33 41 00 (spec); C2.1 (sheet),3,SUB 33 30 00-01 (spec); SUB 33 30 00-02 (spec); SUB 33 41 00-01 (spec),tag 0; spec 3; sheet 0,Y,3,ITP 33 30 00-01 (spec); ITP 33 30 00-02 (spec); ITP 33 41 00-01 (spec),tag 0; spec 3; sheet 0,Y,None found (Add. 4 checked; Addenda 1-3 not staged),OI-0390 (spec),2,OI-0324 (spec); OI-0389 (spec),None found,"33-C06 Yard Piping & Utilities — Yard piping, vaults and site utilities",2023-04-01,2023-11-01,2023-03-31,Not started (baseline: no progress entered),Unresolved,"(Missing_Pages_Page_003.png, C2.3 — Verified-Visual)","[Resplit pass 2026-09-29] New row. 4-in roof drains connect at STA 0+26.94 and 0+70.26. Crosses existing water, 4-in, 8-in and 10-in sewers and a 1-1/4-in PVC storm line with unknown or approximate depths — Unresolved until potholed. Spec and Bid Item copied from SD-1 (Inferred)."
L-0119,PROPOSED-Asphalt wedge curb,Asphalt wedge curb per 4/C7.7,Civil,Civil & Site,Site,New,C2.1 (KN 5),"C2.1 p.20 [977.04,207.00,1076.58,218.70] anchor: C2.1 KN 5: matched: noun WEDGE (Inferred), number read (Inferred) (sheet)",CWP 32,"Paving, Fencing, Walls & Landscaping",1,None found,None found,None found,None found (no MTO line: no tied callout and no tag found on a cited sheet),32 12 16 (Inferred),C2.1 (tag); 32 12 16 (spec),2,SUB 32 12 16-01 (spec); SUB 32 12 16-02 (spec),tag 0; spec 2; sheet 0,Y,1,ITP 32 12 16-01 (spec),tag 0; spec 1; sheet 0,Y,None found (Add. 4 checked; Addenda 1-3 not staged),None found,0,None found,None found,"32-C01 Paving, Fencing, Walls & Landscaping — Final surfacing and pavement",2024-08-01,2024-08-31,2023-03-14,Not started (baseline: no progress entered),Unresolved,"(Missing_Pages_Page_002.png, C2.1 — Verified-Visual)",[Resplit pass 2026-09-29] New row. Detail 4/C7.7 is on a sheet not in the library — Unresolved. Spec link Inferred (asphalt).
L-0120,PROPOSED-Emergency access areas,"Emergency access areas (west side) — no parking, blocking, stockpiling or staging; vehicle turnaround allowed",Civil,Civil & Site,Site,Temporary,C0.3 (KN 1),"C0.3 p.10 [979.20,286.02,1098.00,311.58] anchor: C0.3 KN 1: matched: noun EMERGENCY (Inferred), number by order (Inferred) (sheet)",CWP 31,"Earthwork, Dewatering & Erosion Control",4,None found,None found,None found,None found (no MTO line: no tied callout and no tag found on a cited sheet),31 32 11,C0.3 (tag); 31 32 11 (spec),1,SUB 31 32 11-01 (spec),tag 0; spec 1; sheet 0,Y,1,ITP 31 32 11-01 (spec),tag 0; spec 1; sheet 0,N,None found (Add. 4 checked; Addenda 1-3 not staged),None found,1,OI-0471 (sheet),None found,"31-C02 Earthwork, Dewatering & Erosion Control — Temporary facilities and controls",2023-03-15,2024-10-16,2023-03-14,Not started (baseline: no progress entered),Inferred,"(Missing_Pages_Page_001.png, C0.3 — Verified-Visual)",[Resplit pass 2026-09-29] New row. Two areas on the TESC plan; Bid Item follows the other TESC rows (Inferred).
L-0121,"PROPOSED-4in roof drain connections (SD-2, SD-3)",4-in roof drain connections: SD-2 STA 0+47.16 (21 LF at 2.00%); SD-3 STA 0+26.94 and 0+70.26,Civil,Civil & Site,Site,New,C2.3; C2.1 (KN 3),Not linked (PROPOSED tag is not printed; no boxed anchor matched),CWP 33,Yard Piping & Utilities,1,Not totaled: no Verified line,LF,MTO-0045 (sheet),Unresolved — not totaled; lines: 1 Unresolved (MTO Lines: Not Totaled Because),33 30 00; 33 41 00,33 30 00 (spec); 33 41 00 (spec); C2.3 (sheet); C2.1 (sheet),3,SUB 33 30 00-01 (spec); SUB 33 30 00-02 (spec); SUB 33 41 00-01 (spec),tag 0; spec 3; sheet 0,Y,3,ITP 33 30 00-01 (spec); ITP 33 30 00-02 (spec); ITP 33 41 00-01 (spec),tag 0; spec 3; sheet 0,Y,None found (Add. 4 checked; Addenda 1-3 not staged),OI-0390 (spec),2,OI-0324 (spec); OI-0389 (spec),None found,"33-C06 Yard Piping & Utilities — Yard piping, vaults and site utilities",2023-04-01,2023-11-01,2023-03-31,Not started (baseline: no progress entered),Inferred,"(Missing_Pages_Page_003.png, C2.3 — Verified-Visual); (Missing_Pages_Page_002.png, C2.1 — Verified-Visual)",[Resplit pass 2026-09-29] New row. Which roofs drain to each connection is not labeled. Spec and Bid Item copied from the SD-1 roof drain row (Inferred).
L-0122,INF1,"Train 1 influent line, flow splitter to existing Train 1, 8-inch",Process-Mechanical,Process & Mechanical,Influent Flow Splitter,New,G0.5; C3.1; C3.2,None found (tag searched on every page),CWP 33,Yard Piping & Utilities,1,None found,None found,None found,None found (no MTO line: no tied callout and no tag found on a cited sheet),None found (no spec section cited in rev0),G0.5 (tag); C3.1 (sheet); C3.2 (sheet),3,SUB G0.5-01 (tag); SUB C3.1-01 (sheet); SUB C3.2-01 (sheet),tag 1; spec 0; sheet 2,N,1,ITP C3.1-01 (sheet),tag 0; spec 0; sheet 1,N,None found (Add. 4 checked; Addenda 1-3 not staged),None found,1,OI-0469 (sheet),#79 (tag); #162 (tag),33-C03 Yard Piping & Utilities — Influent pump station and flow splitter,2023-06-01,2023-10-25,2023-03-31,Not started (baseline: no progress entered),Inferred,"plans_1 p.5 (G0.5, line ID INF1); plans_4Part-2 p.1 (C3.1, 8-inch to Train #1, keyed notes 5 and 7, construction sequence); plans_4Part-3 p.1 (C3.2, To Cell #1, keyed notes 8, 9, 13)","Status per C3.1 sequence (new piping to Trains 1 and 3). Cut hole through existing building, seal with flashing (C3.1 note 5); elbow discharges into the aeration basin beside the existing influent pipe (note 7). DI fittings at the box (C3.2 notes 8-9); supports per 5/C7.2. Cross-lane: Civil & Site (site piping; C1.3–C1.5 by title, per 01). Tag driver: Bid Item 1 (04, Inferred). || [Merge] Exceptions: #79, #162."
L-0123,INF2,"Train 2 influent line, flow splitter to existing Train 2, 8-inch DI",Process-Mechanical,Process & Mechanical,Influent Flow Splitter,New,G0.5; C3.1; C3.2,"G0.5 p.5 [744.30,541.62,761.04,547.56] ocr (tag)",CWP 33,Yard Piping & Utilities,1,Not totaled: no Verified line,EA,MTO-0050 (tag),Inferred — not totaled; lines: 1 Inferred (MTO Lines: Not Totaled Because),None found (no spec section cited in rev0),G0.5 (tag); C3.1 (sheet); C3.2 (sheet),3,SUB G0.5-01 (tag); SUB C3.1-01 (sheet); SUB C3.2-01 (sheet),tag 1; spec 0; sheet 2,N,1,ITP C3.1-01 (sheet),tag 0; spec 0; sheet 1,N,None found (Add. 4 checked; Addenda 1-3 not staged),None found,1,OI-0469 (sheet),#80 (tag); #162 (tag),33-C03 Yard Piping & Utilities — Influent pump station and flow splitter,2023-06-01,2023-10-25,2023-03-31,Not started (baseline: no progress entered),Inferred,"plans_1 p.5 (G0.5, INF2 through 8-inch Train #2 flow meter); plans_4Part-2 p.1 (C3.1, 8-inch to Train #2, keyed notes 8-9, construction sequence); plans_4Part-3 p.1 (C3.2, To Cell #2)","New 8-inch DI connects to the existing Train 2 influent pipe: confirm alignment, size, material, depth; keep positive drainage from the box (C3.1 note 8); pot-hole existing 8-inch (note 9). Installed after existing influent piping conflicts are removed; Train 2 downtime 5 days max, Monday-Friday (C3.1 sequence). Cross-lane: Civil & Site (site piping; C1.3–C1.5 by title, per 01). Tag driver: Bid Item 1 (04, Inferred). || [Merge] Exceptions: #80, #162."
L-0124,INF3,"Train 3 influent line, flow splitter to Train 3, 8-inch",Process-Mechanical,Process & Mechanical,Influent Flow Splitter; Train 3,New,G0.5; C3.1; C3.2; C3.3; C3.5,None found (tag searched on every page),CWP 33,Yard Piping & Utilities,1,None found,None found,None found,None found (no MTO line: no tied callout and no tag found on a cited sheet),None found (no spec section cited in rev0),G0.5 (tag); C3.1 (sheet); C3.2 (sheet); C3.3 (sheet); C3.5 (sheet),3,SUB G0.5-01 (tag); SUB C3.1-01 (sheet); SUB C3.2-01 (sheet),tag 1; spec 0; sheet 2,N,1,ITP C3.1-01 (sheet),tag 0; spec 0; sheet 1,N,None found (Add. 4 checked; Addenda 1-3 not staged),None found,1,OI-0469 (sheet),#81 (tag); #162 (tag),33-C03 Yard Piping & Utilities — Influent pump station and flow splitter,2023-06-01,2023-10-25,2023-03-31,Not started (baseline: no progress entered),Inferred,"plans_1 p.5 (G0.5, INF3 through 8-inch Train #3 flow meter); plans_4Part-2 p.1 (C3.1, 8-inch to Train #3, construction sequence); plans_4Part-4 p.1 (C3.3, Train 3 influent 8-inch IE 20.08); plans_4Part-6 p.1 (C3.5, 8-inch plant inlet IE 20.08)","Invert at tank 20.08. Cross-lane: Civil & Site (site piping; C1.3–C1.5 by title, per 01). Tag driver: Bid Item 1 (04, Inferred). || [Merge] Exceptions: #81, #162."
L-0125,SE1,Train 1 secondary effluent line to effluent flow meter and UV,Process-Mechanical,Process & Mechanical,Site,Not stated,G0.5,None found (tag searched on every page),CWP 33,Yard Piping & Utilities,1,None found,None found,None found,None found (no MTO line: no tied callout and no tag found on a cited sheet),None found (no spec section cited in rev0),G0.5 (tag),1,SUB G0.5-01 (tag),tag 1; spec 0; sheet 0,N,0,None found,tag 0; spec 0; sheet 0,N,None found (Add. 4 checked; Addenda 1-3 not staged),None found,0,None found,#82 (tag),"33-C06 Yard Piping & Utilities — Yard piping, vaults and site utilities",2023-04-01,2023-11-01,2023-03-31,Not started (baseline: no progress entered),Inferred,"plans_1 p.5 (G0.5, line ID SE1)","Size and new/existing not stated on sheets read. Cross-lane: Civil & Site (site piping; C1.3–C1.5 by title, per 01). Tag driver: Bid Item 1 (04, Inferred). || [Merge] Exceptions: #82."
L-0126,SE2,Train 2 secondary effluent line to effluent flow meter and UV,Process-Mechanical,Process & Mechanical,Site,Not stated,G0.5,"G0.5 p.5 [512.82,595.98,527.04,601.74] ocr (+1 read) (tag)",CWP 33,Yard Piping & Utilities,1,Not totaled: no Verified line,EA,MTO-0051 (tag),Inferred — not totaled; lines: 1 Inferred (MTO Lines: Not Totaled Because),None found (no spec section cited in rev0),G0.5 (tag),1,SUB G0.5-01 (sheet),tag 0; spec 0; sheet 1,N,0,None found,tag 0; spec 0; sheet 0,N,None found (Add. 4 checked; Addenda 1-3 not staged),None found,0,None found,#83 (tag),"33-C06 Yard Piping & Utilities — Yard piping, vaults and site utilities",2023-04-01,2023-11-01,2023-03-31,Not started (baseline: no progress entered),Inferred,"plans_1 p.5 (G0.5, line ID SE2)","Size and new/existing not stated on sheets read. Cross-lane: Civil & Site (site piping; C1.3–C1.5 by title, per 01). Tag driver: Bid Item 1 (04, Inferred). || [Merge] Exceptions: #83."
L-0127,SE3,"Train 3 secondary effluent line, 8-inch",Process-Mechanical,Process & Mechanical,Train 3,New,G0.5; C3.3; C3.5,None found (tag searched on every page),CWP 33,Yard Piping & Utilities,1,None found,None found,None found,None found (no MTO line: no tied callout and no tag found on a cited sheet),None found (no spec section cited in rev0),G0.5 (tag); C3.3 (sheet); C3.5 (sheet),1,SUB G0.5-01 (tag),tag 1; spec 0; sheet 0,N,0,None found,tag 0; spec 0; sheet 0,N,None found (Add. 4 checked; Addenda 1-3 not staged),None found,0,None found,#84 (tag),33-C04 Yard Piping & Utilities — Train 3,2023-08-01,2024-07-08,2023-03-31,Not started (baseline: no progress entered),Inferred,"plans_1 p.5 (G0.5, SE3); plans_4Part-4 p.1 (C3.3, Train 3 8-inch effluent IE 20.00); plans_4Part-6 p.1 (C3.5, 8-inch dia effluent flanged connection; 8-inch clarifier effluent IE 20.00)","Status Inferred (Train 3 labeled PROPOSED on G0.6). Flanged connection at the tank wall. Cross-lane: Civil & Site (site piping; C1.3–C1.5 by title, per 01). Tag driver: Bid Item 1 (04, Inferred). || [Merge] Exceptions: #84."
L-0128,WAS1,Train 1 waste activated sludge line to WAS pump,Process-Mechanical,Process & Mechanical,Site,Not stated,G0.5; C6.2,None found (tag searched on every page),CWP 33,Yard Piping & Utilities,1,None found,None found,None found,None found (no MTO line: no tied callout and no tag found on a cited sheet),None found (no spec section cited in rev0),G0.5 (tag); C6.2 (sheet),1,SUB G0.5-01 (tag),tag 1; spec 0; sheet 0,N,0,None found,tag 0; spec 0; sheet 0,N,None found (Add. 4 checked; Addenda 1-3 not staged),None found,1,OI-0208 (tag),#101 (tag); #162 (tag),"33-C06 Yard Piping & Utilities — Yard piping, vaults and site utilities",2023-04-01,2023-11-01,2023-03-31,Not started (baseline: no progress entered),Inferred,"plans_1 p.5 (G0.5, line ID WAS1 to WAS pump); plans_5 p.7 (C6.2, WAS #1 inlet)","Size and new/existing not stated on sheets read. Tag driver: Bid Item 1 (04, Inferred). Enters the valving area through a 2-inch ASCO solenoid valve between 2-inch ball valves (C6.2). || [Merge] Exceptions: #101, #162."
L-0129,WAS2,Train 2 waste activated sludge line to WAS pump,Process-Mechanical,Process & Mechanical,Site,Not stated,G0.5; C6.2,None found (tag searched on every page),CWP 33,Yard Piping & Utilities,1,None found,None found,None found,None found (no MTO line: no tied callout and no tag found on a cited sheet),None found (no spec section cited in rev0),G0.5 (tag); C6.2 (sheet),1,SUB G0.5-01 (sheet),tag 0; spec 0; sheet 1,N,0,None found,tag 0; spec 0; sheet 0,N,None found (Add. 4 checked; Addenda 1-3 not staged),None found,1,OI-0209 (tag),#102 (tag); #162 (tag),"33-C06 Yard Piping & Utilities — Yard piping, vaults and site utilities",2023-04-01,2023-11-01,2023-03-31,Not started (baseline: no progress entered),Inferred,"plans_1 p.5 (G0.5, line ID WAS2 to WAS pump); plans_5 p.7 (C6.2, WAS #2 inlet)","Size and new/existing not stated on sheets read. Tag driver: Bid Item 1 (04, Inferred). Enters the valving area through a 2-inch ASCO solenoid valve between 2-inch ball valves (C6.2). || [Merge] Exceptions: #102, #162."
L-0130,WAS3,"Train 3 WAS / clarifier drain line to WAS pump manifold, 2-inch",Process-Mechanical,Process & Mechanical,Train 3,New,G0.5; C3.3; C3.4; C6.2,None found (tag searched on every page),CWP 46,Treatment Equipment,1,None found,None found,None found,None found (no MTO line: no tied callout and no tag found on a cited sheet),46 53 00,G0.5 (tag); 46 53 00 (spec); C3.3 (sheet); C3.4 (sheet); C6.2 (sheet),3,SUB G0.5-01 (tag); SUB 46 53 00-01 (spec); SUB 46 53 00-02 (spec),tag 1; spec 2; sheet 0,N,1,ITP 46 53 00-01 (spec),tag 0; spec 1; sheet 0,N,None found (Add. 4 checked; Addenda 1-3 not staged),None found,2,OI-0409 (tag); OI-0446 (spec),#85 (tag); #162 (tag),46-C04 Treatment Equipment — Train 3,2023-08-01,2024-07-08,2023-03-31,Not started (baseline: no progress entered),Inferred,"plans_1 p.5 (G0.5, WAS3); plans_4Part-4 p.1 (C3.3, 2-inch WAS / clarifier drain to WAS pump); plans_4Part-5 p.1 (C3.4, pipe to WAS pump manifold, IE 10.3); main spec pp.497-498 (46 53 00 ¶2.01 C.6, sludge sump discharges WAS into piping to the digester); plans_5 p.7 (C6.2, WAS #3 inlet)","Status Inferred (Train 3 PROPOSED, G0.6). Stainless alternate scope for Train 3 piping not defined (Issue 9). Tag driver: Bid Item 1 (04, Inferred). Enters the valving area through a 2-inch ASCO solenoid valve between 2-inch ball valves (C6.2). || [Merge] Exceptions: #85, #162."
L-0131,PROPOSED-IPS-DISCHARGE-TO-SPLITTER,"Influent Pump Station discharge to flow splitter, 6-inch DI restrained rising to 12-inch DI at the box",Process-Mechanical,Process & Mechanical,Influent Flow Splitter,New,G0.5; C3.1; C3.2; C4.1,Not linked (PROPOSED tag is not printed; no boxed anchor matched),CWP 22,Plumbing & Process Pumps,1,None found,None found,None found,None found (no MTO line: no tied callout and no tag found on a cited sheet),22 13 29,22 13 29 (spec); G0.5 (sheet); C3.1 (sheet); C3.2 (sheet); C4.1 (sheet),6,SUB 22 13 29-01 (spec); SUB 22 13 29-02 (spec); SUB C3.1-01 (sheet); SUB C3.2-01 (sheet); SUB C4.1-01 (sheet); SUB G0.5-01 (sheet),tag 0; spec 2; sheet 4,N,3,ITP 22 13 29-01 (spec); ITP 22 13 29-02 (spec); ITP C3.1-01 (sheet),tag 0; spec 2; sheet 1,N,None found (Add. 4 checked; Addenda 1-3 not staged),None found,1,OI-0469 (sheet),#86 (tag),22-C01 Plumbing & Process Pumps — Influent pump station and flow splitter,2023-06-01,2023-10-25,2023-03-31,Not started (baseline: no progress entered),Inferred,"plans_1 p.5 (G0.5, pump station to 6-inch influent flow meter to flow splitter); plans_4Part-2 p.1 (C3.1, inlet from north); plans_4Part-3 p.1 (C3.2, keyed notes 3, 4, 5, 10, 11, 12; INV 20.75); plans_4Part-7 p.1 (C4.1, keyed notes 5, 6, 9, 11-13, 15, 16, 34, 36-41, 44, 45, 55); main spec pp.255-262 (22 13 29 ¶1.01 D; ¶2.02 F)","Status Inferred (joins the proposed pump station to the proposed splitter, G0.6). Fittings: 12-inch DI 90-degree bends and flange spools, 12x6-inch DI eccentric reducer, 6-inch DI restrained bend and pipe; 12-inch supports per 5/C7.2. Tag driver: Bid Item 1 (04, Inferred). In-station: small pumps 4x3 reducer, 4-inch check and gate valves, 4-inch DI force main restrained; large pumps 6x4 reducer, 6-inch check and gate valves, 6-inch DI restrained; 6x4 DI tee restrained; 4-inch and 6-inch buried gate valves; flanged coupling adaptors; pressure gage, isolator and shutoff valve (C4.1). 22 13 29: discharge piping and connection to existing piping in pump station scope (¶1.01 D); pressure gage Marsh P0142 0-25 psi, Branom diaphragm isolator, Apollo shutoff valve (¶2.02 F). || [Merge] Exceptions: #86."
L-0132,PROPOSED-EXISTING-INFLUENT-PIPING-REMOVAL,"Existing influent piping conflicts at the splitter: dewater, abandon, remove",Process-Mechanical,Process & Mechanical,Influent Flow Splitter,Demolished,C3.1,Not linked (PROPOSED tag is not printed; no boxed anchor matched),CWP 02,Demolition & Existing Conditions,1,None found,None found,None found,None found (no MTO line: no tied callout and no tag found on a cited sheet),None found (no spec section cited in rev0),C3.1 (tag),1,SUB C3.1-01 (sheet),tag 0; spec 0; sheet 1,N,1,ITP C3.1-01 (sheet),tag 0; spec 0; sheet 1,N,None found (Add. 4 checked; Addenda 1-3 not staged),None found,1,OI-0469 (sheet),#77 (tag); #143 (tag); #163 (tag),02-C02 Demolition & Existing Conditions — Site demolition ahead of new work,2023-04-01,2023-05-31,2023-03-31,Not started (baseline: no progress entered),Inferred,"plans_4Part-2 p.1 (C3.1, construction sequence)","Extent not dimensioned. Done after the new splitter and Train 1/3 piping are on line and before Train 2 piping and its flow meter vault. Cross-lane: Civil & Site (cross-check C0.5 Demolition Plan, per 01 title). Tag driver: Bid Item 1 (04, Inferred). || [Merge] Exceptions: #77, #143, #163."
L-0133,PROPOSED-INFLUENT-FLOW-METER,"Influent flow meter, 6-inch electromagnetic, 0-880 gpm",Controls,Process & Mechanical,Influent Flow Splitter,New,G0.5; G0.6; G0.7; C3.1,Not linked (PROPOSED tag is not printed; no boxed anchor matched),CWP 26,"Electrical, Instrumentation & Controls",6,None found,None found,None found,None found (no MTO line: no tied callout and no tag found on a cited sheet),None found (no spec section cited in rev0),G0.5 (sheet); G0.6 (sheet); G0.7 (sheet); C3.1 (sheet),3,SUB C3.1-01 (sheet); SUB G0.5-01 (sheet); SUB G0.6-01 (sheet),tag 0; spec 0; sheet 3,N,3,ITP C3.1-01 (sheet); ITP G0.6-01 (sheet); ITP G0.7-01 (sheet),tag 0; spec 0; sheet 3,N,None found (Add. 4 checked; Addenda 1-3 not staged),None found,1,OI-0469 (sheet),#9 (tag),"26-C08 Electrical, Instrumentation & Controls — Influent pump station and flow splitter",2023-06-01,2023-10-25,2023-03-14,Not started (baseline: no progress entered),Inferred,"plans_1 p.5 (G0.5, 6-inch influent flow meter); plans_1 p.6 (G0.6, plant influent flow meter); plans_1 p.7 (G0.7, 6-inch electromagnetic, 0-10 fps = 0-880 gpm, 1.27 MGD); plans_4Part-2 p.1 (C3.1, vault on inlet line)","Status Inferred (between the proposed pump station and proposed splitter). Vault association Inferred. Cross-lane: Electrical & Controls. Instrument spec is not in the P&M stack; Add. 4 p.2 revises 26 80 00 ¶2.04 D Electromagnetic Flow Meters (Promag L400 to W400), an E&C item not applied here. Bid Item 6 Inferred (Division 26 work, 04 Item 6 basis). 22 13 29 ¶1.01 D lists a ""flow meter"" in the pump station work without naming which meter. || [Merge] Exceptions: #9."
L-0134,PROPOSED-TRAIN-2-FLOW-METER,"Train 2 influent flow meter, 8-inch electromagnetic, 0-470 gpm",Controls,Process & Mechanical,Influent Flow Splitter,New,G0.5; G0.6; G0.7; C3.1,Not linked (PROPOSED tag is not printed; no boxed anchor matched),CWP 26,"Electrical, Instrumentation & Controls",6,None found,None found,None found,None found (no MTO line: no tied callout and no tag found on a cited sheet),None found (no spec section cited in rev0),G0.5 (sheet); G0.6 (sheet); G0.7 (sheet); C3.1 (sheet),3,SUB C3.1-01 (sheet); SUB G0.5-01 (sheet); SUB G0.6-01 (sheet),tag 0; spec 0; sheet 3,N,3,ITP C3.1-01 (sheet); ITP G0.6-01 (sheet); ITP G0.7-01 (sheet),tag 0; spec 0; sheet 3,N,None found (Add. 4 checked; Addenda 1-3 not staged),None found,1,OI-0469 (sheet),#7 (tag),"26-C08 Electrical, Instrumentation & Controls — Influent pump station and flow splitter",2023-06-01,2023-10-25,2023-03-14,Not started (baseline: no progress entered),Inferred,"plans_1 p.5 (G0.5); plans_1 p.6 (G0.6, PROPOSED TRAIN #2 FLOW METER); plans_1 p.7 (G0.7, 8-inch electromagnetic, 0-3 fps = 0-470 gpm, 0.68 MGD); plans_4Part-2 p.1 (C3.1, vault on Train #2 line; sequence names the Train #2 flow meter vault)","Cross-lane: Electrical & Controls. Instrument spec is not in the P&M stack; Add. 4 p.2 revises 26 80 00 ¶2.04 D Electromagnetic Flow Meters (Promag L400 to W400), an E&C item not applied here. Bid Item 6 Inferred (Division 26 work, 04 Item 6 basis). || [Merge] Exceptions: #7."
L-0135,PROPOSED-TRAIN-3-FLOW-METER,"Train 3 influent flow meter, 8-inch electromagnetic, 0-470 gpm",Controls,Process & Mechanical,Influent Flow Splitter,New,G0.5; G0.6; G0.7; C3.1,Not linked (PROPOSED tag is not printed; no boxed anchor matched),CWP 26,"Electrical, Instrumentation & Controls",6,None found,None found,None found,None found (no MTO line: no tied callout and no tag found on a cited sheet),None found (no spec section cited in rev0),G0.5 (sheet); G0.6 (sheet); G0.7 (sheet); C3.1 (sheet),3,SUB C3.1-01 (sheet); SUB G0.5-01 (sheet); SUB G0.6-01 (sheet),tag 0; spec 0; sheet 3,N,3,ITP C3.1-01 (sheet); ITP G0.6-01 (sheet); ITP G0.7-01 (sheet),tag 0; spec 0; sheet 3,N,None found (Add. 4 checked; Addenda 1-3 not staged),None found,1,OI-0469 (sheet),#8 (tag),"26-C08 Electrical, Instrumentation & Controls — Influent pump station and flow splitter",2023-06-01,2023-10-25,2023-03-14,Not started (baseline: no progress entered),Inferred,"plans_1 p.5 (G0.5); plans_1 p.6 (G0.6, PROPOSED TRAIN #3 FLOW METER); plans_1 p.7 (G0.7, 8-inch electromagnetic, 0-470 gpm, 0.68 MGD); plans_4Part-2 p.1 (C3.1, vault on Train #3 line)","Vault association Inferred. Cross-lane: Electrical & Controls. Instrument spec is not in the P&M stack; Add. 4 p.2 revises 26 80 00 ¶2.04 D Electromagnetic Flow Meters (Promag L400 to W400), an E&C item not applied here. Bid Item 6 Inferred (Division 26 work, 04 Item 6 basis). || [Merge] Exceptions: #8."
L-0136,PROPOSED-EFFLUENT-FLOW-METER,"Plant effluent flow meter, 8-inch electromagnetic, 0-940 gpm",Controls,Process & Mechanical,Site (upstream of UV per G0.5),New,G0.5; G0.6; G0.7,Not linked (PROPOSED tag is not printed; no boxed anchor matched),CWP 26,"Electrical, Instrumentation & Controls",6,None found,None found,None found,None found (no MTO line: no tied callout and no tag found on a cited sheet),None found (no spec section cited in rev0),G0.5 (sheet); G0.6 (sheet); G0.7 (sheet),2,SUB G0.5-01 (sheet); SUB G0.6-01 (sheet),tag 0; spec 0; sheet 2,N,2,ITP G0.6-01 (sheet); ITP G0.7-01 (sheet),tag 0; spec 0; sheet 2,N,None found (Add. 4 checked; Addenda 1-3 not staged),None found,0,None found,#10 (tag),"26-C10 Electrical, Instrumentation & Controls — 480V service, MCC and PLC panel",2023-04-01,2023-10-04,2023-03-14,Not started (baseline: no progress entered),Inferred,"plans_1 p.5 (G0.5, 8-inch effluent flow meter); plans_1 p.6 (G0.6, PROPOSED EFFLUENT FLOW METER); plans_1 p.7 (G0.7, 8-inch electromagnetic, 0-6 fps = 0-940 gpm, 1.35 MGD)","Cross-lane: Electrical & Controls. Instrument spec is not in the P&M stack; Add. 4 p.2 revises 26 80 00 ¶2.04 D Electromagnetic Flow Meters (Promag L400 to W400), an E&C item not applied here. Bid Item 6 Inferred (Division 26 work, 04 Item 6 basis). || [Merge] Exceptions: #10."
L-0137,PROPOSED-PLANT-DRAIN-FLOW-METER | PROPOSED-Plant-Drain-Flow-Meter,"Plant drain flow meter, 4-inch electromagnetic, 0-200 gpm | Plant drain magnetic flow meter, Promag W400, remote transmitter at the IPS panel",Controls,Process & Mechanical; Electrical & Controls,Influent Pump Station,New,G0.5; G0.7; E4.1; E6.3; E7.0; E8.1; E10.2,Not linked (PROPOSED tag is not printed; no boxed anchor matched),CWP 26,"Electrical, Instrumentation & Controls",6,None found,None found,None found,None found (no MTO line: no tied callout and no tag found on a cited sheet),26 80 00,26 80 00 (spec); G0.5 (sheet); G0.7 (sheet); E4.1 (sheet); E6.3 (sheet); E7.0 (sheet); E8.1 (sheet); E10.2 (sheet),3,SUB 26 80 00-00 (spec); SUB E4.1-01 (sheet); SUB G0.5-01 (sheet),tag 0; spec 1; sheet 2,Y,5,ITP 26 80 00-01 (spec); ITP 26 80 00-02 (spec); ITP E4.1-01 (sheet); ITP E8.1-01 (sheet); ITP G0.7-01 (sheet),tag 0; spec 2; sheet 3,Y,"Add. 4 p.2, 26 80 00 ¶2.04 D (Promag L400 replaced by W400) — Add. 4 governs; drawing already shows W400",OI-0361 (spec),4,OI-0258 (spec); OI-0374 (spec); OI-0297 (sheet); OI-0378 (sheet),None found,"26-C08 Electrical, Instrumentation & Controls — Influent pump station and flow splitter",2023-06-01,2023-10-25,2023-03-14,Not started (baseline: no progress entered),Inferred,"[Process & Mechanical] plans_1 p.5 (G0.5, 4-inch plant drain flow meter on pressate drain into pump station); plans_1 p.7 (G0.7, 4-inch electromagnetic, 0-5 fps = 0-200 gpm, 0.29 MGD) || [Electrical & Controls] E4.1 key note 2 and plan label ""PLANT DRAIN FLOW METER"" (plans_9 p.6); E6.3 S-FMPD (plans_10 p.4); E7.0 (plans_10 p.5); E8.1 key note 2 transmitter ""PLANT DRAIN"" in the IPS panel (plans_11 p.5); E10.2 flow meter summary item 5 ""PLANT DRAIN FLOW METER. SIZE: 4"""" (plans_12 p.7); Submittal: 26 80 00 ¶1.06 p.356 (hardware submittals before fabrication; control system documentation); Testing/startup: 26 80 00 ¶3.03–3.04 and ¶3.08 pp.371–372 (witnessed factory simulation; field acceptance test; programming, start-up, commissioning)","[Process & Mechanical] Cross-lane: Electrical & Controls. Instrument spec is not in the P&M stack; Add. 4 p.2 revises 26 80 00 ¶2.04 D Electromagnetic Flow Meters (Promag L400 to W400), an E&C item not applied here. Bid Item 6 Inferred (Division 26 work, 04 Item 6 basis). || [Electrical & Controls] Status New inferred: specified by make and model and wired on new conduit.; Size 4 in, in a vault with submersible kit, transmitter in the IPS panel (E10.2). Key note 1 says ""size per civil drawings"" — cross-check listed in Issues. || [Merge] Combined by rule (same PROPOSED name in the same Area/Building) from Process_and_Mechanical_Ledger.csv row 16; Electrical_and_Controls_Ledger.csv row 74. Tag level = weakest of the parts (Inferred, Inferred). Submittal: N (Process & Mechanical), Y (Electrical & Controls) — Y kept (each lane's N covers only its own stack); Testing/Startup: N (Process & Mechanical), Y (Electrical & Controls) — Y kept (each lane's N covers only its own stack)."
L-0138,PROPOSED-2W-FLOW-METER,"Plant water (2W) flow meter, 1-inch electromagnetic, 0-25 gpm, in a fiberglass enclosure (43 22 10 flow meter system)",Controls,Process & Mechanical,Not stated (2W system),Not stated,G0.7,Not linked (PROPOSED tag is not printed; no boxed anchor matched),CWP 43,Blowers & 2W Plant Water System,1,None found,None found,None found,None found (no MTO line: no tied callout and no tag found on a cited sheet),43 22 10,43 22 10 (spec); G0.7 (sheet),1,SUB 43 22 10-01 (spec),tag 0; spec 1; sheet 0,Y,2,ITP 43 22 10-00 (spec); ITP G0.7-01 (sheet),tag 0; spec 1; sheet 1,N,None found (Add. 4 checked; Addenda 1-3 not staged),None found,1,OI-0290 (spec),#11 (tag),43-C01 Blowers & 2W Plant Water System — 2W air gap water system,2023-05-01,2023-10-18,2023-03-31,Not started (baseline: no progress entered),Inferred,"plans_1 p.7 (G0.7, 1-inch electromagnetic, 0-20 fps = 0-25 gpm); main spec pp.472-475 (43 22 10 ¶1.01 B.3, one fiberglass enclosure with flow meter system)","Cross-lane: Electrical & Controls. Instrument spec is not in the P&M stack; Add. 4 p.2 revises 26 80 00 ¶2.04 D Electromagnetic Flow Meters (Promag L400 to W400), an E&C item not applied here. Bid Item 6 Inferred (Division 26 work, 04 Item 6 basis). Bid Item changed to 1: the enclosure and flow meter system are a 43 22 10 component (04 Item 1 basis, Inferred); 43 22 10 gives no meter product, so the meter itself may still sit under 26 80 00 (Item 6). Location not on P&M sheets. || [Merge] Exceptions: #11."
L-0139,PROPOSED-DIGESTED-SLUDGE-FLOW-METER,"Rotary press sludge flowmeter, 3-inch electromagnetic (E+H 10W), 24-800 gpm, at the flocculator inlet (G0.5 digested sludge FM)",Controls,Process & Mechanical,Rotary Fan Press System,Not stated,G0.5; C6.2,Not linked (PROPOSED tag is not printed; no boxed anchor matched),CWP 46,Treatment Equipment,1; Equipment Alternate C,None found,None found,None found,None found (no MTO line: no tied callout and no tag found on a cited sheet),46 76 26,46 76 26 (spec); G0.5 (sheet); C6.2 (sheet),2,SUB 46 76 26-01 (spec); SUB G0.5-01 (sheet),tag 0; spec 1; sheet 1,Y,3,ITP 46 76 26-01 (spec); ITP 46 76 26-02 (spec); ITP 46 76 26-03 (spec),tag 0; spec 3; sheet 0,N,None found (Add. 4 checked; Addenda 1-3 not staged),None found,1,OI-0421 (tag),#172 (tag),46-C01 Treatment Equipment — Sludge dewatering (rotary fan press),2023-11-01,2024-02-09,2023-03-31,Not started (baseline: no progress entered),Unresolved,"plans_1 p.5 (G0.5, FM on digested sludge pump discharge); plans_5 p.7 (C6.2, keyed note 2, 2-inch flow meter per electrical design requirements); main spec pp.510-531 (46 76 26 ¶4.2.1 sludge flowmeter)","Not in the G0.7 flow meter list (Issue 18). Cross-lane: Electrical & Controls. Instrument spec is not in the P&M stack; Add. 4 p.2 revises 26 80 00 ¶2.04 D Electromagnetic Flow Meters (Promag L400 to W400), an E&C item not applied here. Bid Item 6 Inferred (Division 26 work, 04 Item 6 basis). Location conflict (Issue 18). Tag driver now Issue 18. Identity with the G0.5 meter Inferred; the C6.2 2-inch meter is now its own row (PROPOSED-WAS-FLOW-METER). Class 1 Div 2; 4-20 mA. Issue 18. || [Merge] Exceptions: #172."
L-0140,DO #1 | DO-1,"Dissolved oxygen / pH sensor, Train 3 Aeration Zone #1 | Dissolved oxygen sensor and transmitter, Zone 1 (Hach LDO probe, SC200 transmitter, 24 VDC)",Controls,Process & Mechanical; Electrical & Controls,Train 3 | Train No.3,New,C3.3; E3.1; E7.6,"E3.1 p.69 [457.20,45.78,469.21,50.81] text-layer (tag)",CWP 46,Treatment Equipment,1; 18 — Unresolved (see 04); 19; Equipment Alternate B | 6,1,EA,MTO-0052 (tag),Verified — 1 line totaled,46 53 00; 26 80 00,C3.3 (tag); E3.1 (tag); E7.6 (tag); 46 53 00 (spec); 26 80 00 (spec),4,SUB 26 80 00-00 (spec); SUB 46 53 00-01 (spec); SUB 46 53 00-02 (spec); SUB E3.1-01 (sheet),tag 0; spec 3; sheet 1,Y,3,ITP 26 80 00-01 (spec); ITP 26 80 00-02 (spec); ITP 46 53 00-01 (spec),tag 0; spec 3; sheet 0,Y,None found (Add. 4 checked; Addenda 1-3 not staged),OI-0467 (tag); OI-0361 (spec),6,OI-0002 (tag); OI-0110 (tag); OI-0465 (tag); OI-0258 (spec); OI-0374 (spec); OI-0446 (spec),#1 (tag); #35 (tag); #160 (tag); #255 (tag),46-C04 Treatment Equipment — Train 3,2023-08-01,2024-07-08,2023-03-31,Not started (baseline: no progress entered),Unresolved,"[Process & Mechanical] plans_4Part-4 p.1 (C3.3, DO #1 DO/pH sensor at Aeration Zone #1, detail 1/C7.4); main spec p.494 (46 53 00 ¶2.01 A.1, system includes dissolved oxygen sensors) || [Electrical & Controls] E3.1 plan label ""DO-1 DISSOLVED OXYGEN SENSOR AND TRANSMITTER ZONE 1"", key note, DO probe elevation detail 1 (plans_9 p.5); E7.6 analog input 4 ""CELL #3 D.O ZONE 1"" (plans_11 p.3); 26 80 00 ¶2.04 E (p.364): Hach LDO 0–20 ppm probe, SC200 controller, 4–20 mA, 24 VDC; Submittal: 26 80 00 ¶1.06 p.356 (hardware submittals before fabrication; control system documentation); Testing/startup: 26 80 00 ¶3.03–3.04 and ¶3.08 pp.371–372 (witnessed factory simulation; field acceptance test; programming, start-up, commissioning)","[Process & Mechanical] Status Inferred (Train 3 PROPOSED, G0.6). Mounting detail 1/C7.4 is on a Civil & Site sheet (not read). Submittal: 46 53 00 ¶1.05 C.1 (equipment submittal) and ¶3.03 E.1 (test forms); start-up and testing ¶3.03. Cross-lane: Electrical & Controls (instrument wiring). Tag driver: Bid Item 18 (04 flag). || [Electrical & Controls] Two complete monitors per cell (key note). Signal C-DO1 to the PLC.; Main PLC analog input 4; zone 1 = DO-1 by number (Inferred). || [Merge] Combined by rule (same tag) from Process_and_Mechanical_Ledger.csv row 19; Electrical_and_Controls_Ledger.csv row 50. Tag level = weakest of the parts (Unresolved, Verified). || [Merge] Exceptions: #1, #35, #160, #255."
L-0141,DO #2 | DO-2,"Dissolved oxygen / pH sensor, Train 3 Aeration Zone #2 | Dissolved oxygen sensor and transmitter, second monitor (Hach LDO/SC200)",Controls,Process & Mechanical; Electrical & Controls,Train 3 | Train No.3,New,C3.3; E3.1; E6.3; E7.6,"C3.3 p.28 [346.55,512.37,360.99,517.37] bluebeam-ocr (tag); E3.1 p.69 [232.20,319.02,244.21,324.05] text-layer (tag)",CWP 46,Treatment Equipment,1; 18 — Unresolved (see 04); 19; Equipment Alternate B | 6,1,EA,MTO-0053 (tag),Verified — 1 line totaled,46 53 00; 26 80 00,C3.3 (tag); E3.1 (tag); E7.6 (tag); 46 53 00 (spec); 26 80 00 (spec); E6.3 (sheet),4,SUB 26 80 00-00 (spec); SUB 46 53 00-01 (spec); SUB 46 53 00-02 (spec); SUB E3.1-01 (sheet),tag 0; spec 3; sheet 1,Y,3,ITP 26 80 00-01 (spec); ITP 26 80 00-02 (spec); ITP 46 53 00-01 (spec),tag 0; spec 3; sheet 0,Y,None found (Add. 4 checked; Addenda 1-3 not staged),OI-0467 (tag); OI-0361 (spec),6,OI-0002 (tag); OI-0111 (tag); OI-0465 (tag); OI-0258 (spec); OI-0374 (spec); OI-0446 (spec),#2 (tag); #35 (tag); #160 (tag); #255 (tag),46-C04 Treatment Equipment — Train 3,2023-08-01,2024-07-08,2023-03-31,Not started (baseline: no progress entered),Unresolved,"[Process & Mechanical] plans_4Part-4 p.1 (C3.3, DO #2 DO/pH sensor at Aeration Zone #2, detail 1/C7.4); main spec p.494 (46 53 00 ¶2.01 A.1, system includes dissolved oxygen sensors) || [Electrical & Controls] E3.1 conduit C-DO2 and key note ""(2) complete DO monitors for each cell"" (plans_9 p.5); E6.3 C-DO2 ""DO transmitter No.2"" power and signal (plans_10 p.4); E7.6 analog input 5 ""CELL #3 D.O ZONE 2"" (plans_11 p.3); 26 80 00 ¶2.04 E (p.364): Hach LDO 0–20 ppm probe, SC200 controller, 4–20 mA, 24 VDC; Submittal: 26 80 00 ¶1.06 p.356 (hardware submittals before fabrication; control system documentation); Testing/startup: 26 80 00 ¶3.03–3.04 and ¶3.08 pp.371–372 (witnessed factory simulation; field acceptance test; programming, start-up, commissioning)","[Process & Mechanical] Status Inferred (Train 3 PROPOSED, G0.6). Mounting detail 1/C7.4 is on a Civil & Site sheet (not read). Submittal: 46 53 00 ¶1.05 C.1 (equipment submittal) and ¶3.03 E.1 (test forms); start-up and testing ¶3.03. Cross-lane: Electrical & Controls (instrument wiring). Tag driver: Bid Item 18 (04 flag). || [Electrical & Controls] Second transmitter confirmed by E6.3 (""DO transmitter No.2""); the tag DO-2 is still inferred from conduit C-DO2 — confirm on the analog-input sheets (E7.x).; Main PLC analog input 5; zone 2 = DO-2 by number (Inferred). || [Merge] Combined by rule (same tag) from Process_and_Mechanical_Ledger.csv row 20; Electrical_and_Controls_Ledger.csv row 51. Tag level = weakest of the parts (Unresolved, Inferred). || [Merge] Exceptions: #2, #35, #160, #255."
L-0142,PROPOSED-FLOW-SPLITTER-BOX,"Influent flow splitter box, prefabricated 316 SS, 4 equal chambers with adjustable weirs, removable cover",Process-Mechanical,Process & Mechanical,Influent Flow Splitter,New,G0.5; G0.6; C3.1; C3.2,Not linked (PROPOSED tag is not printed; no boxed anchor matched),CWP 46,Treatment Equipment,1,None found,None found,None found,None found (no MTO line: no tied callout and no tag found on a cited sheet),None found (no spec section cited in rev0),C3.1 (tag); G0.5 (sheet); G0.6 (sheet); C3.2 (sheet),4,SUB C3.1-01 (sheet); SUB C3.2-01 (sheet); SUB G0.5-01 (sheet); SUB G0.6-01 (sheet),tag 0; spec 0; sheet 4,N,2,ITP C3.1-01 (sheet); ITP G0.6-01 (sheet),tag 0; spec 0; sheet 2,N,None found (Add. 4 checked; Addenda 1-3 not staged),None found,4,OI-0210 (tag); OI-0412 (tag); OI-0413 (tag); OI-0469 (sheet),#75 (tag); #103 (tag),46-C02 Treatment Equipment — Influent pump station and flow splitter,2023-06-01,2023-10-25,2023-03-31,Not started (baseline: no progress entered),Inferred,"plans_4Part-3 p.1 (C3.2, keyed note 7; plan about 7 ft 0 in x 4 ft 6 in; bottom elev 26.00); plans_1 p.6 (G0.6, PROPOSED 3-WAY SPLITTER BOX, HWL 28.0 at 0.77 MGD); plans_4Part-2 p.1 (C3.1, keyed note 1 future Train #4 connection, blind flange)","Smith & Loveless or approved equal (C3.2 note 7). Outlets to Trains 1-3 plus a blind-flanged future outlet. G0.6 calls it 3-way (Issue 7). Drawing note is the only requirement found so far (Issue 40). Tag driver: Bid Item 1 (04, Inferred). || [Merge] Exceptions: #75, #103."
L-0143,PROPOSED-FLOW-SPLITTER-SUPPORT,"Concrete support pad for flow splitter box, about 6.5 x 4.0 x 1.3 ft tall, top elev 26.00",Structural,Process & Mechanical,Influent Flow Splitter,New,C3.1; C3.2,Not linked (PROPOSED tag is not printed; no boxed anchor matched),CWP 03,Concrete (Cast-in-Place & Precast),1,None found,None found,None found,None found (no MTO line: no tied callout and no tag found on a cited sheet),None found (no spec section cited in rev0),C3.1 (sheet); C3.2 (sheet),2,SUB C3.1-01 (sheet); SUB C3.2-01 (sheet),tag 0; spec 0; sheet 2,N,1,ITP C3.1-01 (sheet),tag 0; spec 0; sheet 1,N,None found (Add. 4 checked; Addenda 1-3 not staged),None found,1,OI-0469 (sheet),#76 (tag); #157 (tag),03-C04 Concrete (Cast-in-Place & Precast) — Influent pump station and flow splitter,2023-06-01,2023-10-25,2023-03-31,Not started (baseline: no progress entered),Inferred,"plans_4Part-2 p.1 (C3.1, keyed note 2); plans_4Part-3 p.1 (C3.2, keyed note 2; existing slab TOC 24.7)","Contractor coordinates with actual box dimensions; see structural drawings (C3.2 note 2). Cross-lane: Structural & Building (S2.4 Pump Station Lid, Generator Pad, & Flow Splitter Pad, per 01 title). Tag driver: Bid Item 1 (04, Inferred). || [Merge] Exceptions: #76, #157."
L-0144,PROPOSED-INFLUENT-FLOW-METER-VAULT,Flow meter vault on the splitter inlet line (north),Civil,Process & Mechanical,Influent Flow Splitter,Not stated,C3.1,Not linked (PROPOSED tag is not printed; no boxed anchor matched),CWP 03,Concrete (Cast-in-Place & Precast),1,None found,None found,None found,None found (no MTO line: no tied callout and no tag found on a cited sheet),None found (no spec section cited in rev0),C3.1 (sheet),1,SUB C3.1-01 (sheet),tag 0; spec 0; sheet 1,N,1,ITP C3.1-01 (sheet),tag 0; spec 0; sheet 1,N,None found (Add. 4 checked; Addenda 1-3 not staged),None found,1,OI-0469 (sheet),#44 (tag),03-C04 Concrete (Cast-in-Place & Precast) — Influent pump station and flow splitter,2023-06-01,2023-10-25,2023-03-31,Not started (baseline: no progress entered),Inferred,"plans_4Part-2 p.1 (C3.1, dashed vault with flow meter symbol on inlet line; VAULT DRAIN label)","Meter association Inferred (G0.5 puts the 6-inch influent meter between pump station and splitter). Cross-lane: Civil & Site (C7.9 Assigned - unavailable; C7.10 Flow Meter & Valve Vault Details, per 01 titles). Tag driver: Bid Item 1 (04, Inferred). || [Merge] Exceptions: #44."
L-0145,PROPOSED-TRAIN-2-FLOW-METER-VAULT,Train 2 flow meter vault,Civil,Process & Mechanical,Influent Flow Splitter,New,C3.1,Not linked (PROPOSED tag is not printed; no boxed anchor matched),CWP 03,Concrete (Cast-in-Place & Precast),1,None found,None found,None found,None found (no MTO line: no tied callout and no tag found on a cited sheet),None found (no spec section cited in rev0),C3.1 (sheet),1,SUB C3.1-01 (sheet),tag 0; spec 0; sheet 1,N,1,ITP C3.1-01 (sheet),tag 0; spec 0; sheet 1,N,None found (Add. 4 checked; Addenda 1-3 not staged),None found,1,OI-0469 (sheet),#5 (tag),03-C04 Concrete (Cast-in-Place & Precast) — Influent pump station and flow splitter,2023-06-01,2023-10-25,2023-03-31,Not started (baseline: no progress entered),Inferred,"plans_4Part-2 p.1 (C3.1, vault on Train #2 line; sequence: Train #2 piping and flow meter vault installed after conflicts removed)","Installed during the 5-day Train 2 outage window (C3.1 sequence). Cross-lane: Civil & Site (C7.9 Assigned - unavailable; C7.10 Flow Meter & Valve Vault Details, per 01 titles). Tag driver: Bid Item 1 (04, Inferred). || [Merge] Exceptions: #5."
L-0146,PROPOSED-TRAIN-3-FLOW-METER-VAULT,Train 3 flow meter vault,Civil,Process & Mechanical,Influent Flow Splitter,Not stated,C3.1,Not linked (PROPOSED tag is not printed; no boxed anchor matched),CWP 03,Concrete (Cast-in-Place & Precast),1,None found,None found,None found,None found (no MTO line: no tied callout and no tag found on a cited sheet),None found (no spec section cited in rev0),C3.1 (sheet),1,SUB C3.1-01 (sheet),tag 0; spec 0; sheet 1,N,1,ITP C3.1-01 (sheet),tag 0; spec 0; sheet 1,N,None found (Add. 4 checked; Addenda 1-3 not staged),None found,1,OI-0469 (sheet),#6 (tag),03-C04 Concrete (Cast-in-Place & Precast) — Influent pump station and flow splitter,2023-06-01,2023-10-25,2023-03-31,Not started (baseline: no progress entered),Inferred,"plans_4Part-2 p.1 (C3.1, vault on Train #3 line, cut off at sheet edge)","Meter association Inferred. Cross-lane: Civil & Site (C7.9 Assigned - unavailable; C7.10 Flow Meter & Valve Vault Details, per 01 titles). Tag driver: Bid Item 1 (04, Inferred). || [Merge] Exceptions: #6."
L-0147,PROPOSED-TRAIN-3-TANK,"Train 3 tank, reinforced concrete bullseye tank, 32-ft ID, 34-ft OD, 12-inch walls",Structural,Process & Mechanical,Train 3,New,G0.5; G0.6; G0.7; C3.3; C3.4; C3.5,Not linked (PROPOSED tag is not printed; no boxed anchor matched),CWP 46,Treatment Equipment,1; 18 — Unresolved (see 04); 19; Equipment Alternate B,None found,None found,None found,None found (no MTO line: no tied callout and no tag found on a cited sheet),46 53 00,03 30 00 (tag); C3.3 (tag); C3.4 (tag); C3.5 (tag); 46 53 00 (spec); G0.5 (sheet); G0.6 (sheet); G0.7 (sheet),4,SUB 46 53 00-01 (spec); SUB 46 53 00-02 (spec); SUB G0.5-01 (sheet); SUB G0.6-01 (sheet),tag 0; spec 2; sheet 2,N,3,ITP 46 53 00-01 (spec); ITP G0.6-01 (sheet); ITP G0.7-01 (sheet),tag 0; spec 1; sheet 2,N,None found (Add. 4 checked; Addenda 1-3 not staged),None found,4,OI-0002 (tag); OI-0406 (tag); OI-0465 (tag); OI-0446 (spec),#29 (tag); #158 (tag); #255 (tag),46-C04 Treatment Equipment — Train 3,2023-08-01,2024-07-08,2023-03-31,Not started (baseline: no progress entered),Unresolved,"plans_4Part-4 p.1 (C3.3, 32.00 inner / 34.00 outer wall dia., 12-inch walls, 12-inch footing extension); plans_4Part-5 p.1 (C3.4, top 26.80, floor 9.80, wall 17.00, static depth 15.50); plans_1 p.6 (G0.6, PROPOSED TRAIN #3); main spec pp.494-495 (46 53 00 ¶2.01 B.1 reinforced concrete outer wall; ¶2.01 C.1 32 ft ID, 15.5 ft static depth, 16.9 ft wall)","Wall height and freeboard differ, C3.4 vs 46 53 00 (Issue 5). 12-inch base, gravel backfill for foundations Class A per WSDOT 9-03.12(1)A - Unresolved: external reference, not staged (C3.4, C3.5). Concrete submittals and tests are not in the P&M stack. Cross-lane: Structural & Building (S2.1 Train 3 Plans & Section, per 01 title; Division 03). Tag driver: Bid Item 18 (04 flag). Also WSDOT reference. || [Merge] Exceptions: #29, #158, #255."
L-0148,PROPOSED-INFLUENT-SAMPLE-SUMP,Influent sampling sump,Civil,Process & Mechanical,Influent Pump Station,New,G0.5; G0.6; C4.1,Not linked (PROPOSED tag is not printed; no boxed anchor matched),CWP 31,"Earthwork, Dewatering & Erosion Control",1,None found,None found,None found,None found (no MTO line: no tied callout and no tag found on a cited sheet),None found (no spec section cited in rev0),C4.1 (tag); G0.5 (tag); G0.6 (sheet),3,SUB C4.1-01 (sheet); SUB G0.5-01 (sheet); SUB G0.6-01 (sheet),tag 0; spec 0; sheet 3,N,1,ITP G0.6-01 (sheet),tag 0; spec 0; sheet 1,N,None found (Add. 4 checked; Addenda 1-3 not staged),None found,0,None found,#4 (tag); #164 (tag),"31-C01 Earthwork, Dewatering & Erosion Control — Influent pump station and flow splitter",2023-06-01,2023-10-25,2023-03-14,Not started (baseline: no progress entered),Inferred,"plans_1 p.5 (G0.5, influent sample sump on 8-inch STEP influent); plans_1 p.6 (G0.6, PROPOSED INFLUENT SAMPLING SUMP, FG 23.65); plans_4Part-7 p.1 (C4.1, influent sample sump structure see 4/C7.5; 4-inch sample sump IE 18.00; keyed notes 47-51, 56)","00 register records a C1.3 revision ""Add Inf. Sample Sump"" 5/10/22: cross-check Civil & Site. Tag driver: Bid Item 1 (04, Inferred). C4.1: 4-inch line to the wet well at IE 18.00; 2-inch SCH 80 conduit for influent sampler intake tubing (note 56); well curb WC-24, IFCO 813 ring and cover, Andrew's Boss Lock coupling and dust plug (notes 47, 49-51; association with this structure Inferred). Detail 4/C7.5 is Civil & Site. || [Merge] Exceptions: #4, #164."
L-0149,PROPOSED-EFFLUENT-SAMPLE-SUMP,Effluent sample sump (effluent sample chamber),Civil,Process & Mechanical,UV Disinfection Chamber & Digester,New,G0.6; C5.1; C5.2; C5.3,Not linked (PROPOSED tag is not printed; no boxed anchor matched),CWP 03,Concrete (Cast-in-Place & Precast),1,None found,None found,None found,None found (no MTO line: no tied callout and no tag found on a cited sheet),None found (no spec section cited in rev0),G0.6 (tag); C5.1 (sheet); C5.2 (sheet); C5.3 (sheet),4,SUB C5.1-01 (sheet); SUB C5.1-02 (sheet); SUB C5.2-01 (sheet); SUB G0.6-01 (sheet),tag 0; spec 0; sheet 4,N,2,ITP C5.1-01 (sheet); ITP G0.6-01 (sheet),tag 0; spec 0; sheet 2,N,None found (Add. 4 checked; Addenda 1-3 not staged),None found,1,OI-0211 (tag),#104 (tag),03-C07 Concrete (Cast-in-Place & Precast) — UV chamber and digester,2023-04-01,2023-11-01,2023-03-31,Not started (baseline: no progress entered),Inferred,"plans_1 p.6 (G0.6, PROPOSED EFFLUENT SAMPLE SUMP); plans_5 p.2 (C5.1, EFFLUENT SAMPLE CHAMBER; EFFLUENT SAMPLE LOCATION); plans_5 p.3 (C5.2, TOC 17.25, bottom elev 16.25, 4-inch drain pipe IE 17.25)","Not on G0.5; location and detail not shown on sheets read (Open check 6, closed: C5.1 effluent sample chamber). Tag driver: Bid Item 1 (04, Inferred). C5.1 shows it between the UV chamber and the digester, with a removable guard chain and 2 ft 8 in opening; taken as the G0.6 effluent sample sump (Inferred). Open check 6, closed: C5.1 effluent sample chamber closed. Section labels placed in this chamber (Inferred from C5.1 layout). || [Merge] Exceptions: #104."
L-0150,PROPOSED-TRAIN-3-TREATMENT-SYSTEM,"Train 3 biological treatment system package, Smith & Loveless Model R Oxigest (basis of design) or approved equal",Process-Mechanical,Process & Mechanical,Train 3,New,G0.5; G0.6; G0.7; C3.3; C3.4; C3.5,Not linked (PROPOSED tag is not printed; no boxed anchor matched),CWP 46,Treatment Equipment,1; 18 — Unresolved (see 04); 19; Equipment Alternate B,None found,None found,None found,None found (no MTO line: no tied callout and no tag found on a cited sheet),46 53 00,46 53 00 (spec); G0.5 (sheet); G0.6 (sheet); G0.7 (sheet); C3.3 (sheet); C3.4 (sheet); C3.5 (sheet),4,SUB 46 53 00-01 (spec); SUB 46 53 00-02 (spec); SUB G0.5-01 (sheet); SUB G0.6-01 (sheet),tag 0; spec 2; sheet 2,Y,3,ITP 46 53 00-01 (spec); ITP G0.6-01 (sheet); ITP G0.7-01 (sheet),tag 0; spec 1; sheet 2,Y,None found (Add. 4 checked; Addenda 1-3 not staged),None found,6,OI-0002 (tag); OI-0403 (tag); OI-0404 (tag); OI-0408 (tag); OI-0465 (tag); OI-0446 (spec),#30 (tag); #255 (tag),46-C04 Treatment Equipment — Train 3,2023-08-01,2024-07-08,2023-03-31,Not started (baseline: no progress entered),Unresolved,"main spec p.492 (46 53 00 ¶1.01 A, ¶1.02); p.493 (¶1.03 A, E, F; ¶1.04); p.494 (¶1.05 A, C); pp.500-501 (¶3.03)","Single-manufacturer supply; section supersedes other specs for its equipment (¶1.03 F). Design influent 63,333 gpd avg, 178 gpm peak hour; effluent BOD5 30, TSS 30, TIN 8 mg/L. PPG 2 years from start-up, submitted with the equipment submittal; mechanical guarantee 12 months from Substantial Completion. Alternate systems bid as Equipment Alternate B (04). Components are separate rows. Issues 2, 3, 8, 9. Tag driver: Bid Item 18 (04 flag). || [Merge] Exceptions: #30, #255."
L-0151,PROPOSED-TRAIN-3-INNER-WALLS,"Train 3 steel inner walls and zone partition walls, structural steel plate 1/4-inch minimum",Process-Mechanical,Process & Mechanical,Train 3,New,C3.3,Not linked (PROPOSED tag is not printed; no boxed anchor matched),CWP 46,Treatment Equipment,1; 18 — Unresolved (see 04); 19; Equipment Alternate B,None found,None found,None found,None found (no MTO line: no tied callout and no tag found on a cited sheet),46 53 00,46 53 00 (spec); C3.3 (sheet),2,SUB 46 53 00-01 (spec); SUB 46 53 00-02 (spec),tag 0; spec 2; sheet 0,Y,1,ITP 46 53 00-01 (spec),tag 0; spec 1; sheet 0,N,None found (Add. 4 checked; Addenda 1-3 not staged),None found,4,OI-0002 (tag); OI-0409 (tag); OI-0465 (tag); OI-0446 (spec),#255 (tag),46-C04 Treatment Equipment — Train 3,2023-08-01,2024-07-08,2023-03-31,Not started (baseline: no progress entered),Unresolved,"main spec p.494 (46 53 00 ¶2.01 B.1); p.495 (¶2.01 C.1, annulus divided by steel plate partition walls); p.497 (¶2.01 C.4, inner tank reinforced for 15 ft 6 in differential); plans_4Part-4 p.1 (C3.3, note 1, partitions reinforced for individual zone dewatering)","Stainless fabrication alternates (Items 18, 19 per 04) apply to Train 3 fabrication; which components is not defined in 46 53 00 (Issue 9). Tag driver: Bid Item 18 (04 flag). || [Merge] Exceptions: #255."
L-0152,PROPOSED-TRAIN-3-CLARIFIER-MECHANISM,"Train 3 clarifier mechanism, 18-ft dia.: center drive, feed well, rake arms, skimmer, scum baffle, effluent trough and weirs, scum airlift",Process-Mechanical,Process & Mechanical,Train 3,New,C3.3; C3.4; C3.5,Not linked (PROPOSED tag is not printed; no boxed anchor matched),CWP 46,Treatment Equipment,1; 18 — Unresolved (see 04); 19; Equipment Alternate B,None found,None found,None found,None found (no MTO line: no tied callout and no tag found on a cited sheet),46 53 00,46 53 00 (spec); C3.3 (sheet); C3.4 (sheet); C3.5 (sheet),2,SUB 46 53 00-01 (spec); SUB 46 53 00-02 (spec),tag 0; spec 2; sheet 0,Y,1,ITP 46 53 00-01 (spec),tag 0; spec 1; sheet 0,Y,None found (Add. 4 checked; Addenda 1-3 not staged),None found,5,OI-0002 (tag); OI-0405 (tag); OI-0406 (tag); OI-0465 (tag); OI-0446 (spec),#33 (tag); #255 (tag),46-C04 Treatment Equipment — Train 3,2023-08-01,2024-07-08,2023-03-31,Not started (baseline: no progress entered),Unresolved,"plans_4Part-4 p.1 (C3.3, 18 ft 0 in clarifier, 5 ft 0 in feed well, scraper arms and drive, skimmer arm, scum skimmer airlift, 10-inch inlet pipe); plans_4Part-5 p.1 (C3.4, V-notch weir, scum baffle, level adjustment rod, sludge well, inlet IE 14.31); plans_4Part-6 p.1 (C3.5, 10-inch clarifier inlet gate valve); main spec pp.496-497 (46 53 00 ¶2.01 C.3-C.5)","Drive rated 800 ft-lb, 1/2 HP 460 V 3-phase motor with overload protection; rubber-belting rake arms; intermittent scum airlift discharges to the aerobic digester; drive-failure alarm contacts. Clarifier floor concrete at 1:12 placed by purchaser (¶2.01 C.3). Freeboard 1.4 ft vs 1.50 (Issue 5); side water depth (Issue 4). Tag driver: Bid Item 18 (04 flag). || [Merge] Exceptions: #33, #255."
L-0153,PROPOSED-TRAIN-3-WALKWAYS-AND-LADDER,"Train 3 access walkway (3-ft clarifier bridge), 2-ft peripheral service walkway, aluminum grating and handrail, aluminum ladder with concrete pad",Process-Mechanical,Process & Mechanical,Train 3,New,C3.3; C3.4; C3.5,Not linked (PROPOSED tag is not printed; no boxed anchor matched),CWP 46,Treatment Equipment,1; 18 — Unresolved (see 04); 19; Equipment Alternate B,None found,None found,None found,None found (no MTO line: no tied callout and no tag found on a cited sheet),46 53 00,46 53 00 (spec); C3.3 (sheet); C3.4 (sheet); C3.5 (sheet),2,SUB 46 53 00-01 (spec); SUB 46 53 00-02 (spec),tag 0; spec 2; sheet 0,Y,1,ITP 46 53 00-01 (spec),tag 0; spec 1; sheet 0,N,None found (Add. 4 checked; Addenda 1-3 not staged),None found,3,OI-0002 (tag); OI-0465 (tag); OI-0446 (spec),#34 (tag); #255 (tag),46-C04 Treatment Equipment — Train 3,2023-08-01,2024-07-08,2023-03-31,Not started (baseline: no progress entered),Unresolved,"plans_4Part-4 p.1 (C3.3, 3 ft 0 in clarifier bridge, 2-ft peripheral walkway with handrail, prefab aluminum ladder); plans_4Part-5 p.1 (C3.4, ladder; concrete pad 4 x 4 ft x 6-inch at FG 23.30); main spec p.495 (46 53 00 ¶2.01 B.2 150 plf live load, L/360, 42-inch handrail and midrail, aluminum bar grating and handrail; ¶2.01 B.3 aluminum ladder)","Clarifier bridge is a steel structure (¶2.01 C.3, p.497). Tag driver: Bid Item 18 (04 flag). || [Merge] Exceptions: #34, #255."
L-0154,PROPOSED-TRAIN-3-AERATION-DIFFUSERS,"Train 3 aeration system: air header, drop pipes with unions and air control valves, medium bubble (plenum) diffusers, 8 in Aeration Zone 1 and 2 in Aeration Zone 2",Process-Mechanical,Process & Mechanical,Train 3,New,G0.7; C3.3; C3.4; C3.5,Not linked (PROPOSED tag is not printed; no boxed anchor matched),CWP 46,Treatment Equipment,1; 18 — Unresolved (see 04); 19; Equipment Alternate B,None found,None found,None found,None found (no MTO line: no tied callout and no tag found on a cited sheet),46 53 00,46 53 00 (spec); G0.7 (sheet); C3.3 (sheet); C3.4 (sheet); C3.5 (sheet),2,SUB 46 53 00-01 (spec); SUB 46 53 00-02 (spec),tag 0; spec 2; sheet 0,Y,2,ITP 46 53 00-01 (spec); ITP G0.7-01 (sheet),tag 0; spec 1; sheet 1,Y,None found (Add. 4 checked; Addenda 1-3 not staged),None found,3,OI-0002 (tag); OI-0465 (tag); OI-0446 (spec),#255 (tag),46-C04 Treatment Equipment — Train 3,2023-08-01,2024-07-08,2023-03-31,Not started (baseline: no progress entered),Unresolved,"plans_1 p.7 (G0.7 zone 1: 8 diffusers, 24 scfm each, 192 scfm; zone 2: 2 diffusers, 48 scfm); plans_4Part-4 p.1 (C3.3, plenum diffuser typ, 6-inch air inlet); plans_4Part-6 p.1 (C3.5, 6-inch air inlet flanged connection, air header); main spec pp.495-496 (46 53 00 ¶2.01 C.1, C.2); p.498 (¶2.01 E.2 air test 15 psi, 60 min)",AOR 269 lb O2/day (Aerobic Zone 1) and 57 lb O2/day (Zone 2); 125-lb flanged supply connection just outside the tank (¶2.01 C.2). Spare: 1 diffuser assembly (¶2.01 G). Air piping outside the tank per 33 31 00 ¶2.01 D - Cross-lane: Civil & Site. Air totals Issue 6. Tag driver: Bid Item 18 (04 flag). || [Merge] Exceptions: #255.
L-0155,PROPOSED-TRAIN-3-ANOXIC-MIXERS,"Train 3 submersible mixers (2), 5 HP, 460 V 3-phase, one per anoxic zone",Process-Mechanical,Process & Mechanical,Train 3,New,G0.7; C3.3; C3.4,Not linked (PROPOSED tag is not printed; no boxed anchor matched),CWP 46,Treatment Equipment,1; 18 — Unresolved (see 04); 19; Equipment Alternate B,None found,None found,None found,None found (no MTO line: no tied callout and no tag found on a cited sheet),46 53 00; 46 41 23,46 53 00 (spec); 46 41 23 (spec); G0.7 (sheet); C3.3 (sheet); C3.4 (sheet),4,SUB 46 41 23-01 (spec); SUB 46 41 23-02 (spec); SUB 46 53 00-01 (spec); SUB 46 53 00-02 (spec),tag 0; spec 4; sheet 0,Y,3,ITP 46 41 23-01 (spec); ITP 46 53 00-01 (spec); ITP G0.7-01 (sheet),tag 0; spec 2; sheet 1,Y,None found (Add. 4 checked; Addenda 1-3 not staged),None found,4,OI-0002 (tag); OI-0411 (tag); OI-0465 (tag); OI-0446 (spec),#32 (tag); #255 (tag),46-C04 Treatment Equipment — Train 3,2023-08-01,2024-07-08,2023-03-31,Not started (baseline: no progress entered),Unresolved,"plans_1 p.7 (G0.7, one 5 HP mixer in anoxic zone #1, 15,686 gal, and #2, 8,789 gal); plans_4Part-4 p.1 (C3.3, two submersible mixers); plans_4Part-5 p.1 (C3.4); main spec p.495 (46 53 00 ¶2.01 C.1); main spec pp.486-490 (46 41 23 ¶1.01 A; ¶1.02 A; ¶1.03 A; ¶2.01; ¶2.04; ¶3.01 B; ¶3.02)","Seal-fail and overtemp sensors wired to the treatment system control panel (¶2.01 F.2.e, p.499).Tag driver: Bid Item 18 (04 flag). 46 41 23: 5 HP max, 460 V, 316 Ti construction, 4-inch square SS guide mast or floor pedestal, PTC switches and moisture detector with supplier relays installed by others in the motor control panel; factory and field tests; 2 days start-up; 1 day training; 1-year extended warranty; 3 sets of wear parts. Also specified in 46 53 00 (Issue 30). || [Merge] Exceptions: #32, #255."
L-0156,PROPOSED-TRAIN-3-DAVIT-CRANES,"Portable lifting davits (2) for the Train 3 mixers, stainless, manual brake winch, on top mast brackets",Process-Mechanical,Process & Mechanical,Train 3,New,C3.3; C3.4,Not linked (PROPOSED tag is not printed; no boxed anchor matched),CWP 46,Treatment Equipment,1; 18 — Unresolved (see 04); 19; Equipment Alternate B,None found,None found,None found,None found (no MTO line: no tied callout and no tag found on a cited sheet),46 41 23,46 41 23 (spec); C3.3 (sheet); C3.4 (sheet),2,SUB 46 41 23-01 (spec); SUB 46 41 23-02 (spec),tag 0; spec 2; sheet 0,Y,1,ITP 46 41 23-01 (spec),tag 0; spec 1; sheet 0,N,None found (Add. 4 checked; Addenda 1-3 not staged),None found,3,OI-0002 (tag); OI-0411 (tag); OI-0465 (tag),#255 (tag),46-C04 Treatment Equipment — Train 3,2023-08-01,2024-07-08,2023-03-31,Not started (baseline: no progress entered),Unresolved,"plans_4Part-4 p.1 (C3.3, davit crane assembly at two locations); plans_4Part-5 p.1 (C3.4, typ. for both locations); main spec pp.486-490 (46 41 23 ¶1.01 A two davit cranes; ¶2.01 E)","Tag driver: Bid Item 18 (04 flag). Open check 3, closed: 46 41 23 closed: davits are in 46 41 23. Removable handrail or safety-chain sections so mixers are not lifted over the handrail (¶2.01 E). Supplier split with 46 53 00 (Issue 30). || [Merge] Exceptions: #255."
L-0157,PROPOSED-TRAIN-3-RAS-AIRLIFT,"RAS airlift pump, 3-inch steel riser with flow division (weir) box, 51 gpm at 15 cfm max",Process-Mechanical,Process & Mechanical,Train 3,New,G0.5; G0.7; C3.3; C3.5,Not linked (PROPOSED tag is not printed; no boxed anchor matched),CWP 46,Treatment Equipment,1; 18 — Unresolved (see 04); 19; Equipment Alternate B,None found,None found,None found,None found (no MTO line: no tied callout and no tag found on a cited sheet),46 53 00,46 53 00 (spec); G0.5 (sheet); G0.7 (sheet); C3.3 (sheet); C3.5 (sheet),3,SUB 46 53 00-01 (spec); SUB 46 53 00-02 (spec); SUB G0.5-01 (sheet),tag 0; spec 2; sheet 1,Y,2,ITP 46 53 00-01 (spec); ITP G0.7-01 (sheet),tag 0; spec 1; sheet 1,Y,None found (Add. 4 checked; Addenda 1-3 not staged),None found,3,OI-0002 (tag); OI-0465 (tag); OI-0446 (spec),#255 (tag),46-C04 Treatment Equipment — Train 3,2023-08-01,2024-07-08,2023-03-31,Not started (baseline: no progress entered),Unresolved,"plans_1 p.7 (G0.7, 15 scfm, 3-inch, 51 gpm, 1Q); plans_4Part-4 p.1 (C3.3, 3-inch RAS airlift sludge duct, RAS airlift weir box); plans_4Part-6 p.1 (C3.5, RAS airlift weir box, 4-inch RAS IE 10.36); main spec pp.497-498 (46 53 00 ¶2.01 C.6)",Discharges RAS to Anoxic Zone #1; the sludge sump also discharges WAS to piping to the digester (¶2.01 C.6). Tag driver: Bid Item 18 (04 flag). || [Merge] Exceptions: #255.
L-0158,PROPOSED-TRAIN-3-MLR-AIRLIFT,"Nitrate (mixed liquor) recycle airlift pump(s), 6-inch steel riser, Liqui-Lift weir box, 6-inch MLR pipe",Process-Mechanical,Process & Mechanical,Train 3,New,G0.5; G0.7; C3.3; C3.4; C3.5,Not linked (PROPOSED tag is not printed; no boxed anchor matched),CWP 46,Treatment Equipment,1; 18 — Unresolved (see 04); 19; Equipment Alternate B,None found,None found,None found,None found (no MTO line: no tied callout and no tag found on a cited sheet),46 53 00,46 53 00 (spec); G0.5 (sheet); G0.7 (sheet); C3.3 (sheet); C3.4 (sheet); C3.5 (sheet),3,SUB 46 53 00-01 (spec); SUB 46 53 00-02 (spec); SUB G0.5-01 (sheet),tag 0; spec 2; sheet 1,Y,2,ITP 46 53 00-01 (spec); ITP G0.7-01 (sheet),tag 0; spec 1; sheet 1,Y,None found (Add. 4 checked; Addenda 1-3 not staged),None found,5,OI-0002 (tag); OI-0404 (tag); OI-0410 (tag); OI-0465 (tag); OI-0446 (spec),#255 (tag),46-C04 Treatment Equipment — Train 3,2023-08-01,2024-07-08,2023-03-31,Not started (baseline: no progress entered),Unresolved,"plans_1 p.7 (G0.7, one airlift 61 scfm, 6-inch, 203 gpm, 4Q); plans_4Part-4 p.1 (C3.3, nitrate recycle weir box, 6-inch MLR pipe); plans_4Part-5 p.1 (C3.4, 6-inch nitrate recycle underflow IE 10.57); plans_4Part-6 p.1 (C3.5, Liqui-Lift nitrate recycle weir box; 8-inch at IE 10.57); main spec p.495 (46 53 00 ¶2.01 C.1, one 6-inch airlift, 101 gpm); p.498 (¶2.01 C.7, two airlifts, 101 gpm and 30 cfm each)","Quantity, location and flow path conflict (Issue 3); size at IE 10.57 conflicts (Issue 10). Solenoids, limit switches and controls by manufacturer (¶2.01 C.1). Tag driver: Bid Item 18 (04 flag). || [Merge] Exceptions: #255."
L-0159,PROPOSED-CARBON-FEED-PUMPS,"Carbon feed peristaltic metering pumps (2: 1 duty, 1 standby), Stenner Model S3V02AA302N",Process-Mechanical,Process & Mechanical,Not stated (feeds Train 3 Anoxic 2 per G0.5),New,G0.5,Not linked (PROPOSED tag is not printed; no boxed anchor matched),CWP 46,Treatment Equipment,1; 18 — Unresolved (see 04); 19; Equipment Alternate B,None found,None found,None found,None found (no MTO line: no tied callout and no tag found on a cited sheet),46 53 00,46 53 00 (spec); G0.5 (sheet),3,SUB 46 53 00-01 (spec); SUB 46 53 00-02 (spec); SUB G0.5-01 (sheet),tag 0; spec 2; sheet 1,Y,1,ITP 46 53 00-01 (spec),tag 0; spec 1; sheet 0,Y,None found (Add. 4 checked; Addenda 1-3 not staged),None found,4,OI-0002 (tag); OI-0431 (tag); OI-0465 (tag); OI-0446 (spec),#161 (tag); #255 (tag),46-C04 Treatment Equipment — Train 3,2023-08-01,2024-07-08,2023-03-31,Not started (baseline: no progress entered),Unresolved,"main spec p.498 (46 53 00 ¶2.01 C.8, provide and install; capacity 17 gpm; variable speed; flow paced per 26 80 00 ¶3.09 C); plans_1 p.5 (G0.5, carbon addition into Anoxic 2)","Pump location, carbon product, storage and feed piping not shown on sheets read so far (Issue 41). Flow pacing is an E&C item (26 80 00 ¶3.09 C). Tag driver: Bid Item 18 (04 flag). || [Merge] Exceptions: #161, #255."
L-0160,PROPOSED-TRAIN-3-CONTROL-PANEL,"Treatment system control panel, NEMA 4X 316 SS, 460 V 3-phase input, UL listed",Controls,Process & Mechanical,Train 3,New,None found (no sheet cited in rev0),Not linked (PROPOSED tag is not printed; no boxed anchor matched),CWP 46,Treatment Equipment,1; 18 — Unresolved (see 04); 19; Equipment Alternate B,None found,None found,None found,None found (no MTO line: no tied callout and no tag found on a cited sheet),46 53 00,46 53 00 (spec),2,SUB 46 53 00-01 (spec); SUB 46 53 00-02 (spec),tag 0; spec 2; sheet 0,Y,1,ITP 46 53 00-01 (spec),tag 0; spec 1; sheet 0,Y,None found (Add. 4 checked; Addenda 1-3 not staged),None found,4,OI-0002 (tag); OI-0465 (tag); OI-0474 (tag); OI-0446 (spec),#31 (tag); #161 (tag); #255 (tag),46-C04 Treatment Equipment — Train 3,2023-08-01,2024-07-08,2023-03-31,Not started (baseline: no progress entered),Unresolved,main spec p.499 (46 53 00 ¶2.01 F); pp.500-501 (¶3.03),"Main breaker 30 A by design, manufacturer sizes and submits (¶2.01 F.2.a); mounted on an exterior wall within sight of the system; starters for clarifier drive and 2 mixers, 480-120 V control transformer, relay logic, alarm light and horn, panel heater, 120 V circuit for pole light and receptacle on the cell (¶2.01 F.2). Location not shown on sheets read. Field wiring by the Electrical Contractor (¶2.01 F.2.n): Cross-lane: Electrical & Controls; Item 6 basis per 04 (Inferred). Tag driver: Bid Item 18 (04 flag). || [Merge] Exceptions: #31, #161, #255."
L-0161,PROPOSED-TRAIN-3-FRP-LAUNDER-COVER,"FRP launder cover, Train 3 clarifier effluent trough",Process-Mechanical,Process & Mechanical,Train 3,New,C3.4; C3.5,Not linked (PROPOSED tag is not printed; no boxed anchor matched),CWP 10,Specialties,1; 18 — Unresolved (see 04); 19; Equipment Alternate B,None found,None found,None found,None found (no MTO line: no tied callout and no tag found on a cited sheet),10 73 05,10 73 05 (tag); C3.4 (sheet); C3.5 (sheet),2,SUB 10 73 05-01 (spec); SUB 10 73 05-02 (spec),tag 0; spec 2; sheet 0,Y,2,ITP 10 73 05-01 (spec); ITP 10 73 05-02 (spec),tag 0; spec 2; sheet 0,Y,None found (Add. 4 checked; Addenda 1-3 not staged),None found,3,OI-0002 (tag); OI-0435 (tag); OI-0465 (tag),#255 (tag),10-C02 Specialties — Train 3,2023-08-01,2024-07-08,2023-03-31,Not started (baseline: no progress entered),Unresolved,"plans_4Part-5 p.1 (C3.4, FRP launder cover); plans_4Part-6 p.1 (C3.5, FRP launder cover); main spec pp.243-245 (10 73 05 ¶1.01, ¶1.02 A, ¶2.01 A submittals, ¶3.01 B-G, ¶3.02, ¶4.02 B start-up and field testing)","Tag driver: Bid Item 18 (04 flag). 10 73 05: molded opaque UV-protected FRP, sections at least 4 ft, pivoting brackets, spring latches, stainless hardware, max 55 lb per panel; 1-year extended warranty; 3 sets of wear parts; 2 days start-up and field testing; 1 day training. ¶3.01 A carries stray sludge pump text (Issue 20). || [Merge] Exceptions: #255."
L-0162,PROPOSED-INFLUENT-PUMP-STATION-WET-WELL,"Influent Pump Station wet well, 96-inch precast on 12-inch precast base, bottom elev 9.0, top 23.30, with vent and clean outs",Civil,Process & Mechanical,Influent Pump Station,New,G0.5; G0.6; C4.1,Not linked (PROPOSED tag is not printed; no boxed anchor matched),CWP 22,Plumbing & Process Pumps,1,None found,None found,None found,None found (no MTO line: no tied callout and no tag found on a cited sheet),22 13 29,22 13 29 (spec); G0.5 (sheet); G0.6 (sheet); C4.1 (sheet),5,SUB 22 13 29-01 (spec); SUB 22 13 29-02 (spec); SUB C4.1-01 (sheet); SUB G0.5-01 (sheet); SUB G0.6-01 (sheet),tag 0; spec 2; sheet 3,Y,3,ITP 22 13 29-01 (spec); ITP 22 13 29-02 (spec); ITP G0.6-01 (sheet),tag 0; spec 2; sheet 1,N,"Add. 4 p.1, Clarification 2 — Add. 4 governs",None found,1,OI-0414 (tag),#37 (tag),22-C01 Plumbing & Process Pumps — Influent pump station and flow splitter,2023-06-01,2023-10-25,2023-03-31,Not started (baseline: no progress entered),Unresolved,"plans_4Part-7 p.1 (C4.1, elevation: 96-inch precast wet well per WSDOT Std Plan B-15.60-00; 12-inch precast base; interior bottom 9.0; top 23.30; WrapidSeal or equal at all joints; keyed notes 10, 18, 19, 21, 30, 31); plans_1 p.6 (G0.6, PROPOSED INFLUENT & PLANT DRAIN PUMP STATION); Add. 4 p.1 (Clarification 2); main spec pp.255-262 (22 13 29 ¶1.01 B, D; ¶1.03 A.2; ¶2.03)","Add. 4 Clarification 2: exterior of all precast concrete wet well joints sealed with CANUSA-CPS WrapidSeal (Manhole Encapsulation System) or approved equal, installed per manufacturer; C4.1 already calls WrapidSeal or equal at all joints. Top slab per 1/S2.4, 2/S2.4 (Cross-lane: Structural & Building). 3-inch SS vent pipe with 24-mesh SS screen, IE 21.00 (note 18); oversized core hole for the rotated top elbow (note 10); link-seal boots at all penetrations (note 31); 3/4-inch SS anchor bolts, 16 total (note 30). Pipe brace detail conflict: 7/C7.2 vs sheet M4.1 (Issue 11). Wet well per WSDOT Std Plan B-15.60-00; steps or ladder per WSDOT Std Plan B-30.90-01 (note 21); 12-inch base per WSDOT 9-03.12(1)A. WSDOT references are Unresolved: external reference, not staged. Tag driver: WSDOT references. 22 13 29 makes the station a complete performance package (station shop drawing ¶1.03 A.2; cast-iron discharge connections, 316 SS guide bars about 15 ft, three 316 SS cable holders, ¶2.03). Wet well concrete tests are not in the P&M stack. || [Merge] Exceptions: #37."
L-0163,PROPOSED-INFLUENT-PUMPS-SMALL,"Influent pumps, small, submersible, duplex (2), 120-220 gpm each",Process-Mechanical,Process & Mechanical,Influent Pump Station,New,G0.7; C4.1,Not linked (PROPOSED tag is not printed; no boxed anchor matched),CWP 22,Plumbing & Process Pumps,1; Equipment Alternate A,None found,None found,None found,None found (no MTO line: no tied callout and no tag found on a cited sheet),22 13 29,22 13 29 (spec); G0.7 (sheet); C4.1 (sheet),3,SUB 22 13 29-01 (spec); SUB 22 13 29-02 (spec); SUB C4.1-01 (sheet),tag 0; spec 2; sheet 1,Y,3,ITP 22 13 29-01 (spec); ITP 22 13 29-02 (spec); ITP G0.7-01 (sheet),tag 0; spec 2; sheet 1,Y,None found (Add. 4 checked; Addenda 1-3 not staged),None found,0,None found,#36 (tag),22-C01 Plumbing & Process Pumps — Influent pump station and flow splitter,2023-06-01,2023-10-25,2023-03-31,Not started (baseline: no progress entered),Inferred,"plans_1 p.7 (G0.7, 2 small submersible pumps, 120-220 gpm each; firm capacity 535 gpm, 0.77 MGD); plans_4Part-7 p.1 (C4.1, keyed notes 24-26, 28, 29, 33, 52; control table); main spec pp.255-262 (22 13 29 ¶2.02 B, C; ¶1.03 A-C; ¶1.04 B-C; ¶3.03)","Duplex arrangement per specs (C4.1 note 52); discharge 4x3-inch DI reducer if required (note 9). Stainless guide rails and haul chains by supplier (notes 24, 25); manufacturer disconnect elbow (29); flapper valve to close and seal when submerged (33); power cord long enough for removal (26). Spec section not numbered on C4.Equipment Alternate A per 04 bid form description ""Submersible Pump Equipment"" (Inferred). Tag driver: Bid Item 1 (04, Inferred). 22 13 29: Flygt N3085 MT, 150 gpm at 20.5 ft (120 at 22.0; 220 at 17.5; shutoff 26 ft), 2.7 HP, 1800 rpm, 460 V 3-phase, discharge 3 1/8 in.; Class 1 Div 1 Groups C and D; 316 SS guide bars and lifting chain; MiniCAS-120 motor saver; 5-year or 10,000-hour warranty; certified factory performance tests, factory operational test, field tests and start-up with flow tests. Alternate A base manufacturer (Flygt, 04) matches the spec. || [Merge] Exceptions: #36."
L-0164,PROPOSED-INFLUENT-PUMPS-LARGE,"Influent pumps, large, submersible, duplex (2), 320-500 gpm each",Process-Mechanical,Process & Mechanical,Influent Pump Station,New,G0.7; C4.1,Not linked (PROPOSED tag is not printed; no boxed anchor matched),CWP 22,Plumbing & Process Pumps,1; Equipment Alternate A,None found,None found,None found,None found (no MTO line: no tied callout and no tag found on a cited sheet),22 13 29,22 13 29 (spec); G0.7 (sheet); C4.1 (sheet),3,SUB 22 13 29-01 (spec); SUB 22 13 29-02 (spec); SUB C4.1-01 (sheet),tag 0; spec 2; sheet 1,Y,3,ITP 22 13 29-01 (spec); ITP 22 13 29-02 (spec); ITP G0.7-01 (sheet),tag 0; spec 2; sheet 1,Y,None found (Add. 4 checked; Addenda 1-3 not staged),None found,0,None found,#36 (tag),22-C01 Plumbing & Process Pumps — Influent pump station and flow splitter,2023-06-01,2023-10-25,2023-03-31,Not started (baseline: no progress entered),Inferred,"plans_1 p.7 (G0.7, 2 large submersible pumps, 320-500 gpm each; firm capacity 535 gpm, 0.77 MGD); plans_4Part-7 p.1 (C4.1, keyed notes 24-26, 28, 29, 33, 53; control table); main spec pp.255-262 (22 13 29 ¶2.02 B, C; ¶1.03 A-C; ¶1.04 B-C; ¶3.03)","Duplex arrangement per specs (C4.1 note 53); discharge 6x4-inch DI reducer if required (note 15). Stainless guide rails and haul chains by supplier (notes 24, 25); manufacturer disconnect elbow (29); flapper valve to close and seal when submerged (33); power cord long enough for removal (26). Spec section not numbered on C4.Equipment Alternate A per 04 bid form description ""Submersible Pump Equipment"" (Inferred). Tag driver: Bid Item 1 (04, Inferred). 22 13 29: Flygt N3102 MT, 385 gpm at 20.5 ft (320 at 22.5; 500 at 15.0; shutoff 38 ft), 5.0 HP, 1800 rpm, 460 V 3-phase, discharge 3 15/16 in.; Class 1 Div 1 Groups C and D; 316 SS guide bars and lifting chain; MiniCAS-120 motor saver; 5-year or 10,000-hour warranty; certified factory performance tests, factory operational test, field tests and start-up with flow tests. Alternate A base manufacturer (Flygt, 04) matches the spec. || [Merge] Exceptions: #36."
L-0165,PROPOSED-IPS-LEVEL-TRANSDUCER,"Influent Pump Station wet well level transducer, set 6 in. above floor (set points T1-T7)",Controls,Process & Mechanical,Influent Pump Station,New,C4.1,Not linked (PROPOSED tag is not printed; no boxed anchor matched),CWP 22,Plumbing & Process Pumps,1,None found,None found,None found,None found (no MTO line: no tied callout and no tag found on a cited sheet),22 13 29,22 13 29 (spec); C4.1 (sheet),3,SUB 22 13 29-01 (spec); SUB 22 13 29-02 (spec); SUB C4.1-01 (sheet),tag 0; spec 2; sheet 1,N,2,ITP 22 13 29-01 (spec); ITP 22 13 29-02 (spec),tag 0; spec 2; sheet 0,N,None found (Add. 4 checked; Addenda 1-3 not staged),None found,0,None found,#39 (tag),22-C01 Plumbing & Process Pumps — Influent pump station and flow splitter,2023-06-01,2023-10-25,2023-03-31,Not started (baseline: no progress entered),Inferred,"plans_4Part-7 p.1 (C4.1, keyed note 54; control table T1-T7); main spec pp.255-262 (22 13 29 ¶3.02 A)","T1 high level alarm 17.50 (with float), T2 large lag 17.00, T3 large lead 16.00, T4 small lag 14.00, T5 small lead 12.00, T6 pumps off 11.00, T7 low level alarm and redundant off 10.50. Spec not numbered on C4.1. Cross-lane: Electrical & Controls (control panel E8.x per 01 titles). Bid Item 1 per 04 default; Item 6 if specified in Division 26 (Inferred). Tag driver: Bid Item 1 (04, Inferred). 22 13 29 ¶3.02 A: a submersible level transducer is also used for pump control (no product requirements given). || [Merge] Exceptions: #39."
L-0166,F1–F4 [Influent Pump Station],"Influent Pump Station backup float switches F1-F4, timer control",Controls,Process & Mechanical,Influent Pump Station,New,C4.1,"C4.1 p.31 [1053.36,617.76,1063.26,623.70] ocr (+12 reads) (tag)",CWP 22,Plumbing & Process Pumps,1,None found,None found,None found,"None found (rollup row: range row; members with their own rows: F1 L-0291, F2 L-0292, F3 L-0293, F4 L-0294)",22 13 29,C4.1 (tag); E4.2 (tag); E8.1 (tag); E8.3 (tag); 22 13 29 (spec),3,SUB 22 13 29-01 (spec); SUB 22 13 29-02 (spec); SUB C4.1-01 (sheet),tag 0; spec 2; sheet 1,N,2,ITP 22 13 29-01 (spec); ITP 22 13 29-02 (spec),tag 0; spec 2; sheet 0,Y,None found (Add. 4 checked; Addenda 1-3 not staged),None found,0,None found,#40 (tag),22-C01 Plumbing & Process Pumps — Influent pump station and flow splitter,2023-06-01,2023-10-25,2023-03-31,Not started (baseline: no progress entered),Inferred,"plans_4Part-7 p.1 (C4.1, control table); main spec pp.255-262 (22 13 29 ¶3.02 A; ¶3.03 A.6)","F1 redundant large lag pump on 19.00; F2 redundant large lead 18.50; F3 redundant small lag 18.00; F4 redundant small lead 17.50; a float also backs T1 high level alarm. Printed IDs F1-F4 repeat on C4.2; bracketed area added for a unique Tag. Cross-lane: Electrical & Controls. Tag driver: Bid Item 1 (04, Inferred). Floats suspended at plan levels on cable holders (¶3.02 A); start-up checks the level control operation sequence (¶3.03 A.6). || [Merge] Exceptions: #40."
L-0167,PROPOSED-IPS-VALVE-VAULTS,"Influent Pump Station valve vaults (2), precast 4 ft 2 in x 4 ft 2 in x 5 ft 6 in min. inside, Utility Vault Co. 506-LA or equal",Civil,Process & Mechanical,Influent Pump Station,New,C4.1,Not linked (PROPOSED tag is not printed; no boxed anchor matched),CWP 22,Plumbing & Process Pumps,1,None found,None found,None found,None found (no MTO line: no tied callout and no tag found on a cited sheet),22 13 29,22 13 29 (spec); C4.1 (sheet),3,SUB 22 13 29-01 (spec); SUB 22 13 29-02 (spec); SUB C4.1-01 (sheet),tag 0; spec 2; sheet 1,N,2,ITP 22 13 29-01 (spec); ITP 22 13 29-02 (spec),tag 0; spec 2; sheet 0,N,"Add. 4 p.1, Clarification 2 — Add. 4 governs",None found,0,None found,#41 (tag),22-C01 Plumbing & Process Pumps — Influent pump station and flow splitter,2023-06-01,2023-10-25,2023-03-31,Not started (baseline: no progress entered),Inferred,"plans_4Part-7 p.1 (C4.1, keyed note 17; plan shows two vaults; elevation: nominal vault floor 18.0, floor drain, 2-inch vault drain at 2% min, 4-inch vault drain IE 16.15); Add. 4 p.1 (Clarification 2); main spec pp.255-262 (22 13 29 ¶1.01 D)","Hold the 4-inch and 6-inch check and gate valves and pressure gages (see PROPOSED-IPS-DISCHARGE-TO-SPLITTER). Add. 4 Clarification 2 covers precast vault joints (03 maps vaults to Civil & Site; applied here because these vaults are on C4.1). Tag driver: Bid Item 1 (04, Inferred). 22 13 29 ¶1.01 D includes vaults in the pump station work. || [Merge] Exceptions: #41."
L-0168,PROPOSED-IPS-HATCHES,Influent Pump Station access hatches: 36x36-in. single leaf H-20 (Halliday H1R3636) and 30x48-in. single leaf H-20 over pumps (Halliday H1R3048),Structural,Process & Mechanical,Influent Pump Station,New,C4.1,Not linked (PROPOSED tag is not printed; no boxed anchor matched),CWP 03,Concrete (Cast-in-Place & Precast),1,None found,None found,None found,None found (no MTO line: no tied callout and no tag found on a cited sheet),None found (no spec section cited in rev0),C4.1 (sheet),1,SUB C4.1-01 (sheet),tag 0; spec 0; sheet 1,N,0,None found,tag 0; spec 0; sheet 0,N,None found (Add. 4 checked; Addenda 1-3 not staged),None found,0,None found,#38 (tag),03-C04 Concrete (Cast-in-Place & Precast) — Influent pump station and flow splitter,2023-06-01,2023-10-25,2023-03-31,Not started (baseline: no progress entered),Inferred,"plans_4Part-7 p.1 (C4.1, keyed notes 20, 32)","Locate the 30x48 hatch over the pumps; coordinate with the pump supplier (note 32). Cross-lane check: Structural & Building (top slab per 1/S2.4, 2/S2.4). Tag driver: Bid Item 1 (04, Inferred). || [Merge] Exceptions: #38."
L-0169,PROPOSED-PLANT-DRAIN-LINE,"Filtrate, pressate and digester supernatant drain line to Influent Pump Station, 4-inch (IE 13.40 at wet well)",Process-Mechanical,Process & Mechanical,Site,New,G0.5; G0.6; C4.1; C5.1; C5.3; C6.1,Not linked (PROPOSED tag is not printed; no boxed anchor matched),CWP 46,Treatment Equipment,1,None found,None found,None found,None found (no MTO line: no tied callout and no tag found on a cited sheet),46 76 26,46 76 26 (spec); G0.5 (sheet); G0.6 (sheet); C4.1 (sheet); C5.1 (sheet); C5.3 (sheet); C6.1 (sheet),6,SUB 46 76 26-01 (spec); SUB C4.1-01 (sheet); SUB C5.1-01 (sheet); SUB C5.1-02 (sheet); SUB G0.5-01 (sheet); SUB G0.6-01 (sheet),tag 0; spec 1; sheet 5,N,5,ITP 46 76 26-01 (spec); ITP 46 76 26-02 (spec); ITP 46 76 26-03 (spec); ITP C5.1-01 (sheet); ITP G0.6-01 (sheet),tag 0; spec 3; sheet 2,N,None found (Add. 4 checked; Addenda 1-3 not staged),None found,0,None found,#89 (tag),"46-C08 Treatment Equipment — Yard piping, vaults and site utilities",2023-04-01,2023-11-01,2023-03-31,Not started (baseline: no progress entered),Inferred,"plans_1 p.5 (G0.5, 4-inch pressate drain through 4-inch plant drain flow meter to pump station); plans_1 p.6 (G0.6, filtrate and supernatant to plant drain P.S.); plans_4Part-7 p.1 (C4.1, 4-inch filtrate & digester supernatant IE 13.40); plans_5 p.2 (C5.1, 4-inch supernatant drain pipe, 4-inch drain); plans_5 p.4 (C5.3, 4-inch DI supernatant drain IE 15.3); plans_5 p.6 (C6.1, 4-inch pressate to influent pump station; 4-inch pressate drain pipe); main spec pp.510-531 (46 76 26 p.514 filtrate collector and manifold)","Status Inferred (serves proposed digester and press, into proposed pump station). Tag driver: Bid Item 1 (04, Inferred). At the press the filtrate collector (7.5-inch outlet) feeds a 6-inch Sch 80 PVC manifold with a 90-degree elbow (46 76 26); C6.1 shows 4-inch pressate leaving. || [Merge] Exceptions: #89."
L-0170,PROPOSED-STEP-INFLUENT-CONNECTION,"8-inch STEP influent connection to the new Influent Pump Station, IE 19.50",Process-Mechanical,Process & Mechanical,Influent Pump Station,New,G0.5; G0.6; C3.1; C4.1,Not linked (PROPOSED tag is not printed; no boxed anchor matched),CWP 33,Yard Piping & Utilities,1,None found,None found,None found,None found (no MTO line: no tied callout and no tag found on a cited sheet),None found (no spec section cited in rev0),G0.5 (sheet); G0.6 (sheet); C3.1 (sheet); C4.1 (sheet),4,SUB C3.1-01 (sheet); SUB C4.1-01 (sheet); SUB G0.5-01 (sheet); SUB G0.6-01 (sheet),tag 0; spec 0; sheet 4,N,2,ITP C3.1-01 (sheet); ITP G0.6-01 (sheet),tag 0; spec 0; sheet 2,N,None found (Add. 4 checked; Addenda 1-3 not staged),None found,1,OI-0469 (sheet),#87 (tag),33-C03 Yard Piping & Utilities — Influent pump station and flow splitter,2023-06-01,2023-10-25,2023-03-31,Not started (baseline: no progress entered),Inferred,"plans_1 p.5 (G0.5, 8-inch STEP influent); plans_1 p.6 (G0.6, 8-inch influent from STEP collection system IE 19.50); plans_4Part-2 p.1 (C3.1 sequence: connect 8-inch influent to new influent pump station when new facilities are tested); plans_4Part-7 p.1 (C4.1, 8-inch influent IE 19.50)","Cut-over only after the new splitter and Train 1 and 3 piping are complete and tested (C3.1 sequence). Cross-lane: Civil & Site (collection and site piping). Tag driver: Bid Item 1 (04, Inferred). || [Merge] Exceptions: #87."
L-0171,PROPOSED-2W-PUMP-STATION-WET-WELL | PROPOSED-2W-Pump-Station-Wet-Well,"2W plant water pump station wet well, 96-inch precast, floor 10.00, top 21.50, with 30-inch fiberglass access structure, insulated gasketed lid and 38-inch traffic-rated lid and ring | 2W water system pump station wet well",Civil; Structural,Process & Mechanical; Contract & General,2W Pump Station,New,C4.2,Not linked (PROPOSED tag is not printed; no boxed anchor matched),CWP 43,Blowers & 2W Plant Water System,1,None found,None found,None found,None found (no MTO line: no tied callout and no tag found on a cited sheet),43 22 10; 01 45 00; 01 50 00,43 22 10 (spec); 01 45 00 (spec); 01 50 00 (spec); C4.2 (sheet),4,SUB 01 45 00-00 (spec); SUB 01 50 00-00 (spec); SUB 43 22 10-01 (spec); SUB C4.2-01 (sheet),tag 0; spec 3; sheet 1,Y,5,ITP 01 45 00-01 (spec); ITP 01 45 00-02 (spec); ITP 01 45 00-03 (spec); ITP 01 50 00-01 (spec); ITP 43 22 10-00 (spec),tag 0; spec 5; sheet 0,Y,"Add. 4 p.1, Clarification 2 — Add. 4 governs",None found,3,OI-0290 (spec); OI-0323 (spec); OI-0327 (spec),#47 (tag); #251 (tag); #252 (tag),43-C01 Blowers & 2W Plant Water System — 2W air gap water system,2023-05-01,2023-10-18,2023-03-31,Not started (baseline: no progress entered),Inferred,"[Process & Mechanical] plans_4Part-8 p.1 (C4.2, elevation and plan; 38-inch lid per 3/C7.5; 12-inch crushed surfacing base course); Add. 4 p.1 (Clarification 2); main spec pp.472-475 (43 22 10 ¶1.02 A; ¶2.02 A.1-2, A.6) || [Contract & General] main spec 01 45 00 ¶1.09 pp.139–140; 01 50 00 ¶1.04.C p.143","[Process & Mechanical] Add. 4 Clarification 2: exterior of all precast concrete wet well joints sealed with CANUSA-CPS WrapidSeal or approved equal; C4.2 calls no joint sealant. Kor-N-Seal or equal at wall penetrations; 1-inch PVC vent with vent filter tee, field-located out of the vehicle drive path (coordinate with Owner). Status Inferred (new 2W system per G0.7). Tag driver: Bid Item 1 (04, Inferred). 43 22 10: Orenco PB30 pump basin sized per drawings (the 30-inch fiberglass wet well and access structure on C4.2, Inferred), SBEX splice boxes, SBCS conduit seals. || [Contract & General] 01 45 00 says '2W Water System Pump Station', 01 50 00 '2W Water system Pump Station Wet Well' (Verified); 'newly constructed' (Verified). Testing Y: clean water leakage test before startup — filled to the rim, held 2 hours, no visible leakage (01 45 00 ¶1.09; 01 50 00 ¶1.04.C — Verified). Houses the 2W air gap water system (Inferred — same station). Discipline and Bid Item 1 Inferred. Cross-lane: Structural & Building; Process & Mechanical || [Merge] Combined by rule (same PROPOSED name in the same Area/Building) from Process_and_Mechanical_Ledger.csv row 50; Contract_and_General_Ledger.csv row 44. Tag level = weakest of the parts (Inferred, Inferred). Submittal: Y (Process & Mechanical), N (Contract & General) — Y kept (each lane's N covers only its own stack); Testing/Startup: N (Process & Mechanical), Y (Contract & General) — Y kept (each lane's N covers only its own stack). || [Merge] Exceptions: #47, #251, #252."
L-0172,PROPOSED-2W-PUMPS,"2W plant water pumps (2), submersible well pumps, 1 duty and 1 standby, 20-80 gpm",Process-Mechanical,Process & Mechanical,2W Pump Station,New,G0.7; C4.2,Not linked (PROPOSED tag is not printed; no boxed anchor matched),CWP 43,Blowers & 2W Plant Water System,1; 6,None found,None found,None found,None found (no MTO line: no tied callout and no tag found on a cited sheet),43 22 10,43 22 10 (spec); G0.7 (sheet); C4.2 (sheet),2,SUB 43 22 10-01 (spec); SUB C4.2-01 (sheet),tag 0; spec 1; sheet 1,Y,2,ITP 43 22 10-00 (spec); ITP G0.7-01 (sheet),tag 0; spec 1; sheet 1,Y,"Add. 4 p.2, 43 22 10 ¶2.01 A (pumps powered from VFDs in the MCC, controlled by the PLC in the Main Control Panel) — Add. 4 governs",OI-0368 (tag),1,OI-0290 (spec),#45 (tag); #193 (tag),43-C01 Blowers & 2W Plant Water System — 2W air gap water system,2023-05-01,2023-10-18,2023-03-31,Not started (baseline: no progress entered),Inferred,"plans_1 p.7 (G0.7, 1 duty + 1 standby submersible, 20-80 gpm, VFD control); plans_4Part-8 p.1 (C4.2, duty points 20 gpm at 380 ft, 72 gpm at 150 ft, 80 gpm at 85 ft TDH; discharge assemblies; relief valve 110 psi); Add. 4 p.2 (43 22 10 ¶2.01 A); main spec pp.472-475 (43 22 10 ¶2.01 A base text ""Pumps are to include variable frequency drives (VFDs)""; ¶2.02 A; ¶3.01 D; ¶3.02)","Each pump: 2-inch high-pressure discharge assembly (ball valve, true union ball check valve, flex hose, quick disconnect; Orenco or equal) within 12 in. of the lid; pressure relief valve rated 110 psi or more within 24 in. of the wet well top. Add. 4 replaces the base text quoted in Add. 4 (""Pumps are to include variable Frequency Drives (VFDs)""); base 43 22 10 ¶2.Bid Item 1 pumps and 6 VFDs in the MCC per 04 Add. 4 table. Cross-lane: Electrical & Controls (VFDs, MCC). Tag driver: Bid Item 1 (04, Inferred). 43 22 10: ITT Goulds 55GS50 (4-inch well) with Centripro M50434 5 HP 460 V 3-phase or equal; constant pressure control, set point about 50-75 psi; alternate pumps each cycle; Orenco HV discharge assemblies; verify rotation (¶3.01 D); supplier training. Base ¶2.01 A now cited; Add. 4 governs the VFD text. || [Merge] Exceptions: #45, #193."
L-0173,F1–F4 [2W Pump Station],2W pump station float switches F1-F4,Controls,Process & Mechanical,2W Pump Station,New,C4.2,"C4.2 p.32 [264.96,455.40,270.72,459.36] ocr (+14 reads) (tag)",CWP 43,Blowers & 2W Plant Water System,1,None found,None found,None found,"None found (rollup row: range row; members with their own rows: F1 L-0332, F2 L-0333, F3 L-0334, F4 L-0335)",43 22 10,C4.2 (tag); E4.3 (tag); E7.3 (tag); 43 22 10 (spec),2,SUB 43 22 10-01 (spec); SUB C4.2-01 (sheet),tag 0; spec 1; sheet 1,N,1,ITP 43 22 10-00 (spec),tag 0; spec 1; sheet 0,N,None found (Add. 4 checked; Addenda 1-3 not staged),None found,2,OI-0415 (tag); OI-0290 (spec),#46 (tag),43-C01 Blowers & 2W Plant Water System — 2W air gap water system,2023-05-01,2023-10-18,2023-03-31,Not started (baseline: no progress entered),Inferred,"plans_4Part-8 p.1 (C4.2, float table); main spec pp.472-475 (43 22 10 ¶2.02 A.3-4)","F1 high level alarm and redundant valve close 22.00; F2 valve close 20.00; F3 valve open 19.00; F4 low level alarm and pumps off 15.00. The valve these floats operate is not identified (Issue 12). Printed IDs repeat on C4.1; bracketed area added. Cross-lane: Electrical & Controls. Tag driver: Bid Item 1 (04, Inferred). 43 22 10: Orenco MF2 float switch assembly sized per drawings, MFCOLLAR1 float collars. || [Merge] Exceptions: #46."
L-0174,PROPOSED-2W-DIAPHRAGM-TANKS,"2W air diaphragm (bladder) tanks (2), Amtrol Well-X-Trol WX-350D, 119 gal (26 x 62 in.), with manifold, gauge and relief valves",Process-Mechanical,Process & Mechanical,Train #2 Building (per Add. 4 p.6),New,C4.3; C6.4,Not linked (PROPOSED tag is not printed; no boxed anchor matched),CWP 43,Blowers & 2W Plant Water System,1,None found,None found,None found,None found (no MTO line: no tied callout and no tag found on a cited sheet),43 22 10,43 22 10 (spec); C4.3 (sheet); C6.4 (sheet),1,SUB 43 22 10-01 (spec),tag 0; spec 1; sheet 0,Y,2,ITP 43 22 10-00 (spec); ITP C4.3-01 (sheet),tag 0; spec 1; sheet 1,Y,Add. 4 p.3 and p.6 (C6.4 reissue): move 2W bladder tanks and 1-inch supply piping to Train #2 Building; configure as shown; field adjust; coordinate with Owner — Add. 4 governs,None found,2,OI-0416 (tag); OI-0290 (spec),#25 (tag),43-C01 Blowers & 2W Plant Water System — 2W air gap water system,2023-05-01,2023-10-18,2023-03-31,Not started (baseline: no progress entered),Unresolved,"plans_5 p.1 (C4.3, Section A and plan; notes 1-2); plans_6 p.1 (C6.4, two 2W bladder tanks near the Blower Building south doors); addendum-no4-eswd.pdf p.6 (C6.4 reissue, relocation note; 2.0 and 1.0 ft dimensions); main spec pp.472-475 (43 22 10 ¶1.01 B.5; ¶1.02 A; ¶2.03 A)","Model per specifications; configure for Owner operating pressure range. Relief valve 120 psi or more (Clayton Mark or equal); 0-150 psi gage with SS accessories; Simmons S1704 tank tees or equal; 5/8-inch faucet; 1-inch ball valves; 4 floor pipe supports; FF 23.30. Testing Y: C4.3 note 2 requires pressure testing for watertight construction (a drawing note, not a spec section). Add. 4 p.3 relocates ""Bladder Tanks"" with the Blower Building layout (A1.1, A1.2, C6.4) - same tanks Inferred. Tag driver: Bid Item 1 (04, Inferred). Base C6.4 put the two tanks in the Blower Building; Add. 4 moves them to the Train #2 Building. C4.3 ""air diaphragm tanks"" = Add. 4 ""2W Bladder Tanks"" (Inferred: same count and service). 43 22 10 relief valves: 100 psi on the tank tee, 120 psi on pump discharge piping, and a further 120 psi valve, vs one 120-psi valve on C4.3 (Issue 26). Tag driver now Issue 26. || [Merge] Exceptions: #25."
L-0175,PIT-620,"2W system pressure transducer, 0-150 psi (operating 55-75 psi)",Controls,Process & Mechanical,2W Equipment Layout (room not named on C4.3),New,C4.3,"C4.3 p.33 [96.84,408.24,123.30,414.18] ocr (+1 read) (tag)",CWP 43,Blowers & 2W Plant Water System,1,Not totaled: no Verified line,EA,MTO-0054 (tag),Inferred — not totaled; lines: 1 Inferred (MTO Lines: Not Totaled Because),43 22 10,C4.3 (tag); 43 22 10 (spec),1,SUB 43 22 10-01 (spec),tag 0; spec 1; sheet 0,N,2,ITP C4.3-01 (tag); ITP 43 22 10-00 (spec),tag 1; spec 1; sheet 0,N,None found (Add. 4 checked; Addenda 1-3 not staged),None found,1,OI-0290 (spec),#48 (tag),43-C01 Blowers & 2W Plant Water System — 2W air gap water system,2023-05-01,2023-10-18,2023-03-31,Not started (baseline: no progress entered),Inferred,"plans_5 p.1 (C4.3, Section A: pressure transducer per specifications, EQ# PIT-620); main spec pp.472-475 (43 22 10 ¶2.03 A.2, pressure transducer for controlling pump ON/OFF)","Spec section not numbered on C4.3. Cross-lane: Electrical & Controls. Bid Item 1 per 04 default; Item 6 if specified in Division 26 (Inferred). Tag driver: Bid Item 1 (04, Inferred). In 43 22 10 scope, so Bid Item 1 per 04 Item 1 basis (Inferred). || [Merge] Exceptions: #48."
L-0176,PROPOSED-2W-DISCHARGE-LINE,"2W plant water discharge, 2-inch SCH 80 PVC to 3-inch HDPE",Process-Mechanical,Process & Mechanical,2W Pump Station,New,C4.2; C6.3; C6.4,Not linked (PROPOSED tag is not printed; no boxed anchor matched),CWP 43,Blowers & 2W Plant Water System,1,None found,None found,None found,None found (no MTO line: no tied callout and no tag found on a cited sheet),43 22 10,43 22 10 (spec); C4.2 (sheet); C6.3 (sheet); C6.4 (sheet),2,SUB 43 22 10-01 (spec); SUB C4.2-01 (sheet),tag 0; spec 1; sheet 1,N,1,ITP 43 22 10-00 (spec),tag 0; spec 1; sheet 0,N,None found (Add. 4 checked; Addenda 1-3 not staged),None found,2,OI-0437 (tag); OI-0290 (spec),#50 (tag),43-C01 Blowers & 2W Plant Water System — 2W air gap water system,2023-05-01,2023-10-18,2023-03-31,Not started (baseline: no progress entered),Inferred,"plans_4Part-8 p.1 (C4.2, elevation: 2-inch SCH 80 PVC, 2x3-inch reducer, 3-inch HDPE); plans_5 p.8 (C6.3, 3-inch 2W water INV 21.5); plans_6 p.1 (C6.4, 3-inch 2W pipe); main spec pp.472-475 (43 22 10 ¶2.04; ¶2.05)","Destination not shown on C4.2 (C4.3 tanks, Inferred). Status Inferred. Tag driver: Bid Item 1 (04, Inferred). 3-inch 2W pipe on C6.3-C6.4 taken as the continuation of the 3-inch HDPE discharge (Inferred). Exposed plant water pipe: 1.25-inch polyisocyanurate insulation with aluminum jacket (¶2.04); label and paint per ¶2.05, stainless excepted (Issue 27). || [Merge] Exceptions: #50."
L-0177,PROPOSED-2W-FILL-LINE,"2W water fill from air gap to 2W wet well, 4-inch SCH 80 PVC at 2% slope, inlet IE 19.50",Process-Mechanical,Process & Mechanical,2W Pump Station,New,C4.2,Not linked (PROPOSED tag is not printed; no boxed anchor matched),CWP 43,Blowers & 2W Plant Water System,1,None found,None found,None found,None found (no MTO line: no tied callout and no tag found on a cited sheet),43 22 10,43 22 10 (spec); C4.2 (sheet),2,SUB 43 22 10-01 (spec); SUB C4.2-01 (sheet),tag 0; spec 1; sheet 1,N,1,ITP 43 22 10-00 (spec),tag 0; spec 1; sheet 0,N,None found (Add. 4 checked; Addenda 1-3 not staged),None found,4,OI-0415 (tag); OI-0417 (tag); OI-0437 (tag); OI-0290 (spec),#169 (tag),43-C01 Blowers & 2W Plant Water System — 2W air gap water system,2023-05-01,2023-10-18,2023-03-31,Not started (baseline: no progress entered),Unresolved,"plans_4Part-8 p.1 (C4.2, 2W water from air gap see C4.3; 4-inch SCH 80 PVC slope 2%; 4-inch inlet IE 19.50); main spec pp.472-475 (43 22 10 ¶2.04; ¶2.05)","Air gap not on C4.3; Add. 4 p.3 puts the 2W (Air Gap) Water Hot Box on C1.3 (Issue 12). Plan label reads 6-inch inlet pipe (Issue 39). Cross-lane: Civil & Site. Tag driver: Issue 12. Exposed plant water pipe: 1.25-inch polyisocyanurate insulation with aluminum jacket (¶2.04); label and paint per ¶2.05, stainless excepted (Issue 27). || [Merge] Exceptions: #169."
L-0178,PROPOSED-UV-DIGESTER-STRUCTURE,"UV Disinfection Chamber & Digester structure, concrete, about 45 x 13 ft: UV chamber, effluent sample chamber, aerobic digester",Structural,Process & Mechanical,UV Disinfection Chamber & Digester,New,G0.5; G0.6; C5.1; C5.2; C5.3,Not linked (PROPOSED tag is not printed; no boxed anchor matched),CWP 03,Concrete (Cast-in-Place & Precast),1,None found,None found,None found,None found (no MTO line: no tied callout and no tag found on a cited sheet),None found (no spec section cited in rev0),G0.5 (sheet); G0.6 (sheet); C5.1 (sheet); C5.2 (sheet); C5.3 (sheet),5,SUB C5.1-01 (sheet); SUB C5.1-02 (sheet); SUB C5.2-01 (sheet); SUB G0.5-01 (sheet); SUB G0.6-01 (sheet),tag 0; spec 0; sheet 5,N,2,ITP C5.1-01 (sheet); ITP G0.6-01 (sheet),tag 0; spec 0; sheet 2,N,None found (Add. 4 checked; Addenda 1-3 not staged),None found,0,None found,#56 (tag),03-C07 Concrete (Cast-in-Place & Precast) — UV chamber and digester,2023-04-01,2023-11-01,2023-03-31,Not started (baseline: no progress entered),Unresolved,"plans_5 p.2 (C5.1, plan dimensions 45.00 and 13.00 overall, 44.00 and 12.00 inside; TOC 18.83 UV, 15.3-14.3 digester; digester 6-inch lip); plans_1 p.6 (G0.6, PROPOSED UV DISINFECTION, PROPOSED AEROBIC DIGESTER); plans_1 p.7 (G0.7 digester 15,000 gal); plans_5 p.3 (C5.2, section A); plans_5 p.4 (C5.3, sections B-D)","HDG I-beam over digester ""see structural"". Cross-lane: Structural & Building (S2.2 UV Disinfection Chamber & Digester Plan & Sections, per 01 title). Tag driver: Bid Item 1 (04, Inferred). Top of wall 23.80 (UV) and 26.80 (digester); UV bottom 17.74; digester bottom EL 13.3/14.3; 1-ft thick lip, 1/2 ft out, all around for anti-buoyancy; concrete supports for UV equipment, four total (C5.3). 12-inch CSBC base per WSDOT 9-03.12(1)A - Unresolved: external reference, not staged (C5.2, C5.3). Tag driver now WSDOT reference. || [Merge] Exceptions: #56."
L-0179,PROPOSED-UV-SYSTEM,"UV disinfection system, Trojan UV3000 PTP or equal: 2 open-channel systems (UV Channels #1 and #2), 6 modules per bank, 4 lamps per module, 48 lamps, stainless channels with level control weirs",Process-Mechanical,Process & Mechanical,UV Disinfection Chamber & Digester,New,G0.5; G0.6; G0.7; C5.1; C5.2; C5.3; C5.4,Not linked (PROPOSED tag is not printed; no boxed anchor matched),CWP 46,Treatment Equipment,1; Equipment Alternate D,None found,None found,None found,None found (no MTO line: no tied callout and no tag found on a cited sheet),46 66 00,01 91 00 (tag); G0.7 (tag); QA plan (tag); 46 66 00 (spec); G0.5 (sheet); G0.6 (sheet); C5.1 (sheet); C5.2 (sheet); C5.3 (sheet); C5.4 (sheet),10,SUB 46 66 00-01 (spec); SUB 46 66 00-02 (spec); SUB 46 66 00-03 (spec); SUB 46 66 00-04 (spec); SUB 46 66 00-05 (spec); SUB C5.1-01 (sheet); SUB C5.1-02 (sheet); SUB C5.2-01 (sheet); SUB G0.5-01 (sheet); SUB G0.6-01 (sheet),tag 0; spec 5; sheet 5,Y,6,ITP 46 66 00-01 (spec); ITP 46 66 00-02 (spec); ITP C5.1-01 (sheet); ITP C5.4-01 (sheet); ITP G0.6-01 (sheet); ITP G0.7-01 (sheet),tag 0; spec 2; sheet 4,Y,None found (Add. 4 checked; Addenda 1-3 not staged),None found,2,OI-0418 (tag); OI-0422 (tag),#54 (tag),46-C07 Treatment Equipment — UV chamber and digester,2023-04-01,2023-11-01,2023-03-31,Not started (baseline: no progress entered),Unresolved,"plans_1 p.7 (G0.7 UV design information); plans_5 p.2 (C5.1, UV Channels #1, #2 with module banks); plans_1 p.6 (G0.6 UV HWL 21.49 at 0.50 MGD per channel); plans_5 p.5 (C5.4, detail 1, notes, interconnection table); plans_5 p.3 (C5.2); plans_5 p.4 (C5.3); main spec pp.502-508 (46 66 00 ¶1.01 A; design criteria; items 1-6 p.503; ¶1.04; ¶1.05; Part 2 A-C; ¶3.02)","Equipment Alternate D per 04 bid form description ""UV Disinfection Equipment"" (Trojan base). UV dose units (Issue 32). Tag driver: Bid Item 1 (04, Inferred). C5.4: Trojan unit, 4-64 UV PTP modules, 6 required per bank vs G0.7 8 per channel (Issue 13); 3600K level control weir; HWL 21.49 to 21.09; channel width and depth within +/- 1/4 in.; do not slope channel floor; do not encase the steel channel in concrete; contractor supplies anchor bolts (3/8 in., 4 per transition box); unit flanges drilled for 12-inch pipe. Tag driver now Issue 13. 46 66 00: dose 30 mJ/cm2 at 50% UVT by independent bioassay; each system alone handles max day 0.46 MGD; outdoor, no shelter; lamps 12,000-hour non-prorated warranty; equipment warranty 12 months; spares per bank; 2 days start-up, 1 day training. Module and lamp counts agree with C5.4, not G0.7 (Issue 13); dose units (Issue 32). Equipment Alternate D base Trojan confirmed. || [Merge] Exceptions: #54."
L-0180,PROPOSED-UV-CONTROL-PANELS,"UV control panels on chamber walls (2 on C5.1): splitter panel, power distribution receptacles and wall-mounted system monitor per UV unit (C5.4)",Controls,Process & Mechanical,UV Disinfection Chamber & Digester,New,C5.1; C5.2; C5.3; C5.4,Not linked (PROPOSED tag is not printed; no boxed anchor matched),CWP 46,Treatment Equipment,1; Equipment Alternate D,None found,None found,None found,None found (no MTO line: no tied callout and no tag found on a cited sheet),46 66 00,46 66 00 (spec); C5.1 (sheet); C5.2 (sheet); C5.3 (sheet); C5.4 (sheet),8,SUB 46 66 00-01 (spec); SUB 46 66 00-02 (spec); SUB 46 66 00-03 (spec); SUB 46 66 00-04 (spec); SUB 46 66 00-05 (spec); SUB C5.1-01 (sheet); SUB C5.1-02 (sheet); SUB C5.2-01 (sheet),tag 0; spec 5; sheet 3,Y,4,ITP 46 66 00-01 (spec); ITP 46 66 00-02 (spec); ITP C5.1-01 (sheet); ITP C5.4-01 (sheet),tag 0; spec 2; sheet 2,Y,None found (Add. 4 checked; Addenda 1-3 not staged),None found,1,OI-0423 (tag),#55 (tag),46-C07 Treatment Equipment — UV chamber and digester,2023-04-01,2023-11-01,2023-03-31,Not started (baseline: no progress entered),Unresolved,"plans_5 p.2 (C5.1, CONTROL PANELS on the chamber walls); plans_5 p.5 (C5.4, interconnection table); main spec pp.502-508 (46 66 00 pp.506-507, monitoring system and power distribution receptacles)","Cross-lane: Electrical & Controls (E5.1 per 01 title). Tag driver: Bid Item 1 (04, Inferred). Splitter panel within 10 ft of module power end, 120 V 1-phase 19.1 A from distribution panel DP (not shown); PDRs 6.3 A each from splitter panel; system monitor within 15 ft of channel, 120 V 5 A from DP. 46 66 00: monitoring panel is fiberglass Type 4X, wall mounted less than 12 ft from the module LED end (C5.4 says within 15 ft of channel - Issue 33); GFCI PDRs by the UV manufacturer; contractor supplies a 120 V circuit of about 19.2 A for the PDRs and a separate 120 V 5 A monitoring supply. Tag driver now Issue 33. || [Merge] Exceptions: #55."
L-0181,PROPOSED-EFFLUENT-HEADER-TO-UV,"Secondary effluent header through 8-inch effluent flow meter to UV Channels #1 and #2, 8-inch, with 8-inch gate valves (hand wheel) at channel inlets",Process-Mechanical,Process & Mechanical,UV Disinfection Chamber & Digester,New,G0.5; C5.1; C5.2; C5.3,Not linked (PROPOSED tag is not printed; no boxed anchor matched),CWP 33,Yard Piping & Utilities,1,None found,None found,None found,None found (no MTO line: no tied callout and no tag found on a cited sheet),None found (no spec section cited in rev0),G0.5 (sheet); C5.1 (sheet); C5.2 (sheet); C5.3 (sheet),4,SUB C5.1-01 (sheet); SUB C5.1-02 (sheet); SUB C5.2-01 (sheet); SUB G0.5-01 (sheet),tag 0; spec 0; sheet 4,N,1,ITP C5.1-01 (sheet),tag 0; spec 0; sheet 1,N,None found (Add. 4 checked; Addenda 1-3 not staged),None found,1,OI-0212 (tag),#105 (tag),33-C05 Yard Piping & Utilities — UV chamber and digester,2023-04-01,2023-11-01,2023-03-31,Not started (baseline: no progress entered),Inferred,"plans_1 p.5 (G0.5, SE1-SE3 to 8-inch effluent flow meter to UV channels); plans_5 p.2 (C5.1, 8-inch inlet; keyed note 5); plans_5 p.3 (C5.2, 8-inch influent pipe IE 19.61); plans_5 p.4 (C5.3, 8-inch DI secondary effluent)","Status Inferred (serves proposed UV). Tag driver: Bid Item 1 (04, Inferred). Handwheels for exposed valves (C5.2, C5.3). || [Merge] Exceptions: #105."
L-0182,PROPOSED-UV-CHAMBER-DRAIN,"UV chamber drain, 4-inch, with 4-inch gate valves",Process-Mechanical,Process & Mechanical,UV Disinfection Chamber & Digester,New,G0.5; C5.1; C5.2; C5.3,Not linked (PROPOSED tag is not printed; no boxed anchor matched),CWP 33,Yard Piping & Utilities,1,None found,None found,None found,None found (no MTO line: no tied callout and no tag found on a cited sheet),None found (no spec section cited in rev0),G0.5 (sheet); C5.1 (sheet); C5.2 (sheet); C5.3 (sheet),4,SUB C5.1-01 (sheet); SUB C5.1-02 (sheet); SUB C5.2-01 (sheet); SUB G0.5-01 (sheet),tag 0; spec 0; sheet 4,N,1,ITP C5.1-01 (sheet),tag 0; spec 0; sheet 1,N,None found (Add. 4 checked; Addenda 1-3 not staged),None found,0,None found,#88 (tag),33-C05 Yard Piping & Utilities — UV chamber and digester,2023-04-01,2023-11-01,2023-03-31,Not started (baseline: no progress entered),Inferred,"plans_1 p.5 (G0.5, 4-inch UV chamber drain); plans_5 p.2 (C5.1, 4-inch UV drain; keyed note 3; 1-inch channel drains); plans_5 p.3 (C5.2); plans_5 p.4 (C5.3, section D)","Discharge point not stated on sheets read. Status Inferred. Tag driver: Bid Item 1 (04, Inferred). Floor drains rim 18.74; 4-inch DI floor drain IE 16.00; 1-inch SCH 80 PVC drains for all four drain ports; 2x1-inch reducer and 1-inch PVC ball valve. || [Merge] Exceptions: #88."
L-0183,PROPOSED-UV-DIGESTER-GRATING-GUARDRAIL,"UV/digester guardrail with removable guard chains, removable grating over digester, aluminum access ladders (nominal 2 ft wide)",Structural,Process & Mechanical,UV Disinfection Chamber & Digester,New,C5.1; C5.2; C5.3,Not linked (PROPOSED tag is not printed; no boxed anchor matched),CWP 05,"Metals (Grating, Railings, Ladders, Stairs)",1,None found,None found,None found,None found (no MTO line: no tied callout and no tag found on a cited sheet),None found (no spec section cited in rev0),C5.1 (sheet); C5.2 (sheet); C5.3 (sheet),3,SUB C5.1-01 (sheet); SUB C5.1-02 (sheet); SUB C5.2-01 (sheet),tag 0; spec 0; sheet 3,N,1,ITP C5.1-01 (sheet),tag 0; spec 0; sheet 1,N,None found (Add. 4 checked; Addenda 1-3 not staged),None found,0,None found,#57 (tag),"05-C02 Metals (Grating, Railings, Ladders, Stairs) — UV chamber and digester",2023-04-01,2023-11-01,2023-03-31,Not started (baseline: no progress entered),Inferred,"plans_5 p.2 (C5.1, grating & guardrail plan; keyed notes 2, 4); plans_5 p.3 (C5.2, top of guardrail 42 in. above finish grade, field adjust; prefab aluminum ladder to access platform)","Guard chains at 4 locations plus a 2 ft 8 in opening at the effluent sample chamber. Cross-lane: Structural & Building (metals). Tag driver: Bid Item 1 (04, Inferred). || [Merge] Exceptions: #57."
L-0184,PROPOSED-DIGESTER-TELESCOPING-VALVE,"Aerobic digester telescoping valve, 4-inch rising stem, 48-inch min travel, Waterman TS-2 or equal",Process-Mechanical,Process & Mechanical,UV Disinfection Chamber & Digester,New,G0.6; G0.7; C5.1; C5.3,Not linked (PROPOSED tag is not printed; no boxed anchor matched),CWP 40,Process Interconnections,1,None found,None found,None found,None found (no MTO line: no tied callout and no tag found on a cited sheet),40 05 71,40 05 71 (spec); G0.6 (sheet); G0.7 (sheet); C5.1 (sheet); C5.3 (sheet),4,SUB 40 05 71-01 (spec); SUB C5.1-01 (sheet); SUB C5.1-02 (sheet); SUB G0.6-01 (sheet),tag 0; spec 1; sheet 3,Y,3,ITP C5.1-01 (sheet); ITP G0.6-01 (sheet); ITP G0.7-01 (sheet),tag 0; spec 0; sheet 3,N,None found (Add. 4 checked; Addenda 1-3 not staged),None found,0,None found,None found,40-C01 Process Interconnections — UV chamber and digester,2023-04-01,2023-11-01,2023-03-31,Not started (baseline: no progress entered),Inferred,"plans_1 p.6 (G0.6, supernatant telescoping valve); plans_1 p.7 (G0.7, decant control: manual T-valve adjustments); plans_5 p.2 (C5.1, 4-inch T-valve, 4-inch supernatant drain pipe); plans_5 p.4 (C5.3, 4-inch telescoping valve see specifications; T-valve operation range 21.3 to 25.3; supports per 6/C7.2 and 7/C7.2); main spec pp.451-452 (40 05 71 ¶1.01, ¶1.02 A, ¶2.01, ¶2.02)","T-valve = telescoping valve (Inferred by G0.6/G0.7 wording).Tag driver: Bid Item 1 (04, Inferred). C5.3 labels the valve as a 4-inch telescoping valve, so the T-valve link is now Verified-Visual. High water surface 25.3. 40 05 71: stainless tube and bail, neoprene slip seal, 12-inch handwheel with position indicator, 316 SS wall pedestal with six 5/8 x 5 in. SS wedge anchors; no testing specified."
L-0185,PROPOSED-DIGESTER-DIFFUSERS,"Aerobic digester coarse bubble diffusers, 24-in. 316 SS, open bottom with rubber inlet check valve (G0.7: 6 at 20 cfm)",Process-Mechanical,Process & Mechanical,UV Disinfection Chamber & Digester,New,G0.7; C5.1; C5.2; C5.3,Not linked (PROPOSED tag is not printed; no boxed anchor matched),CWP 46,Treatment Equipment,1,None found,None found,None found,None found (no MTO line: no tied callout and no tag found on a cited sheet),46 51 21,46 51 21 (spec); G0.7 (sheet); C5.1 (sheet); C5.2 (sheet); C5.3 (sheet),4,SUB 46 51 21-01 (spec); SUB C5.1-01 (sheet); SUB C5.1-02 (sheet); SUB C5.2-01 (sheet),tag 0; spec 1; sheet 3,Y,2,ITP C5.1-01 (sheet); ITP G0.7-01 (sheet),tag 0; spec 0; sheet 2,N,None found (Add. 4 checked; Addenda 1-3 not staged),None found,0,None found,None found,46-C07 Treatment Equipment — UV chamber and digester,2023-04-01,2023-11-01,2023-03-31,Not started (baseline: no progress entered),Inferred,"plans_1 p.7 (G0.7, coarse bubble, 20 cfm per diffuser x 6 = 120 cfm; mixing air 60 cfm); plans_5 p.2 (C5.1, 3-inch and 4-inch air into digester); plans_5 p.3 (C5.2, detail 1 coarse bubble mixer; 2-inch SS drop pipes); plans_5 p.4 (C5.3, section C); main spec p.491 (46 51 21 ¶1.01; ¶1.02 A; ¶2.01 A-B)","Tag driver: Bid Item 1 (04, Inferred). Detail 1: 2-inch SS drop pipe and tee, 2x1 reducer at tee, 1x3/4 SS reducer, diffuser centerline 2.0 ft above floor. 46 51 21: Aquarius Technologies, SSI Aeration or equal; removable from above the water line without entering the basin; no quantity in the section; no testing specified."
L-0186,PROPOSED-DIGESTER-AIR-LINES,"Aerobic digester air supply lines, 3-inch and 4-inch",Process-Mechanical,Process & Mechanical,UV Disinfection Chamber & Digester,New,C5.1; C5.2; C5.3; C6.3,Not linked (PROPOSED tag is not printed; no boxed anchor matched),CWP 33,Yard Piping & Utilities,1,None found,None found,None found,None found (no MTO line: no tied callout and no tag found on a cited sheet),None found (no spec section cited in rev0),C5.1 (tag); C5.2 (sheet); C5.3 (sheet); C6.3 (sheet),3,SUB C5.1-01 (sheet); SUB C5.1-02 (sheet); SUB C5.2-01 (sheet),tag 0; spec 0; sheet 3,N,1,ITP C5.1-01 (sheet),tag 0; spec 0; sheet 1,N,None found (Add. 4 checked; Addenda 1-3 not staged),None found,0,None found,#94 (tag),33-C05 Yard Piping & Utilities — UV chamber and digester,2023-04-01,2023-11-01,2023-03-31,Not started (baseline: no progress entered),Inferred,"plans_5 p.2 (C5.1, 4-inch AIR and 3-inch AIR at digester); plans_5 p.3 (C5.2, 3-inch SS air pipe, centerlines 27.3 and 25.8; 4 wall-mount supports per 7/C7.2); plans_5 p.4 (C5.3, 4-inch air pipe IE 20.0); plans_5 p.8 (C6.3, keyed notes 2-4; 4-inch air pipe INV 20.3)","Source (digester blower, C6.Status Inferred. Tag driver: Bid Item 1 (04, Inferred). Air lines are stainless (C5.2). Source: digester blower discharge, 4-inch 304 SS with 4-inch butterfly valve on supports per 5/C7.2 (C6.3). || [Merge] Exceptions: #94."
L-0187,PROPOSED-DIGESTED-SLUDGE-LINE,"Digested sludge line, 2-inch SCH 80 PVC, digester to digested sludge pumps",Process-Mechanical,Process & Mechanical,UV Disinfection Chamber & Digester,New,G0.5; C5.1; C5.3; C6.2,Not linked (PROPOSED tag is not printed; no boxed anchor matched),CWP 33,Yard Piping & Utilities,1,None found,None found,None found,None found (no MTO line: no tied callout and no tag found on a cited sheet),None found (no spec section cited in rev0),G0.5 (sheet); C5.1 (sheet); C5.3 (sheet); C6.2 (sheet),3,SUB C5.1-01 (sheet); SUB C5.1-02 (sheet); SUB G0.5-01 (sheet),tag 0; spec 0; sheet 3,N,1,ITP C5.1-01 (sheet),tag 0; spec 0; sheet 1,N,None found (Add. 4 checked; Addenda 1-3 not staged),None found,1,OI-0420 (tag),#90 (tag),33-C05 Yard Piping & Utilities — UV chamber and digester,2023-04-01,2023-11-01,2023-03-31,Not started (baseline: no progress entered),Unresolved,"plans_1 p.5 (G0.5, digester to digested sludge pump); plans_5 p.2 (C5.1, 2-inch SCH 80 PVC digested sludge); plans_5 p.4 (C5.3, 2-inch SCH 80 PVC digested sludge IE 20.50; 2-inch intake IE 14.80 in 2-ft square sump); plans_5 p.7 (C6.2, 4-inch digested sludge from digester, keyed note 9)","Status Inferred. Tag driver: Bid Item 1 (04, Inferred). This is the suction side; the 3-inch feed to the press is PROPOSED-DIGESTED-SLUDGE-FEED-TO-PRESS. Size conflict 2-inch vs 4-inch (Issue 17). Tag driver now Issue 17. || [Merge] Exceptions: #90."
L-0188,PROPOSED-WAS-PUMP-DISCHARGE-TO-DIGESTER,"WAS pump discharge to aerobic digester, 3-inch",Process-Mechanical,Process & Mechanical,UV Disinfection Chamber & Digester,New,G0.5; C5.1; C5.3; C6.2,Not linked (PROPOSED tag is not printed; no boxed anchor matched),CWP 33,Yard Piping & Utilities,1,None found,None found,None found,None found (no MTO line: no tied callout and no tag found on a cited sheet),None found (no spec section cited in rev0),G0.5 (sheet); C5.1 (sheet); C5.3 (sheet); C6.2 (sheet),3,SUB C5.1-01 (sheet); SUB C5.1-02 (sheet); SUB G0.5-01 (sheet),tag 0; spec 0; sheet 3,N,1,ITP C5.1-01 (sheet),tag 0; spec 0; sheet 1,N,None found (Add. 4 checked; Addenda 1-3 not staged),None found,1,OI-0420 (tag),#91 (tag),33-C05 Yard Piping & Utilities — UV chamber and digester,2023-04-01,2023-11-01,2023-03-31,Not started (baseline: no progress entered),Unresolved,"plans_1 p.5 (G0.5, WAS pump to aerobic digester); plans_5 p.2 (C5.1, 3-inch WAS); plans_5 p.4 (C5.3, 3-inch WAS pipe IE 19.50); plans_5 p.7 (C6.2, 2-inch WAS to digester, keyed note 4)","Status Inferred. Tag driver: Bid Item 1 (04, Inferred). Size conflict 2-inch (C6.2) vs 3-inch (C5.1, C5.3) (Issue 17). Tag driver now Issue 17. || [Merge] Exceptions: #91."
L-0189,PROPOSED-FINAL-EFFLUENT-LINE,"Final effluent, UV chamber to existing SSMH *1288 and 12-inch outfall, 10-inch",Process-Mechanical,Process & Mechanical,Site,New,G0.5; G0.6; C5.2; C5.3,Not linked (PROPOSED tag is not printed; no boxed anchor matched),CWP 33,Yard Piping & Utilities,1,None found,None found,None found,None found (no MTO line: no tied callout and no tag found on a cited sheet),None found (no spec section cited in rev0),G0.5 (sheet); G0.6 (sheet); C5.2 (sheet); C5.3 (sheet),3,SUB C5.2-01 (sheet); SUB G0.5-01 (sheet); SUB G0.6-01 (sheet),tag 0; spec 0; sheet 3,N,1,ITP G0.6-01 (sheet),tag 0; spec 0; sheet 1,N,None found (Add. 4 checked; Addenda 1-3 not staged),None found,1,OI-0419 (tag),#92 (tag),"33-C06 Yard Piping & Utilities — Yard piping, vaults and site utilities",2023-04-01,2023-11-01,2023-03-31,Not started (baseline: no progress entered),Unresolved,"plans_1 p.5 (G0.5, 10-inch final effluent to SSMH *1288, to 12-inch outfall); plans_1 p.6 (G0.6, 10-inch and 8-inch to 12-inch outfall; SSMH rim 22.89); plans_5 p.3 (C5.2, 10-inch effluent pipe IE 18.75); plans_5 p.4 (C5.3, 10-inch effluent pipe IE 18.75; 12-inch D.I. final effluent)","New segment from the proposed UV chamber to the existing manhole (Inferred). Cross-lane: Civil & Site (site piping). Tag driver: Bid Item 1 (04, Inferred). Size conflict 10-inch vs 12-inch DI (Issue 15). Tag driver now Issue 15. || [Merge] Exceptions: #92."
L-0190,S1–S2 [Aerobic Digester],"Aerobic digester transducer level sensor(s): S1 high alarm 25.55, S2 low alarm 15.30",Controls,Process & Mechanical,UV Disinfection Chamber & Digester,New,C5.3,"C5.3 p.36 [337.86,45.90,348.48,51.66] ocr (+4 reads) (tag)",CWP 26,"Electrical, Instrumentation & Controls",1,Not totaled: no Verified line,EA,MTO-0055 (tag); MTO-0056 (tag),Inferred — not totaled; lines: 2 Inferred (MTO Lines: Not Totaled Because),None found (no spec section cited in rev0),C5.3 (sheet),0,None found,tag 0; spec 0; sheet 0,N,0,None found,tag 0; spec 0; sheet 0,N,None found (Add. 4 checked; Addenda 1-3 not staged),None found,0,None found,#58 (tag),"26-C17 Electrical, Instrumentation & Controls — UV chamber and digester",2023-04-01,2023-11-01,2023-03-14,Not started (baseline: no progress entered),Inferred,"plans_5 p.4 (C5.3, digester alarm set points table)","Whether S1 and S2 are one device or two is not stated. Spec not numbered on C5.3. Cross-lane: Electrical & Controls. Bid Item 1 per 04 default; Item 6 if specified in Division 26 (Inferred). Tag driver: Bid Item 1 (04, Inferred). || [Merge] Exceptions: #58."
L-0191,PROPOSED-ROTARY-FAN-PRESS,"Rotary fan press (rotary press model), steel, 1 unit",Process-Mechanical,Process & Mechanical,Rotary Fan Press System,New,G0.5; G0.6; G0.7; C6.1,Not linked (PROPOSED tag is not printed; no boxed anchor matched),CWP 46,Treatment Equipment,1; Equipment Alternate C,None found,None found,None found,None found (no MTO line: no tied callout and no tag found on a cited sheet),46 76 26,46 76 26 (tag); C6.1 (tag); G0.5 (tag); G0.6 (tag); G0.7 (tag),3,SUB 46 76 26-01 (spec); SUB G0.5-01 (sheet); SUB G0.6-01 (sheet),tag 0; spec 1; sheet 2,Y,5,ITP 46 76 26-01 (spec); ITP 46 76 26-02 (spec); ITP 46 76 26-03 (spec); ITP G0.6-01 (sheet); ITP G0.7-01 (sheet),tag 0; spec 3; sheet 2,Y,None found (Add. 4 checked; Addenda 1-3 not staged),None found,1,OI-0429 (tag),#63 (tag),46-C01 Treatment Equipment — Sludge dewatering (rotary fan press),2023-11-01,2024-02-09,2023-03-31,Not started (baseline: no progress entered),Inferred,"plans_5 p.6 (C6.1, material list item 1, Section 46 76 26); plans_1 p.6 (G0.6, PROPOSED ROTARY FAN PRESS DEWATERING EQUIPMENT); plans_1 p.7 (G0.7 rotary fan press design information); main spec pp.510-531 (46 76 26 ¶1.0 A-E; ¶1.1; ¶3.5; ¶5.1; ¶6.1)","Design: 1 unit; 12 gpm at 2% or 20 gpm at 0.5% solids; 12-16% cake; up to 1,000 wet / 120 dry lb/hr (G0.7). Equipment Alternate C per 04 bid form description (Fournier, Prime Solutions base).Tag driver: Bid Item 1 (04, Inferred). 46 76 26: single-source plug-and-play skid, shop tested; one 36-inch channel; 1.5 HP 480 V drive; feed at 7 psi max; 120 dry lb/hr, 0.5-2.5% solids, 5-25 gpm; noise 75 dBA max at 3 ft; 1-year warranty. Testing Y is shop testing only - no field start-up or training specified (Issue 37). || [Merge] Exceptions: #63."
L-0192,PROPOSED-RFP-FLOCCULATOR,"Rotary fan press flocculator, steel, 1",Process-Mechanical,Process & Mechanical,Rotary Fan Press System,New,C6.1,Not linked (PROPOSED tag is not printed; no boxed anchor matched),CWP 46,Treatment Equipment,1; Equipment Alternate C,None found,None found,None found,None found (no MTO line: no tied callout and no tag found on a cited sheet),46 76 26,46 76 26 (spec); C6.1 (sheet),1,SUB 46 76 26-01 (spec),tag 0; spec 1; sheet 0,Y,3,ITP 46 76 26-01 (spec); ITP 46 76 26-02 (spec); ITP 46 76 26-03 (spec),tag 0; spec 3; sheet 0,Y,None found (Add. 4 checked; Addenda 1-3 not staged),None found,1,OI-0430 (tag),None found,46-C01 Treatment Equipment — Sludge dewatering (rotary fan press),2023-11-01,2024-02-09,2023-03-31,Not started (baseline: no progress entered),Inferred,"plans_5 p.6 (C6.1, material list item 2, Section 46 76 26); main spec pp.510-531 (46 76 26 ¶2.1; ¶2.2.1)","Tag driver: Bid Item 1 (04, Inferred). Model 05-300-900, 17 gal, 100 psi, 140 F; Nord SK0282 1 HP 480 V variable-speed agitator; 3-inch Victaulic connections; wash water pressure gauge 0-160 psi and pressure switch set at 60 psi; breather tied to a potable water line (Issue 38)."
L-0193,PROPOSED-RFP-SLUDGE-MANIFOLD,"Rotary fan press sludge manifold and piping, 316 SS, 1",Process-Mechanical,Process & Mechanical,Rotary Fan Press System,New,C6.1,Not linked (PROPOSED tag is not printed; no boxed anchor matched),CWP 46,Treatment Equipment,1; Equipment Alternate C,None found,None found,None found,None found (no MTO line: no tied callout and no tag found on a cited sheet),46 76 26,46 76 26 (spec); C6.1 (sheet),1,SUB 46 76 26-01 (spec),tag 0; spec 1; sheet 0,Y,3,ITP 46 76 26-01 (spec); ITP 46 76 26-02 (spec); ITP 46 76 26-03 (spec),tag 0; spec 3; sheet 0,Y,None found (Add. 4 checked; Addenda 1-3 not staged),None found,0,None found,None found,46-C01 Treatment Equipment — Sludge dewatering (rotary fan press),2023-11-01,2024-02-09,2023-03-31,Not started (baseline: no progress entered),Inferred,"plans_5 p.6 (C6.1, material list item 3, Section 46 76 26); main spec pp.510-531 (46 76 26 ¶2.2.1-2.2.5)","Tag driver: Bid Item 1 (04, Inferred). Sch 10 316 SS with Victaulic joints, shop hydrostatic test at 100 psi; two 3-inch pneumatic ball valves (feed, recirculation) with Festo actuators and 24 VDC solenoids; lever channel isolating valve; 1-inch pneumatic wash valve; 1-inch SS polymer check valve (IFC SC600TSSSSM); flocculated sludge sampler."
L-0194,PROPOSED-RFP-CAKE-CHUTE,"Rotary fan press cake chute, LLDPE, 1",Process-Mechanical,Process & Mechanical,Rotary Fan Press System,New,C6.1,Not linked (PROPOSED tag is not printed; no boxed anchor matched),CWP 46,Treatment Equipment,1; Equipment Alternate C,None found,None found,None found,None found (no MTO line: no tied callout and no tag found on a cited sheet),46 76 26,46 76 26 (spec); C6.1 (sheet),1,SUB 46 76 26-01 (spec),tag 0; spec 1; sheet 0,Y,3,ITP 46 76 26-01 (spec); ITP 46 76 26-02 (spec); ITP 46 76 26-03 (spec),tag 0; spec 3; sheet 0,N,None found (Add. 4 checked; Addenda 1-3 not staged),None found,0,None found,None found,46-C01 Treatment Equipment — Sludge dewatering (rotary fan press),2023-11-01,2024-02-09,2023-03-31,Not started (baseline: no progress entered),Inferred,"plans_5 p.6 (C6.1, material list item 4, Section 46 76 26); main spec pp.510-531 (46 76 26 ¶1.4; ¶4.2.4)","Tag driver: Bid Item 1 (04, Inferred). LLDPE with inspection door; Schneider XT218A1PCM12 cake sensor per channel."
L-0195,PROPOSED-RFP-AIR-COMPRESSOR,"Rotary fan press air compressor, material not listed, 1",Process-Mechanical,Process & Mechanical,Rotary Fan Press System,New,C6.1,Not linked (PROPOSED tag is not printed; no boxed anchor matched),CWP 46,Treatment Equipment,1; Equipment Alternate C,None found,None found,None found,None found (no MTO line: no tied callout and no tag found on a cited sheet),46 76 26,46 76 26 (spec); C6.1 (sheet),1,SUB 46 76 26-01 (spec),tag 0; spec 1; sheet 0,Y,3,ITP 46 76 26-01 (spec); ITP 46 76 26-02 (spec); ITP 46 76 26-03 (spec),tag 0; spec 3; sheet 0,N,None found (Add. 4 checked; Addenda 1-3 not staged),None found,0,None found,None found,46-C01 Treatment Equipment — Sludge dewatering (rotary fan press),2023-11-01,2024-02-09,2023-03-31,Not started (baseline: no progress entered),Inferred,"plans_5 p.6 (C6.1, material list item 6, Section 46 76 26); main spec pp.510-531 (46 76 26 ¶1.0 A; ¶4.3.6)","Tag driver: Bid Item 1 (04, Inferred). For pneumatic valving; no compressor product requirements; air filter-regulator at the junction box to ISO 8573-1 class 3.7 (Festo MS4N-LFR). Polymer positioner needs 90 psi air (46 33 33)."
L-0196,PROPOSED-RFP-CONTROL-PANEL,"Rotary fan press control panel with operator interface, 1",Controls,Process & Mechanical,Rotary Fan Press System,New,C6.1,Not linked (PROPOSED tag is not printed; no boxed anchor matched),CWP 46,Treatment Equipment,1; Equipment Alternate C,None found,None found,None found,None found (no MTO line: no tied callout and no tag found on a cited sheet),46 76 26,46 76 26 (spec); C6.1 (sheet),1,SUB 46 76 26-01 (spec),tag 0; spec 1; sheet 0,Y,3,ITP 46 76 26-01 (spec); ITP 46 76 26-02 (spec); ITP 46 76 26-03 (spec),tag 0; spec 3; sheet 0,Y,None found (Add. 4 checked; Addenda 1-3 not staged),None found,1,OI-0428 (tag),#63 (tag),46-C01 Treatment Equipment — Sludge dewatering (rotary fan press),2023-11-01,2024-02-09,2023-03-31,Not started (baseline: no progress entered),Unresolved,"plans_5 p.6 (C6.1, material list item 8, Section 46 76 26; plan: operator interface); main spec pp.510-531 (46 76 26 ¶4.1; ¶4.3.1-4.3.7; ¶4.4)","Cross-lane: Electrical & Controls (power and PLC interface).Tag driver: Bid Item 1 (04, Inferred). NEMA 12, 480 V 3-phase, CSA; Allen-Bradley CompactLogix 5370 PLC with Point I/O, PanelView Plus 7 HMI, PowerFlex 52X VFDs (press, flocculator), eWON Cosy 141 LAN modem, E-stop, AC unit if required; NEMA 4X FRP junction box on the gearbox. Runs the screw conveyors, polymer system and digested sludge pump speed (Issue 36). Tag driver now Issue 36. || [Merge] Exceptions: #63."
L-0197,PROPOSED-POLYMER-SYSTEM,"Emulsion (liquid) polymer make-up system, Fournier frame with Watson-Marlow peristaltic dosing pump; C6.1 plan labels a dry polymer mix unit",Process-Mechanical,Process & Mechanical,Rotary Fan Press System,New,C6.1,Not linked (PROPOSED tag is not printed; no boxed anchor matched),CWP 46,Treatment Equipment,1; Equipment Alternate C,None found,None found,None found,None found (no MTO line: no tied callout and no tag found on a cited sheet),46 33 33,46 76 26 (tag); 46 33 33 (spec); C6.1 (sheet),1,SUB 46 33 33-01 (spec),tag 0; spec 1; sheet 0,Y,0,None found,tag 0; spec 0; sheet 0,N,None found (Add. 4 checked; Addenda 1-3 not staged),None found,2,OI-0425 (tag); OI-0439 (tag),#64 (tag),46-C01 Treatment Equipment — Sludge dewatering (rotary fan press),2023-11-01,2024-02-09,2023-03-31,Not started (baseline: no progress entered),Unresolved,"plans_5 p.6 (C6.1, material list item 5, Section 46 33 33; plan label DRY POLYMER MIX UNIT); main spec pp.481-485 (46 33 33 ¶1.01 A; ¶1.02 A; Part 2 items 2.1-7.0; ¶3.01); main spec pp.510-531 (46 76 26 ¶1.0 A, C)","Dry vs emulsion conflict (Issue 16).Tag driver: Issue 16. 46 33 33: 0.1-0.5% solution from 40-55% active neat polymer; Koflo static mixer; Festo proportional valve needing 90 psi air; NEMA 4X junction box; controlled from the rotary press PLC and HMI; spare metering pump head kit; no testing specified. Supports emulsion over the plan label (Issue 16); internal unit and reference errors (Issue 29). 46 76 26 puts this item in the single-source press package, so Equipment Alternate C is applied (link Inferred; 04 maps Alternate C to 46 76 26 by title). || [Merge] Exceptions: #64."
L-0198,PROPOSED-SCREW-CONVEYOR,"Screw conveyor system, stainless steel, dewatered cake to mobile dumpster/bin (system row; components below)",Process-Mechanical,Process & Mechanical,Rotary Fan Press System,New,C6.1,Not linked (PROPOSED tag is not printed; no boxed anchor matched),CWP 46,Treatment Equipment,1; Equipment Alternate C,None found,None found,None found,None found (no MTO line: no tied callout and no tag found on a cited sheet),46 12 13 (as printed on C6.1; not in the spec); 41 12 13,C6.1 (tag); 41 12 13 (spec); 46 76 26 (spec),2,SUB 41 12 13-01 (spec); SUB 46 12 13-00 (spec),tag 0; spec 2; sheet 0,Y,2,ITP 41 12 13-00 (spec); ITP 46 12 13-00 (spec),tag 0; spec 2; sheet 0,Y,None found (Add. 4 checked; Addenda 1-3 not staged),None found,2,OI-0424 (tag); OI-0426 (tag),None found,46-C01 Treatment Equipment — Sludge dewatering (rotary fan press),2023-11-01,2024-02-09,2023-03-31,Not started (baseline: no progress entered),Unresolved,"plans_5 p.6 (C6.1, material list item 7, Section 46 12 13; elevation: 28 degrees, 147 15/16 in. long, discharge 90 in.); main spec pp.453-461 (41 12 13 ¶1.1; ¶1.3; ¶3.02 A; schedule pp.460-461); main spec pp.510-531 (46 76 26 ¶1.0 A, C)","Section cited does not exist; 41 12 13 Screw Conveyor System by title (Issue 14). Mobile dumpster for sludge cake collection shown; supplier not stated. Tag driver: Issue 14. 41 12 13 confirms the screw conveyor section by title (Issue 14 reading). Spec schedule has two conveyors vs one on C6.1 (Issue 22). Controlled by the rotary press PLC and operator interface (¶1.13 B). Tag driver: Issues 14, 22. 46 76 26 puts this item in the single-source press package, so Equipment Alternate C is applied (link Inferred; 04 maps Alternate C to 46 76 26 by title)."
L-0199,PROPOSED-DIGESTED-SLUDGE-FEED-TO-PRESS,"Digested sludge feed to rotary fan press, 3-inch",Process-Mechanical,Process & Mechanical,Rotary Fan Press System,New,G0.5; C6.1; C6.2,Not linked (PROPOSED tag is not printed; no boxed anchor matched),CWP 46,Treatment Equipment,1,None found,None found,None found,None found (no MTO line: no tied callout and no tag found on a cited sheet),None found (no spec section cited in rev0),G0.5 (sheet); C6.1 (sheet); C6.2 (sheet),1,SUB G0.5-01 (sheet),tag 0; spec 0; sheet 1,N,0,None found,tag 0; spec 0; sheet 0,N,None found (Add. 4 checked; Addenda 1-3 not staged),None found,1,OI-0213 (tag),#106 (tag),46-C01 Treatment Equipment — Sludge dewatering (rotary fan press),2023-11-01,2024-02-09,2023-03-31,Not started (baseline: no progress entered),Inferred,"plans_1 p.5 (G0.5, digested sludge pump through FM to rotary fan press); plans_5 p.6 (C6.1, 3-inch digested sludge; 3-inch digester sludge); plans_5 p.7 (C6.2, digested sludge to rotary fan press; 2x3 expansion)","Status Inferred. Pump-side routing on C6.Tag driver: Bid Item 1 (04, Inferred). || [Merge] Exceptions: #106."
L-0200,PROPOSED-2W-SUPPLY-TO-PRESS,"2W water supply to rotary fan press, 2-inch",Process-Mechanical,Process & Mechanical,Rotary Fan Press System,New,C6.1,Not linked (PROPOSED tag is not printed; no boxed anchor matched),CWP 43,Blowers & 2W Plant Water System,1,None found,None found,None found,None found (no MTO line: no tied callout and no tag found on a cited sheet),43 22 10; 46 76 26,43 22 10 (spec); 46 76 26 (spec); C6.1 (sheet),2,SUB 43 22 10-01 (spec); SUB 46 76 26-01 (spec),tag 0; spec 2; sheet 0,N,4,ITP 43 22 10-00 (spec); ITP 46 76 26-01 (spec); ITP 46 76 26-02 (spec); ITP 46 76 26-03 (spec),tag 0; spec 4; sheet 0,N,None found (Add. 4 checked; Addenda 1-3 not staged),None found,2,OI-0437 (tag); OI-0290 (spec),None found,43-C03 Blowers & 2W Plant Water System — Sludge dewatering (rotary fan press),2023-11-01,2024-02-09,2023-03-31,Not started (baseline: no progress entered),Inferred,"plans_5 p.6 (C6.1, 2-inch 2W water; 2W water supply pipe); main spec pp.472-475 (43 22 10 ¶2.04; ¶2.05); main spec pp.510-531 (46 76 26 p.514 wash system demand)","Status Inferred. Tag driver: Bid Item 1 (04, Inferred). Exposed plant water pipe: 1.25-inch polyisocyanurate insulation with aluminum jacket (¶2.04); label and paint per ¶2.05, stainless excepted (Issue 27). Press wash demand limited to 750 gal per 2.5 hours of run time because the 2W (air gap) system has limited capacity (46 76 26)."
L-0201,PROPOSED-WAS-PUMP,"WAS pump, packaged sludge pump, 3 HP",Process-Mechanical,Process & Mechanical,Sludge Pump and Valving Area,New,G0.5; G0.6; G0.7; C6.2,Not linked (PROPOSED tag is not printed; no boxed anchor matched),CWP 22,Plumbing & Process Pumps,1; 6,None found,None found,None found,None found (no MTO line: no tied callout and no tag found on a cited sheet),22 13 36,22 13 36 (tag); C6.2 (tag); G0.5 (tag); G0.6 (sheet); G0.7 (sheet),3,SUB 22 13 36-01 (spec); SUB G0.5-01 (sheet); SUB G0.6-01 (sheet),tag 0; spec 1; sheet 2,Y,3,ITP 22 13 36-01 (spec); ITP G0.6-01 (sheet); ITP G0.7-01 (sheet),tag 0; spec 1; sheet 2,Y,"Add. 4 p.2, 22 13 36 ¶2.01 A (pumps powered from VFDs in the MCC, controlled by the PLC in the Main Control Panel; no local speed dial) — Add. 4 governs",None found,1,OI-0432 (tag),#59 (tag),22-C02 Plumbing & Process Pumps — Sludge pumps and valving,2023-04-01,2023-11-01,2023-03-31,Not started (baseline: no progress entered),Inferred,"plans_5 p.7 (C6.2, keyed note 8, per 22 13 36; pump labels 3HP); plans_1 p.7 (G0.7 hose pumps, 1 duty + 1 swing standby each for WAS and digester, 0-40 gpm); plans_1 p.6 (G0.6 proposed WAS and sludge pump equipment); Add. 4 p.2; main spec pp.263-264 (22 13 36 ¶1.01 A, ¶1.02 A, ¶2.01 A base, ¶2.02, ¶2.03, ¶3.02)","Role: duty WAS. Base ¶2.4 replaces ""Each pump is to include a VFD"". Bid Item 1 pumps and 6 VFDs in the MCC per 04 Add. 4 table.Cross-lane: Electrical & Controls (VFDs, MCC, PLC). Tag driver: Bid Item 1 (04, Inferred). 22 13 36: Edson Platinum peristaltic or equal, 3 HP 460 V 3-phase, 0-43 gpm (G0.7 says 0-40, Issue 21), set point 10-30 gpm; 304 SS enclosure about 40x40x40 in. per pump; 3 sets of wear parts; 2 days start-up and field testing; 1 day training; controls per 26 80 00 ¶3.09 A and H. Base ¶2.01 A ""Each pump is to include a VFD"" replaced by Add. 4 p.2. || [Merge] Exceptions: #59."
L-0202,PROPOSED-SWING-SLUDGE-PUMP,"Swing pump, packaged sludge pump, 3 HP, standby for either the WAS or digested sludge pump",Process-Mechanical,Process & Mechanical,Sludge Pump and Valving Area,New,G0.5; G0.6; G0.7; C6.2,Not linked (PROPOSED tag is not printed; no boxed anchor matched),CWP 22,Plumbing & Process Pumps,1; 6,None found,None found,None found,None found (no MTO line: no tied callout and no tag found on a cited sheet),22 13 36,22 13 36 (spec); G0.5 (sheet); G0.6 (sheet); G0.7 (sheet); C6.2 (sheet),3,SUB 22 13 36-01 (spec); SUB G0.5-01 (sheet); SUB G0.6-01 (sheet),tag 0; spec 1; sheet 2,Y,3,ITP 22 13 36-01 (spec); ITP G0.6-01 (sheet); ITP G0.7-01 (sheet),tag 0; spec 1; sheet 2,Y,"Add. 4 p.2, 22 13 36 ¶2.01 A (pumps powered from VFDs in the MCC, controlled by the PLC in the Main Control Panel; no local speed dial) — Add. 4 governs",None found,1,OI-0432 (tag),#60 (tag),22-C02 Plumbing & Process Pumps — Sludge pumps and valving,2023-04-01,2023-11-01,2023-03-31,Not started (baseline: no progress entered),Inferred,"plans_5 p.7 (C6.2, keyed note 8, per 22 13 36; pump labels 3HP); plans_1 p.7 (G0.7 hose pumps, 1 duty + 1 swing standby each for WAS and digester, 0-40 gpm); plans_1 p.6 (G0.6 proposed WAS and sludge pump equipment); Add. 4 p.2; main spec pp.263-264 (22 13 36 ¶1.01 A, ¶1.02 A, ¶2.01 A base, ¶2.02, ¶2.03, ¶3.02)","Role: swing standby. Base ¶2.4 replaces ""Each pump is to include a VFD"". Bid Item 1 pumps and 6 VFDs in the MCC per 04 Add. 4 table.Cross-lane: Electrical & Controls (VFDs, MCC, PLC). Tag driver: Bid Item 1 (04, Inferred). 22 13 36: Edson Platinum peristaltic or equal, 3 HP 460 V 3-phase, 0-43 gpm (G0.7 says 0-40, Issue 21), set point 10-30 gpm; 304 SS enclosure about 40x40x40 in. per pump; 3 sets of wear parts; 2 days start-up and field testing; 1 day training; controls per 26 80 00 ¶3.09 A and H. Base ¶2.01 A ""Each pump is to include a VFD"" replaced by Add. 4 p.2. || [Merge] Exceptions: #60."
L-0203,PROPOSED-DIGESTED-SLUDGE-PUMP,"Digested sludge pump, packaged sludge pump, 3 HP",Process-Mechanical,Process & Mechanical,Sludge Pump and Valving Area,New,G0.5; G0.6; G0.7; C6.2,Not linked (PROPOSED tag is not printed; no boxed anchor matched),CWP 22,Plumbing & Process Pumps,1; 6,None found,None found,None found,None found (no MTO line: no tied callout and no tag found on a cited sheet),22 13 36; 46 76 26,22 13 36 (tag); G0.5 (tag); 46 76 26 (spec); G0.6 (sheet); G0.7 (sheet); C6.2 (sheet),4,SUB 22 13 36-01 (spec); SUB 46 76 26-01 (spec); SUB G0.5-01 (sheet); SUB G0.6-01 (sheet),tag 0; spec 2; sheet 2,Y,6,ITP 22 13 36-01 (spec); ITP 46 76 26-01 (spec); ITP 46 76 26-02 (spec); ITP 46 76 26-03 (spec); ITP G0.6-01 (sheet); ITP G0.7-01 (sheet),tag 0; spec 4; sheet 2,Y,"Add. 4 p.2, 22 13 36 ¶2.01 A (pumps powered from VFDs in the MCC, controlled by the PLC in the Main Control Panel; no local speed dial) — Add. 4 governs",None found,2,OI-0428 (tag); OI-0432 (tag),#61 (tag),22-C02 Plumbing & Process Pumps — Sludge pumps and valving,2023-04-01,2023-11-01,2023-03-31,Not started (baseline: no progress entered),Unresolved,"plans_5 p.7 (C6.2, keyed note 8, per 22 13 36; pump labels 3HP); plans_1 p.7 (G0.7 hose pumps, 1 duty + 1 swing standby each for WAS and digester, 0-40 gpm); plans_1 p.6 (G0.6 proposed WAS and sludge pump equipment); Add. 4 p.2; main spec pp.263-264 (22 13 36 ¶1.01 A, ¶1.02 A, ¶2.01 A base, ¶2.02, ¶2.03, ¶3.02); main spec pp.510-531 (46 76 26 ¶1.7; ¶4.1)","Role: duty digested sludge. Base ¶2.4 replaces ""Each pump is to include a VFD"". Bid Item 1 pumps and 6 VFDs in the MCC per 04 Add. 4 table.Cross-lane: Electrical & Controls (VFDs, MCC, PLC). Tag driver: Bid Item 1 (04, Inferred). 22 13 36: Edson Platinum peristaltic or equal, 3 HP 460 V 3-phase, 0-43 gpm (G0.7 says 0-40, Issue 21), set point 10-30 gpm; 304 SS enclosure about 40x40x40 in. per pump; 3 sets of wear parts; 2 days start-up and field testing; 1 day training; controls per 26 80 00 ¶3.09 A and H. Base ¶2.01 A ""Each pump is to include a VFD"" replaced by Add. 4 p.2. 46 76 26 has the press control system set this pump's speed to hold flocculator inlet pressure (Issue 36). Tag driver now Issue 36. || [Merge] Exceptions: #61."
L-0204,PROPOSED-WAS-SOLENOID-VALVES,"WAS inlet solenoid valves (3, on WAS #1-#3), ASCO Redhat 8221G013, 2-inch, normally closed, 120 V coil, NEMA 4X",Process-Mechanical,Process & Mechanical,Sludge Pump and Valving Area,New,C6.2,Not linked (PROPOSED tag is not printed; no boxed anchor matched),CWP 46,Treatment Equipment,1,None found,None found,None found,None found (no MTO line: no tied callout and no tag found on a cited sheet),None found (no spec section cited in rev0),C6.2 (sheet),0,None found,tag 0; spec 0; sheet 0,N,0,None found,tag 0; spec 0; sheet 0,N,None found (Add. 4 checked; Addenda 1-3 not staged),None found,1,OI-0214 (tag),#12 (tag); #107 (tag); #172 (tag),46-C03 Treatment Equipment — Sludge pumps and valving,2023-04-01,2023-11-01,2023-03-31,Not started (baseline: no progress entered),Inferred,"plans_5 p.7 (C6.2, keyed note 1)","Max water differential 150 psi; orifice 1.75 in.; brass body; stainless core tube, plugnut, springs and piston. Cross-lane: Electrical & Controls (120 V coil, control). Tag driver: Bid Item 1 (04, Inferred). || [Merge] Exceptions: #12, #107, #172."
L-0205,PROPOSED-SLUDGE-MANIFOLD-PIPING,Sludge pump and valving area manifold: 2-inch SCH 80 PVC with 2-inch PVC ball valves and unions; 4-inch SCH 80 PVC digested sludge header; 4x2 reducer; 2x3 expansion to press,Process-Mechanical,Process & Mechanical,Sludge Pump and Valving Area,New,C6.2,Not linked (PROPOSED tag is not printed; no boxed anchor matched),CWP 45,Process Valves,1,None found,None found,None found,None found (no MTO line: no tied callout and no tag found on a cited sheet),45 05 00,C6.2 (tag); 45 05 00 (spec),3,SUB 45 05 00-01 (spec); SUB 45 05 00-02 (spec); SUB 45 05 00-03 (spec),tag 0; spec 3; sheet 0,N,2,ITP 45 05 00-01 (spec); ITP 45 05 00-02 (spec),tag 0; spec 2; sheet 0,N,None found (Add. 4 checked; Addenda 1-3 not staged),None found,1,OI-0427 (tag),None found,45-C03 Process Valves — Sludge pumps and valving,2023-04-01,2023-11-01,2023-03-31,Not started (baseline: no progress entered),Unresolved,"plans_5 p.7 (C6.2, keyed notes 3-7, 9); main spec pp.476-480 (45 05 00 ¶2.09 A)","Supports per 5/C7.2; wall annulus filled watertight with Dow Corning 732 (note 6); coordinate alignment with Owner, field configure (general note). Status Inferred. Tag driver: Bid Item 1 (04, Inferred). C6.2 PVC ball valves vs 45 05 00 stainless ball valves for exposed non-potable service (Issue 31). Tag driver now Issue 31."
L-0206,ESWD WWTP – Aerobic Digester Blower,"Aerobic digester blower (1), Kaeser Com-paK BB 52 C, 5 HP 460 V, VFD, 120 scfm at 4.0 psig, on 3.25 x 2.25 ft pad",Process-Mechanical,Process & Mechanical,Existing Metal Building adjacent to Train #2 (Digester Blower),New,C6.3; C6.4,None found (tag searched on every page),CWP 43,Blowers & 2W Plant Water System,1; 6,None found,None found,None found,None found (no MTO line: no tied callout and no tag found on a cited sheet),43 11 00,43 11 00 (tag); C6.3 (sheet); C6.4 (sheet),1,SUB 43 11 00-01 (spec),tag 0; spec 1; sheet 0,Y,1,ITP 43 11 00-01 (spec),tag 0; spec 1; sheet 0,Y,Add. 4 p.3 and p.6 (C6.4 reissue): blower pad 4 ft from wall; building separation 9 in. max — Add. 4 governs,None found,0,None found,#19 (tag); #173 (tag),43-C04 Blowers & 2W Plant Water System — Aerobic digester,2023-04-01,2023-11-01,2023-03-31,Not started (baseline: no progress entered),Inferred,"plans_5 p.8 (C6.3, keyed notes 1-4; 2.50 and 3.00 ft dimensions; 2-inch separation between buildings); plans_6 p.1 (C6.4, blower shown north of the Blower Building wall); addendum-no4-eswd.pdf p.6 (C6.4 reissue, 4.0 ft dimension and note); main spec pp.462-471 (43 11 00 ¶1.01 A-B; ¶2.01 A, L, O, P)","Pad per 3/C7.4 (Civil & Site). C6.3 separation and pad dimensions superseded by Add. 4 (Issue 19).Tag driver: Bid Item 1 (04, Inferred). 43 11 00 places it in the existing metal building just north of the proposed blower building and adjacent to/just west of Train #2 (matches Add. 4 p.6 ""Train #2 Building""). Relief 8.0 psig; matches G0.7 digester air 120 cfm. VFD in the MCC - Bid Item 6 share Inferred. || [Merge] Exceptions: #19, #173."
L-0207,ESWD WWTP – Biological Treatment System Blowers (Trains 1 – 3),"Biological treatment blowers (4), Kaeser Com-paK DB 166 C, 20 HP 460 V, VFD, 315 scfm at 8.9 psig each",Process-Mechanical,Process & Mechanical,Blower Building,New,C6.4; C6.5,None found (tag searched on every page),CWP 43,Blowers & 2W Plant Water System,1; 6,None found,None found,None found,None found (no MTO line: no tied callout and no tag found on a cited sheet),43 11 00,43 11 00 (tag); C6.4 (sheet); C6.5 (sheet),1,SUB 43 11 00-01 (spec),tag 0; spec 1; sheet 0,Y,1,ITP 43 11 00-01 (spec),tag 0; spec 1; sheet 0,Y,Add. 4 p.6 (C6.4 reissue; blowers drawn unchanged) — Add. 4 governs,None found,0,None found,#18 (tag),43-C02 Blowers & 2W Plant Water System — Blower Building,2023-04-01,2023-07-31,2023-03-31,Not started (baseline: no progress entered),Inferred,"plans_6 p.1 (C6.4, four blowers on common pad); plans_6 p.2 (C6.5, keyed note 5 new blower per specs, x4; FF 23.30); main spec pp.462-471 (43 11 00 ¶1.01; ¶1.02 A; ¶2.01 A, L, N, O, P, Q)","Air demand 316 scfm at 9.2 psig (G0.7) / 315 scfm (46 53 00) - Issue 6. Tag driver: Bid Item 1 (04, Inferred). Tag per 43 11 00 ¶O ""Tag Numbers"". Kaeser, Aerzen or equal; 72 dB(A) enclosure; relief 12.0 psig; factory slip test and 30-min run; 15-min package run; 60-month blower warranty. VFDs in the MCC (¶Q) - Bid Item 6 share Inferred (04 Item 6 basis). Air lines to Trains 1 and 2 are blind-flanged on C6.5 though the tag names Trains 1-3. Design pressure Issue 24. || [Merge] Exceptions: #18."
L-0208,PROPOSED-AERATION-AIR-HEADER,Blower Building aeration air piping: 3-inch SS header (IE 24.26) with 3-inch butterfly valves; 6-inch SS outlets with 6-inch butterfly valves,Process-Mechanical,Process & Mechanical,Blower Building,New,C6.4; C6.5,Not linked (PROPOSED tag is not printed; no boxed anchor matched),CWP 33,Yard Piping & Utilities,1,None found,None found,None found,None found (no MTO line: no tied callout and no tag found on a cited sheet),33 31 00 (cited on C6.4),33 31 00 (spec); C6.4 (sheet); C6.5 (sheet),1,SUB 33 31 00-00 (spec),tag 0; spec 1; sheet 0,N,1,ITP 33 31 00-01 (spec),tag 0; spec 1; sheet 0,N,None found (Add. 4 checked; Addenda 1-3 not staged),None found,0,None found,#231 (tag),33-C01 Yard Piping & Utilities — Blower Building,2023-04-01,2023-07-31,2023-03-31,Not started (baseline: no progress entered),Inferred,"plans_6 p.1 (C6.4, keyed notes 1-2, see Section 33 31 00); plans_6 p.2 (C6.5, keyed notes 1-2; 3-inch IE 24.26; 6-inch IE 25.92)","Cross-lane: Civil & Site (33 31 00 aeration piping). Status Inferred. Tag driver: Bid Item 1 (04, Inferred). || [Merge] Exceptions: #231."
L-0209,PROPOSED-AIR-TO-TRAIN-3,"6-inch SS aeration air line, Blower Building to Train 3 (buried, IE 15.90 at drop)",Process-Mechanical,Process & Mechanical,Blower Building; Train 3,New,C6.4; C6.5; C3.3; C3.5,Not linked (PROPOSED tag is not printed; no boxed anchor matched),CWP 33,Yard Piping & Utilities,1,None found,None found,None found,None found (no MTO line: no tied callout and no tag found on a cited sheet),33 31 00 (cited on C6.4); 46 53 00,33 31 00 (spec); 46 53 00 (spec); C6.4 (sheet); C6.5 (sheet); C3.3 (sheet); C3.5 (sheet),3,SUB 33 31 00-00 (spec); SUB 46 53 00-01 (spec); SUB 46 53 00-02 (spec),tag 0; spec 3; sheet 0,N,2,ITP 33 31 00-01 (spec); ITP 46 53 00-01 (spec),tag 0; spec 2; sheet 0,Y,None found (Add. 4 checked; Addenda 1-3 not staged),None found,1,OI-0446 (spec),#93 (tag),33-C01 Yard Piping & Utilities — Blower Building,2023-04-01,2023-07-31,2023-03-31,Not started (baseline: no progress entered),Inferred,"plans_6 p.2 (C6.5, 6-in air piping to Train #3, IE 15.90); plans_6 p.1 (C6.4, keyed note 2 exposed and buried aeration piping); plans_4Part-4 p.1 (C3.3 6-inch air inlet); plans_4Part-6 p.1 (C3.5 6-inch air inlet flanged connection); main spec p.498 (46 53 00 ¶2.01 E.2 air header low-pressure air test)","Testing Y: 46 53 00 ¶2.01 E.2 low-pressure air test (15 psi, 60 min) before full backfill. Cross-lane: Civil & Site (33 31 00 ¶2.01 D). Status Inferred. Tag driver: Bid Item 1 (04, Inferred). || [Merge] Exceptions: #93."
L-0210,PROPOSED-AIR-TO-TRAIN-1-STUB,"6-inch air piping to Train #1, terminated with blind flange inside existing metal building",Process-Mechanical,Process & Mechanical,Blower Building,New,C6.5,Not linked (PROPOSED tag is not printed; no boxed anchor matched),CWP 33,Yard Piping & Utilities,1,None found,None found,None found,None found (no MTO line: no tied callout and no tag found on a cited sheet),None found (no spec section cited in rev0),C6.5 (sheet),0,None found,tag 0; spec 0; sheet 0,N,0,None found,tag 0; spec 0; sheet 0,N,None found (Add. 4 checked; Addenda 1-3 not staged),None found,1,OI-0215 (tag),#108 (tag),33-C01 Yard Piping & Utilities — Blower Building,2023-04-01,2023-07-31,2023-03-31,Not started (baseline: no progress entered),Inferred,"plans_6 p.2 (C6.5, keyed note 3)","Not connected to Train #1 in this work (blind flange). Status Inferred. Tag driver: Bid Item 1 (04, Inferred). || [Merge] Exceptions: #108."
L-0211,PROPOSED-AIR-TO-TRAIN-2-STUB,"6-inch air piping to Train #2, terminated with blind flange inside existing metal building",Process-Mechanical,Process & Mechanical,Blower Building,New,C6.5,Not linked (PROPOSED tag is not printed; no boxed anchor matched),CWP 33,Yard Piping & Utilities,1,None found,None found,None found,None found (no MTO line: no tied callout and no tag found on a cited sheet),None found (no spec section cited in rev0),C6.5 (sheet),0,None found,tag 0; spec 0; sheet 0,N,0,None found,tag 0; spec 0; sheet 0,N,None found (Add. 4 checked; Addenda 1-3 not staged),None found,1,OI-0216 (tag),#109 (tag),33-C01 Yard Piping & Utilities — Blower Building,2023-04-01,2023-07-31,2023-03-31,Not started (baseline: no progress entered),Inferred,"plans_6 p.2 (C6.5, keyed note 4)","Not connected to Train #2 in this work (blind flange). Status Inferred. Tag driver: Bid Item 1 (04, Inferred). || [Merge] Exceptions: #109."
L-0212,PROPOSED-2W-BLADDER-TANK-SUPPLY,"1-inch 2W supply piping to the bladder tanks, routed below existing concrete floor, slab penetration at tank connection",Process-Mechanical,Process & Mechanical,Train #2 Building (per Add. 4 p.6),New,C6.4,Not linked (PROPOSED tag is not printed; no boxed anchor matched),CWP 43,Blowers & 2W Plant Water System,1,None found,None found,None found,None found (no MTO line: no tied callout and no tag found on a cited sheet),43 22 10,43 22 10 (spec); C6.4 (sheet),1,SUB 43 22 10-01 (spec),tag 0; spec 1; sheet 0,N,1,ITP 43 22 10-00 (spec),tag 0; spec 1; sheet 0,N,Add. 4 p.3 and p.6 (C6.4 reissue) — Add. 4 governs,None found,2,OI-0437 (tag); OI-0290 (spec),#51 (tag),43-C01 Blowers & 2W Plant Water System — 2W air gap water system,2023-05-01,2023-10-18,2023-03-31,Not started (baseline: no progress entered),Inferred,"plans_6 p.1 (C6.4, 1-inch 2W pipe along south wall); addendum-no4-eswd.pdf p.6 (C6.4 reissue, red notes: move tanks and 1-inch supply piping to Train #2 Building; route below existing concrete floor; penetrate slab at bladder tank connection); main spec pp.472-475 (43 22 10 ¶2.04; ¶2.05)","Base routing along the Blower Building south wall is clouded and replaced by Add. 4. Tag driver: Bid Item 1 (04, Inferred). Exposed plant water pipe: 1.25-inch polyisocyanurate insulation with aluminum jacket (¶2.04); label and paint per ¶2.05, stainless excepted (Issue 27). || [Merge] Exceptions: #51."
L-0213,PROPOSED-BLOWER-BUILDING | PROPOSED-Blower-Building,"Blower Building, prefabricated metal building housing the biological treatment blowers | Blower Building — pre-engineered metal building, one room (Blower Room 101) | Blower Building",Architectural,Process & Mechanical; Structural & Building; Contract & General,Blower Building,New,C6.4; C6.5; A1.1; A1.2; A1.3; S1.1; S2.3,Not linked (PROPOSED tag is not printed; no boxed anchor matched),CWP 13,Pre-Engineered Metal Building,1 | 1 (Inferred per 04),None found,None found,None found,None found (no MTO line: no tied callout and no tag found on a cited sheet),13 12 20; 07 20 00; 09 25 00; 09 90 00; 00 31 13; 00 73 00; 01 45 00; 01 70 00,13 12 20 (spec); 07 20 00 (spec); 09 25 00 (spec); 09 90 00 (spec); 00 31 13 (spec); 00 73 00 (spec); 01 45 00 (spec); 01 70 00 (spec); CQA Plan (spec); C6.4 (sheet); C6.5 (sheet); A1.1 (sheet); A1.2 (sheet); A1.3 (sheet); S1.1 (sheet); S2.3 (sheet),15,SUB 00 73 00-01 (spec); SUB 01 45 00-00 (spec); SUB 01 70 00-01 (spec); SUB 01 70 00-02 (spec); SUB 01 70 00-03 (spec); SUB 01 70 00-04 (spec); SUB 07 20 00-01 (spec); SUB 09 25 00-01 (spec); SUB 09 90 00-01 (spec); SUB 13 12 20-01 (spec); SUB 13 12 20-02 (spec); SUB 13 12 20-03 (spec); SUB A1.1-01 (sheet); SUB S1.1-01 (sheet); SUB S2.3-01 (sheet),tag 0; spec 12; sheet 3,Y,13,ITP 00 73 00-01 (spec); ITP 00 73 00-02 (spec); ITP 01 45 00-01 (spec); ITP 01 45 00-02 (spec); ITP 01 45 00-03 (spec); ITP 01 70 00-01 (spec); ITP 01 70 00-02 (spec); ITP 07 20 00-00 (spec); ITP 09 25 00-00 (spec); ITP 09 90 00-00 (spec); ITP 13 12 20-00 (spec); ITP S1.1-01 (sheet); ITP S2.3-01 (sheet),tag 0; spec 11; sheet 2,Y,"Add. 4 p.1 Clarification 4 (footprint 9.25 x 44.00 ft); Add. 4 p.3 and p.6 (separation 9 in. max; 10-ft setbacks) — Add. 4 governs | Add. 4 p.1, Clarifications 3 and 4; p.2, 09 90 00 ¶2.01 I (Service Condition J); p.3, Drawings A1.1/A1.2 and S2.3; p.4 (A1.1); p.5 (A1.2); p.9 (S2.3) — Add. 4 governs",OI-0361 (spec); OI-0367 (spec); OI-0386 (spec),9,OI-0273 (tag); OI-0323 (spec); OI-0350 (spec); OI-0354 (spec); OI-0389 (spec); OI-0434 (spec); OI-0470 (spec); OI-0006 (sheet); OI-0252 (sheet),#170 (tag); #252 (tag),13-C01 Pre-Engineered Metal Building — Blower Building,2023-04-01,2023-07-31,2023-03-31,Not started (baseline: no progress entered),Unresolved,"[Process & Mechanical] plans_6 p.1 (C6.4); addendum-no4-eswd.pdf p.6 (C6.4 reissue); Add. 4 p.1 (Clarifications 3-4); Add. 4 p.3 (A1.1, A1.2, C6.4 item) || [Structural & Building] plans_7 pp.5-8; plans_8 p.3; main spec pp.209-210, 225-235, 246-251; Add. 4 pp.1-5, 9 || [Contract & General] main spec 00 31 13 ¶A.6, ¶A.9 p.21; 00 73 00 SC 19 p.92; 01 45 00 ¶1.05.B.2.a p.137, p.141; 01 70 00 ¶1.03.A.7 p.152; QA plan §2.0 p.6","[Process & Mechanical] Cross-lane: Structural & Building owns the building (A1.1, A1.2, S2.3; 13 12 20). New slab extends to the existing Train 2 slab (Add. 4 p.3). Recorded here only because C6.4-C6.5 show it. Tag driver: Bid Item 1 (04, Inferred). || [Structural & Building] Footprint 44.00 ft x 9.25 ft and min haunch clearance 10.25 ft per Add. 4 (base A1.1/A1.2 42.00 x 9.50 and 9.00; 13 12 20 ¶2.05 A.1 ""42 ft width, 9.75 ft length"", 9 ft-0 in). Garco or equal; 24 ga standing-seam roof, 26 ga R/A wall panels, factory finish inside and out (Add. 4 Clar. 3). Lateral: ordinary concentric braced and ordinary moment frames, 6 columns (S2.3). Submittals: WA SE-sealed design, anchor bolt embedment design, erection drawings (13 12 20 ¶1.04); deferred submittal (S1.1). No testing article. Interior GWB (09 25 00) painted per Service Condition J (Add. 4). Open: interior insulation assembly vs 07 20 00 liner, missing ""Paints and Coatings"" reference, floor sealer (Issues). || [Contract & General] Construction starts April 2023; new structure complete July 2023 (Verified). Add. 4 p.1 Clarification 4 (footprint) is mapped to Electrical & Controls / Structural & Building in 03 — pointer only, not crawled here. Bid Item 1 and discipline Inferred. SC 19 lists the blower building in Substantial Completion (Verified). Testing Y: Owner-paid, Contractor-coordinated special inspections for buildings — concrete, structural steel and bolting, air barrier testing per WA Energy Code Section 402 (01 45 00, Verified). Submittal Y: 2015 WSEC compliance documentation per C103.6.3 before Substantial Completion (01 70 00 ¶1.03.A.7, Verified; edition — Issues 1.20, Unresolved). Applying both to this building is Inferred (only building named in this lane's stack). QA plan §2.0 lists a 'new blower building' (Verified). The QA plan is not a Contract Document (§1.3 p.5). Cross-lane: Structural & Building || [Merge] Combined by rule (same PROPOSED name in the same Area/Building) from Process_and_Mechanical_Ledger.csv row 92; Structural_and_Building_Ledger.csv row 1; Contract_and_General_Ledger.csv row 8. Tag level = weakest of the parts (Inferred, Unresolved, Unresolved). Submittal: N (Process & Mechanical), Y (Structural & Building), Y (Contract & General) — Y kept (each lane's N covers only its own stack); Testing/Startup: N (Process & Mechanical), N (Structural & Building), Y (Contract & General) — Y kept (each lane's N covers only its own stack). || [Merge] Exceptions: #170, #252."
L-0214,PROPOSED-IPS-MOTOR-SAVER-RELAYS,"Flygt MiniCAS-120 motor saver relays for the influent pumps, supplied by Contractor to the Control Systems Integrator",Controls,Process & Mechanical,Influent Pump Station,New,None found (no sheet cited in rev0),Not linked (PROPOSED tag is not printed; no boxed anchor matched),CWP 22,Plumbing & Process Pumps,1; Equipment Alternate A,None found,None found,None found,None found (no MTO line: no tied callout and no tag found on a cited sheet),22 13 29,22 13 29 (spec),2,SUB 22 13 29-01 (spec); SUB 22 13 29-02 (spec),tag 0; spec 2; sheet 0,Y,2,ITP 22 13 29-01 (spec); ITP 22 13 29-02 (spec),tag 0; spec 2; sheet 0,N,None found (Add. 4 checked; Addenda 1-3 not staged),None found,1,OI-0474 (tag),#42 (tag),22-C01 Plumbing & Process Pumps — Influent pump station and flow splitter,2023-06-01,2023-10-25,2023-03-31,Not started (baseline: no progress entered),Inferred,main spec pp.255-262 (22 13 29 ¶2.02 C.9-C.10; ¶3.01 C),"Quantity not stated (pumps are pre-wired for the relay; moisture sensors monitored by it). Integrator installs in the pump station control panel. Cross-lane: Electrical & Controls. Tag driver: Bid Item 1 (04, Inferred). || [Merge] Exceptions: #42."
L-0215,PROPOSED-SLUDGE-PUMP-LOCAL-PANELS,"Sludge pump local electrical control panels (3), by pump manufacturer",Controls,Process & Mechanical,Sludge Pump and Valving Area,New,None found (no sheet cited in rev0),Not linked (PROPOSED tag is not printed; no boxed anchor matched),CWP 22,Plumbing & Process Pumps,1; 6,None found,None found,None found,None found (no MTO line: no tied callout and no tag found on a cited sheet),22 13 36,22 13 36 (spec),1,SUB 22 13 36-01 (spec),tag 0; spec 1; sheet 0,Y,1,ITP 22 13 36-01 (spec),tag 0; spec 1; sheet 0,N,"Add. 4 p.2, 22 13 36 ¶2.01 A (local speed dial not required; VFDs in MCC) — Add. 4 governs",None found,1,OI-0474 (tag),#62 (tag),22-C02 Plumbing & Process Pumps — Sludge pumps and valving,2023-04-01,2023-11-01,2023-03-31,Not started (baseline: no progress entered),Inferred,main spec pp.263-264 (22 13 36 ¶2.01 A: electrical control panel for each pump); Add. 4 p.2,"Add. 4 removes the local speed dial and moves the VFDs to the MCC but does not delete the per-pump control panel. Cross-lane: Electrical & Controls. Tag driver: Bid Item 1 (04, Inferred). || [Merge] Exceptions: #62."
L-0216,PROPOSED-YARD-HYDRANTS,1-inch frost-proof yard hydrants with vacuum breakers (quantity not stated),Process-Mechanical,Process & Mechanical,Site,Not stated,None found (no sheet cited in rev0),Not linked (PROPOSED tag is not printed; no boxed anchor matched),CWP 22,Plumbing & Process Pumps,1,None found,None found,None found,None found (no MTO line: no tied callout and no tag found on a cited sheet),15 40 00; 43 22 10,43 22 10 (tag); 15 40 00 (spec),2,SUB 15 40 00-01 (spec); SUB 43 22 10-01 (spec),tag 0; spec 2; sheet 0,Y,1,ITP 43 22 10-00 (spec),tag 0; spec 1; sheet 0,N,None found (Add. 4 checked; Addenda 1-3 not staged),None found,2,OI-0474 (tag); OI-0290 (spec),#52 (tag),"22-C04 Plumbing & Process Pumps — Yard piping, vaults and site utilities",2023-04-01,2023-11-01,2023-03-31,Not started (baseline: no progress entered),Inferred,main spec pp.253-254 (15 40 00 ¶1.02 A; ¶2.01 D); main spec pp.472-475 (43 22 10 ¶1.01 B.6; ¶2.05 A),"Woodford Iowa Y2 or Merrill CV-1000 or equal, 4-ft bury, 3/4-inch hose thread, Smith Cooper 0190167II vacuum breaker or equal. Locations and count not on P&M sheets. Cross-lane: Civil & Site. Tag driver: Bid Item 1 (04, Inferred). 43 22 10 lists yard hydrants as a 2W component and requires them painted. || [Merge] Exceptions: #52."
L-0217,PROPOSED-POST-HYDRANTS,2-inch post hydrants with 2-inch atmospheric vacuum breakers (quantity not stated),Process-Mechanical,Process & Mechanical,Site,Not stated,None found (no sheet cited in rev0),Not linked (PROPOSED tag is not printed; no boxed anchor matched),CWP 22,Plumbing & Process Pumps,1,None found,None found,None found,None found (no MTO line: no tied callout and no tag found on a cited sheet),15 40 00,15 40 00 (spec),1,SUB 15 40 00-01 (spec),tag 0; spec 1; sheet 0,Y,0,None found,tag 0; spec 0; sheet 0,N,None found (Add. 4 checked; Addenda 1-3 not staged),None found,1,OI-0474 (tag),#53 (tag),"22-C04 Plumbing & Process Pumps — Yard piping, vaults and site utilities",2023-04-01,2023-11-01,2023-03-31,Not started (baseline: no progress entered),Inferred,main spec pp.253-254 (15 40 00 ¶1.02 A; ¶2.01 E),"American AVK Dry Barrel 67XX or Eclipse No. 2A or equal, 4-ft bury; Danfoss AVB 125 psi ASSE 1001. Locations and count not on P&M sheets. Cross-lane: Civil & Site. Tag driver: Bid Item 1 (04, Inferred). || [Merge] Exceptions: #53."
L-0218,PROPOSED-EXTERIOR-SANITARY-DRAINS,"Exterior sanitary drain piping, ABS DWV, with unions and cleanouts",Process-Mechanical,Process & Mechanical,Site,Not stated,None found (no sheet cited in rev0),Not linked (PROPOSED tag is not printed; no boxed anchor matched),CWP 22,Plumbing & Process Pumps,1,None found,None found,None found,None found (no MTO line: no tied callout and no tag found on a cited sheet),15 40 00,15 40 00 (spec),1,SUB 15 40 00-01 (spec),tag 0; spec 1; sheet 0,Y,0,None found,tag 0; spec 0; sheet 0,N,None found (Add. 4 checked; Addenda 1-3 not staged),None found,2,OI-0217 (tag); OI-0474 (tag),#110 (tag),"22-C04 Plumbing & Process Pumps — Yard piping, vaults and site utilities",2023-04-01,2023-11-01,2023-03-31,Not started (baseline: no progress entered),Inferred,main spec pp.253-254 (15 40 00 ¶1.01 A; ¶2.01 A-C; ¶3.01),"Exterior purposes only; slope 1/4 in. per ft. Routes not on P&M sheets. Cross-lane: Civil & Site. Tag driver: Bid Item 1 (04, Inferred). || [Merge] Exceptions: #110."
L-0219,PROPOSED-BLOWER-BLDG-WALL-FANS,"Blower Building wall fans (2), Acme FQ18G6, 3,300 CFM, 1/2 HP, 120 V, each on its own Schaffer TH109 thermostat, with EBE445 gravity combination louver",Process-Mechanical,Process & Mechanical,Blower Building,New,None found (no sheet cited in rev0),Not linked (PROPOSED tag is not printed; no boxed anchor matched),CWP 23,HVAC & Ventilation,1,None found,None found,None found,None found (no MTO line: no tied callout and no tag found on a cited sheet),23 34 00,23 34 00 (spec),1,SUB 23 34 00-01 (spec),tag 0; spec 1; sheet 0,N,0,None found,tag 0; spec 0; sheet 0,N,None found (Add. 4 checked; Addenda 1-3 not staged),None found,2,OI-0474 (tag); OI-0434 (spec),#20 (tag),23-C01 HVAC & Ventilation — Blower Building,2023-04-01,2023-07-31,2023-03-31,Not started (baseline: no progress entered),Inferred,main spec pp.265-267 (23 34 00 ¶1.01 A-B; ¶2.1 A-B; ¶3.1 D),"No submittal or testing paragraph in 23 34 00. 2-year minimum manufacturer warranty; thermostats in NEMA 4X, 4 ft above floor. Add. 4 p.3 moves ""Exhaust Fans"" with the Blower Building layout on A1.1/A1.2 (Structural & Building stack); these wall fans taken as those exhaust fans (Inferred). Cross-lane: Electrical & Controls (E9.3) and Structural & Building. Tag driver: Bid Item 1 (04, Inferred). || [Merge] Exceptions: #20."
L-0220,PROPOSED-BLOWER-BLDG-MOTORIZED-LOUVER,"Blower Building motorized louvered vent, 36 x 84 in., Pottoroff EXD-645 with AF120 120 V spring-return actuator",Process-Mechanical,Process & Mechanical,Blower Building,New,None found (no sheet cited in rev0),Not linked (PROPOSED tag is not printed; no boxed anchor matched),CWP 23,HVAC & Ventilation,1,None found,None found,None found,None found (no MTO line: no tied callout and no tag found on a cited sheet),23 34 00,23 34 00 (spec),1,SUB 23 34 00-01 (spec),tag 0; spec 1; sheet 0,N,0,None found,tag 0; spec 0; sheet 0,N,None found (Add. 4 checked; Addenda 1-3 not staged),None found,2,OI-0474 (tag); OI-0434 (spec),#21 (tag),23-C01 HVAC & Ventilation — Blower Building,2023-04-01,2023-07-31,2023-03-31,Not started (baseline: no progress entered),Inferred,main spec pp.265-267 (23 34 00 ¶1.01 A; ¶2.2 A),"Opens when either wall fan is on; stays open until both are off; controlled from the fan thermostat auxiliary contacts. Manufacturer spelled ""Pottoroff"" as printed. Add. 4 p.3 moves ""Exhaust Fans"" with the Blower Building layout on A1.1/A1.2 (Structural & Building stack); these wall fans taken as those exhaust fans (Inferred). Cross-lane: Electrical & Controls (E9.3) and Structural & Building. Tag driver: Bid Item 1 (04, Inferred). || [Merge] Exceptions: #21."
L-0221,PROPOSED-BLOWER-BLDG-MANUAL-LOUVER,"Blower Building manual louvered vent, 24 x 24 in., Pottoroff EXD-645",Process-Mechanical,Process & Mechanical,Blower Building,New,None found (no sheet cited in rev0),Not linked (PROPOSED tag is not printed; no boxed anchor matched),CWP 23,HVAC & Ventilation,1,None found,None found,None found,None found (no MTO line: no tied callout and no tag found on a cited sheet),23 34 00,23 34 00 (spec),1,SUB 23 34 00-01 (spec),tag 0; spec 1; sheet 0,N,0,None found,tag 0; spec 0; sheet 0,N,None found (Add. 4 checked; Addenda 1-3 not staged),None found,2,OI-0474 (tag); OI-0434 (spec),#22 (tag),23-C01 HVAC & Ventilation — Blower Building,2023-04-01,2023-07-31,2023-03-31,Not started (baseline: no progress entered),Inferred,main spec pp.265-267 (23 34 00 ¶1.01 A; ¶2.2 B),"Add. 4 p.3 moves ""Exhaust Fans"" with the Blower Building layout on A1.1/A1.2 (Structural & Building stack); these wall fans taken as those exhaust fans (Inferred). Cross-lane: Electrical & Controls (E9.3) and Structural & Building. Tag driver: Bid Item 1 (04, Inferred). || [Merge] Exceptions: #22."
L-0222,PROPOSED-EXISTING-BLDG-WALL-FANS,"Existing Dewatering/Train 1&2 Building wall fans (3), Acme FQ18G6, 3,300 CFM, each on a manual on/off switch, with gravity combination louvers",Process-Mechanical,Process & Mechanical,Existing Dewatering/Train 1&2 Building Area,New,None found (no sheet cited in rev0),Not linked (PROPOSED tag is not printed; no boxed anchor matched),CWP 23,HVAC & Ventilation,1,None found,None found,None found,None found (no MTO line: no tied callout and no tag found on a cited sheet),23 34 00,23 34 00 (spec),1,SUB 23 34 00-01 (spec),tag 0; spec 1; sheet 0,N,0,None found,tag 0; spec 0; sheet 0,N,None found (Add. 4 checked; Addenda 1-3 not staged),None found,2,OI-0474 (tag); OI-0434 (spec),#26 (tag),23-C02 HVAC & Ventilation — Existing dewatering / treatment building,2023-04-01,2024-02-09,2023-03-31,Not started (baseline: no progress entered),Unresolved,main spec pp.265-267 (23 34 00 ¶1.01 A-B; ¶2.1),Control conflict: manual switches (¶1.01 A) vs thermostat control (¶2.1 A.4) - Issue 25. Not shown on P&M sheets. Cross-lane: Electrical & Controls. Tag driver: Issue 25. || [Merge] Exceptions: #26.
L-0223,PROPOSED-EXISTING-BLDG-LOUVERS,"Existing Dewatering/Train 1&2 Building manual louvered vents (2), 36 x 84 in., Pottoroff EXD-645",Process-Mechanical,Process & Mechanical,Existing Dewatering/Train 1&2 Building Area,New,None found (no sheet cited in rev0),Not linked (PROPOSED tag is not printed; no boxed anchor matched),CWP 23,HVAC & Ventilation,1,None found,None found,None found,None found (no MTO line: no tied callout and no tag found on a cited sheet),23 34 00,23 34 00 (spec),1,SUB 23 34 00-01 (spec),tag 0; spec 1; sheet 0,N,0,None found,tag 0; spec 0; sheet 0,N,None found (Add. 4 checked; Addenda 1-3 not staged),None found,2,OI-0474 (tag); OI-0434 (spec),#27 (tag),23-C02 HVAC & Ventilation — Existing dewatering / treatment building,2023-04-01,2024-02-09,2023-03-31,Not started (baseline: no progress entered),Inferred,main spec pp.265-267 (23 34 00 ¶1.01 A; ¶2.3 A),"Not shown on P&M sheets. Tag driver: Bid Item 1 (04, Inferred). || [Merge] Exceptions: #27."
L-0224,Receiving Conveyor,"Receiving conveyor, horizontal shaftless, 9-in. flight, 6 ft 9 in., 304 SS U-trough, two inlets from rotary press cake chutes, 1 HP",Process-Mechanical,Process & Mechanical,Rotary Fan Press System,New,None found (no sheet cited in rev0),None found (tag searched on every page),CWP 41,Material Handling (Screw Conveyors),1; Equipment Alternate C,None found,None found,None found,None found (no MTO line: no tied callout and no tag found on a cited sheet),41 12 13,41 12 13 (tag); 46 76 26 (spec),1,SUB 41 12 13-01 (spec),tag 0; spec 1; sheet 0,Y,1,ITP 41 12 13-00 (spec),tag 0; spec 1; sheet 0,Y,None found (Add. 4 checked; Addenda 1-3 not staged),None found,3,OI-0218 (tag); OI-0426 (tag); OI-0474 (tag),#111 (tag),41-C01 Material Handling (Screw Conveyors) — Sludge dewatering (rotary fan press),2023-11-01,2024-02-09,2023-10-31,Not started (baseline: no progress entered),Unresolved,"main spec pp.453-461 (41 12 13 Receiving Conveyor schedule p.460; ¶1.3; ¶1.8-1.13; ¶3.02 A); main spec pp.510-531 (46 76 26 ¶1.0 A, C)","Tag is the schedule ""Identifier"". 0.5 wet ton/hr; Nord SK2282 SCP gear motor; UHMW liner; 2-inch drain; Siemens Sitrans WM100 zero-speed switch to PLC, interlocked with MCC starter. Not drawn as a separate unit on C6.1 (Issue 22). Tag driver: Issue 22. 46 76 26 puts this item in the single-source press package, so Equipment Alternate C is applied (link Inferred; 04 maps Alternate C to 46 76 26 by title). || [Merge] Exceptions: #111."
L-0225,Inclined Conveyor,"Inclined conveyor, shafted, 9-in. flight at 5-in. pitch, 17 ft 4 in. at 35 degrees, 304 SS tubular trough, outlet to bin, 5 HP",Process-Mechanical,Process & Mechanical,Rotary Fan Press System,New,None found (no sheet cited in rev0),None found (tag searched on every page),CWP 41,Material Handling (Screw Conveyors),1; Equipment Alternate C,None found,None found,None found,None found (no MTO line: no tied callout and no tag found on a cited sheet),41 12 13,41 12 13 (tag); 46 76 26 (spec),1,SUB 41 12 13-01 (spec),tag 0; spec 1; sheet 0,Y,1,ITP 41 12 13-00 (spec),tag 0; spec 1; sheet 0,Y,None found (Add. 4 checked; Addenda 1-3 not staged),None found,3,OI-0219 (tag); OI-0426 (tag); OI-0474 (tag),#112 (tag),41-C01 Material Handling (Screw Conveyors) — Sludge dewatering (rotary fan press),2023-11-01,2024-02-09,2023-10-31,Not started (baseline: no progress entered),Unresolved,"main spec pp.453-461 (41 12 13 Inclined Conveyor schedule p.461; ¶1.3; ¶1.8-1.13; ¶3.02 A); main spec pp.510-531 (46 76 26 ¶1.0 A, C)","Tag is the schedule ""Identifier"". 0.5 wet ton/hr; Nord SK2282 SCP gear motor; UHMW liner; 2-inch drain; Siemens Sitrans WM100 zero-speed switch to PLC, interlocked with MCC starter. Not drawn as a separate unit on C6.1 (Issue 22). Tag driver: Issue 22. 46 76 26 puts this item in the single-source press package, so Equipment Alternate C is applied (link Inferred; 04 maps Alternate C to 46 76 26 by title). || [Merge] Exceptions: #112."
L-0226,PROPOSED-2W-AIR-GAP-ENCLOSURE,"2W air gap system in a fiberglass enclosure (""2W (Air Gap) Water Hot Box"")",Process-Mechanical,Process & Mechanical,Site (on C1.3 per Add. 4 p.3),New,None found (no sheet cited in rev0),Not linked (PROPOSED tag is not printed; no boxed anchor matched),CWP 43,Blowers & 2W Plant Water System,1,None found,None found,None found,None found (no MTO line: no tied callout and no tag found on a cited sheet),43 22 10,43 22 10 (spec); C4.2 (sheet),1,SUB 43 22 10-01 (spec),tag 0; spec 1; sheet 0,Y,1,ITP 43 22 10-00 (spec),tag 0; spec 1; sheet 0,N,None found (Add. 4 checked; Addenda 1-3 not staged),None found,2,OI-0474 (tag); OI-0290 (spec),#17 (tag),"43-C05 Blowers & 2W Plant Water System — Yard piping, vaults and site utilities",2023-04-01,2023-11-01,2023-03-31,Not started (baseline: no progress entered),Inferred,"main spec pp.472-475 (43 22 10 ¶1.01 B.4); Add. 4 p.3 (C1.3 item: 2W (Air Gap) Water Hot Box orientation adjusted for vehicle traffic); plans_4Part-8 p.1 (C4.2, 2W water from air gap, see C4.3)","Hot box taken as this air gap enclosure (Inferred by name). Located on C1.3 (Civil & Site stack; Add. 4 p.7 reissue), not read here; the Add. 4 C1.3 item is mapped to Civil & Site in 03, so it is noted here, not applied. Issue 12. Cross-lane: Civil & Site. Tag driver: Bid Item 1 (04, Inferred). || [Merge] Exceptions: #17."
L-0227,PROPOSED-EYE-WASH-STATIONS,Wall-mount eye wash stations (quantity and locations not stated),Process-Mechanical,Process & Mechanical,Not stated,New,None found (no sheet cited in rev0),Not linked (PROPOSED tag is not printed; no boxed anchor matched),CWP 43,Blowers & 2W Plant Water System,1,None found,None found,None found,None found (no MTO line: no tied callout and no tag found on a cited sheet),43 22 10,43 22 10 (tag),1,SUB 43 22 10-01 (spec),tag 0; spec 1; sheet 0,Y,1,ITP 43 22 10-00 (spec),tag 0; spec 1; sheet 0,N,None found (Add. 4 checked; Addenda 1-3 not staged),None found,3,OI-0220 (tag); OI-0474 (tag); OI-0290 (spec),#113 (tag); #180 (tag),43-C02 Blowers & 2W Plant Water System — Blower Building,2023-04-01,2023-07-31,2023-03-31,Not started (baseline: no progress entered),Inferred,main spec pp.472-475 (43 22 10 ¶1.01 B.7),"No product requirements in 43 22 10 Part 2; not shown on P&M sheets. Tag driver: Bid Item 1 (04, Inferred). || [Merge] Exceptions: #113, #180."
L-0228,PROPOSED-IPS-CHECK-VALVES,"Influent Pump Station discharge check valves, 4-inch and 6-inch FxF, swing check with external lever, spring and limit switch (MH 259-02ALS)",Process-Mechanical,Process & Mechanical,Influent Pump Station,New,C4.1,Not linked (PROPOSED tag is not printed; no boxed anchor matched),CWP 45,Process Valves,1,None found,None found,None found,None found (no MTO line: no tied callout and no tag found on a cited sheet),45 05 00,45 05 00 (spec); C4.1 (sheet),4,SUB 45 05 00-01 (spec); SUB 45 05 00-02 (spec); SUB 45 05 00-03 (spec); SUB C4.1-01 (sheet),tag 0; spec 3; sheet 1,Y,2,ITP 45 05 00-01 (spec); ITP 45 05 00-02 (spec),tag 0; spec 2; sheet 0,Y,None found (Add. 4 checked; Addenda 1-3 not staged),None found,0,None found,None found,45-C02 Process Valves — Influent pump station and flow splitter,2023-06-01,2023-10-25,2023-03-31,Not started (baseline: no progress entered),Inferred,"plans_4Part-7 p.1 (C4.1 keyed notes 5, 38); main spec pp.476-480 (45 05 00 ¶1.02 A; ¶2.06 A; ¶3.02 A)","Count not stated (one per pump discharge implied by the layout, Inferred). Limit switch wiring - Cross-lane: Electrical & Controls. Tested with the adjacent pipeline. Tag driver: Bid Item 1 (04, Inferred)."
L-0229,PROPOSED-IPS-GATE-VALVES,Influent Pump Station gate valves: 4-inch and 6-inch FxF in the valve vaults; 4-inch and 6-inch buried gate valves FLxMJ with valve boxes,Process-Mechanical,Process & Mechanical,Influent Pump Station,New,C4.1,Not linked (PROPOSED tag is not printed; no boxed anchor matched),CWP 45,Process Valves,1,None found,None found,None found,None found (no MTO line: no tied callout and no tag found on a cited sheet),45 05 00,45 05 00 (spec); C4.1 (sheet),4,SUB 45 05 00-01 (spec); SUB 45 05 00-02 (spec); SUB 45 05 00-03 (spec); SUB C4.1-01 (sheet),tag 0; spec 3; sheet 1,Y,2,ITP 45 05 00-01 (spec); ITP 45 05 00-02 (spec),tag 0; spec 2; sheet 0,Y,None found (Add. 4 checked; Addenda 1-3 not staged),None found,0,None found,None found,45-C02 Process Valves — Influent pump station and flow splitter,2023-06-01,2023-10-25,2023-03-31,Not started (baseline: no progress entered),Inferred,"plans_4Part-7 p.1 (C4.1 keyed notes 6, 16, 39, 45, 55); main spec pp.476-480 (45 05 00 ¶2.02 B; ¶2.03; ¶2.04; ¶3.02 A)","Kennedy resilient-seated NRS (AWWA C509/C515) or equal; buried operating nuts 18-24 in. below grade in valve boxes. Valve IDs per the valve schedule (not in P&M stack). Tag driver: Bid Item 1 (04, Inferred)."
L-0230,PROPOSED-AIR-BUTTERFLY-VALVES,"Aeration air butterfly valves: 3-inch and 6-inch at the biological blowers, 4-inch at the digester blower; Bray Series 31 lug or Dezurik or equal",Process-Mechanical,Process & Mechanical,Blower Building; Digester Blower,New,C6.3; C6.5,Not linked (PROPOSED tag is not printed; no boxed anchor matched),CWP 45,Process Valves,1,None found,None found,None found,None found (no MTO line: no tied callout and no tag found on a cited sheet),45 05 00,45 05 00 (spec); C6.3 (sheet); C6.5 (sheet),3,SUB 45 05 00-01 (spec); SUB 45 05 00-02 (spec); SUB 45 05 00-03 (spec),tag 0; spec 3; sheet 0,Y,2,ITP 45 05 00-01 (spec); ITP 45 05 00-02 (spec),tag 0; spec 2; sheet 0,Y,None found (Add. 4 checked; Addenda 1-3 not staged),None found,0,None found,None found,45-C01 Process Valves — Aerobic digester,2023-04-01,2023-11-01,2023-03-31,Not started (baseline: no progress entered),Inferred,plans_5 p.8 (C6.3 keyed note 3); plans_6 p.2 (C6.5 keyed notes 1-2); main spec pp.476-480 (45 05 00 ¶2.011 B; ¶3.02 A),"416 SS stem, 316 SS disc, food-grade EPDM seat; operators show disc position (¶2.02 A). Tag driver: Bid Item 1 (04, Inferred)."
L-0231,PROPOSED-UV-INTENSITY-SENSORS,"UV intensity sensors (2, one per bank), submersible, with low-UV alarm contact",Controls,Process & Mechanical,UV Disinfection Chamber & Digester,New,None found (no sheet cited in rev0),Not linked (PROPOSED tag is not printed; no boxed anchor matched),CWP 46,Treatment Equipment,1; Equipment Alternate D,None found,None found,None found,None found (no MTO line: no tied callout and no tag found on a cited sheet),46 66 00,46 66 00 (spec),5,SUB 46 66 00-01 (spec); SUB 46 66 00-02 (spec); SUB 46 66 00-03 (spec); SUB 46 66 00-04 (spec); SUB 46 66 00-05 (spec),tag 0; spec 5; sheet 0,Y,2,ITP 46 66 00-01 (spec); ITP 46 66 00-02 (spec),tag 0; spec 2; sheet 0,Y,None found (Add. 4 checked; Addenda 1-3 not staged),None found,2,OI-0221 (tag); OI-0474 (tag),#114 (tag),46-C07 Treatment Equipment — UV chamber and digester,2023-04-01,2023-11-01,2023-03-31,Not started (baseline: no progress entered),Inferred,"main spec pp.502-508 (46 66 00 pp.506-507, monitoring system; ¶1.05 sensor warranty)","10-year warranty from substantial completion; intensity shown in mW/cm2; dry contact for low UV alarm - Cross-lane: Electrical & Controls. Not drawn separately on the P&M sheets. Tag driver: Bid Item 1 (04, Inferred). || [Merge] Exceptions: #114."
L-0232,PROPOSED-UV-TRANSMISSIVITY-ANALYZER,"UV transmissivity analyzer, Hach DR 1900 (1)",Controls,Process & Mechanical,Not stated,New,None found (no sheet cited in rev0),Not linked (PROPOSED tag is not printed; no boxed anchor matched),CWP 46,Treatment Equipment,1,None found,None found,None found,None found (no MTO line: no tied callout and no tag found on a cited sheet),46 66 10,46 66 10 (tag),1,SUB 46 66 10-01 (spec),tag 0; spec 1; sheet 0,Y,1,ITP 46 66 10-01 (spec),tag 0; spec 1; sheet 0,Y,None found (Add. 4 checked; Addenda 1-3 not staged),None found,3,OI-0222 (tag); OI-0440 (tag); OI-0474 (tag),#115 (tag),46-C06 Treatment Equipment — UV chamber,2023-04-01,2023-10-11,2023-03-31,Not started (baseline: no progress entered),Inferred,main spec p.509 (46 66 10 ¶1.01 A; ¶1.02 A; ¶1.03 A; ¶2.01 A; ¶3.01),"1-year extended warranty; 1 day start-up and field testing; 1 day training. Location not stated. Wording error in ¶2.01 A (Issue 34). Tag driver: Bid Item 1 (04, Inferred). || [Merge] Exceptions: #115."
L-0233,PROPOSED-WAS-FLOW-METER,"WAS flow meter, 2-inch, on the WAS line to the digester, per electrical design requirements",Controls,Process & Mechanical,Sludge Pump and Valving Area,New,C6.2,Not linked (PROPOSED tag is not printed; no boxed anchor matched),CWP 26,"Electrical, Instrumentation & Controls",6,None found,None found,None found,None found (no MTO line: no tied callout and no tag found on a cited sheet),None found (no spec section cited in rev0),C6.2 (sheet),0,None found,tag 0; spec 0; sheet 0,N,0,None found,tag 0; spec 0; sheet 0,N,None found (Add. 4 checked; Addenda 1-3 not staged),None found,0,None found,#43 (tag),"26-C11 Electrical, Instrumentation & Controls — Sludge pumps and valving",2023-04-01,2023-11-01,2023-03-14,Not started (baseline: no progress entered),Unresolved,"plans_5 p.7 (C6.2 keyed note 2, between 2-inch unions)",Not in the G0.7 list; type not stated. Bid Item 6 Inferred (electrical design). Cross-lane: Electrical & Controls. Tag driver: Issue 18. || [Merge] Exceptions: #43.
L-0234,PROPOSED-RFP-POLYMER-FLOWMETER,"Rotary press polymer (dilution) flowmeter, 1-inch electromagnetic (E+H 10P), 5-80 gpm, at the flocculator inlet",Controls,Process & Mechanical,Rotary Fan Press System,New,None found (no sheet cited in rev0),Not linked (PROPOSED tag is not printed; no boxed anchor matched),CWP 46,Treatment Equipment,1; Equipment Alternate C,None found,None found,None found,None found (no MTO line: no tied callout and no tag found on a cited sheet),46 76 26; 46 33 33,46 76 26 (spec); 46 33 33 (spec),2,SUB 46 33 33-01 (spec); SUB 46 76 26-01 (spec),tag 0; spec 2; sheet 0,Y,3,ITP 46 76 26-01 (spec); ITP 46 76 26-02 (spec); ITP 46 76 26-03 (spec),tag 0; spec 3; sheet 0,N,None found (Add. 4 checked; Addenda 1-3 not staged),None found,2,OI-0223 (tag); OI-0474 (tag),#116 (tag),46-C01 Treatment Equipment — Sludge dewatering (rotary fan press),2023-11-01,2024-02-09,2023-03-31,Not started (baseline: no progress entered),Inferred,"main spec pp.510-531 (46 76 26 ¶4.2.1 polymer flowmeter); main spec p.481 (46 33 33 item 2.2, flow meter on the flocculator provided with the press)","Not drawn on P&M sheets. Tag driver: Bid Item 1 (04, Inferred). || [Merge] Exceptions: #116."
L-0235,PROPOSED-RFP-INLET-PRESSURE-TRANSMITTER,"Flocculator inlet pressure transmitter, E+H PMC71, 0-30 psi, HART",Controls,Process & Mechanical,Rotary Fan Press System,New,None found (no sheet cited in rev0),Not linked (PROPOSED tag is not printed; no boxed anchor matched),CWP 46,Treatment Equipment,1; Equipment Alternate C,None found,None found,None found,None found (no MTO line: no tied callout and no tag found on a cited sheet),46 76 26,46 76 26 (spec),1,SUB 46 76 26-01 (spec),tag 0; spec 1; sheet 0,Y,3,ITP 46 76 26-01 (spec); ITP 46 76 26-02 (spec); ITP 46 76 26-03 (spec),tag 0; spec 3; sheet 0,N,None found (Add. 4 checked; Addenda 1-3 not staged),None found,2,OI-0224 (tag); OI-0474 (tag),#117 (tag),46-C01 Treatment Equipment — Sludge dewatering (rotary fan press),2023-11-01,2024-02-09,2023-03-31,Not started (baseline: no progress entered),Inferred,main spec pp.510-531 (46 76 26 ¶4.2.2),"Controls the feed pump speed loop (¶4.1). Not drawn on P&M sheets. Tag driver: Bid Item 1 (04, Inferred). || [Merge] Exceptions: #117."
L-0236,PROPOSED-Utility-Transformer-480V,"Utility transformer, 480Y/277V, 225 kVA (new; furnished and installed by OPALCO)",Electrical,Electrical & Controls,Electric Service Area,New,E0.2; E1.1; E6.1,Not linked (PROPOSED tag is not printed; no boxed anchor matched),CWP 26,"Electrical, Instrumentation & Controls","6 (contractor scope only: pad modification, secondary conduit and wire)",None found,None found,None found,None found (no MTO line: no tied callout and no tag found on a cited sheet),26 05 00,26 05 00 (spec); E0.2 (sheet); E1.1 (sheet); E6.1 (sheet),3,SUB 26 05 00-01 (spec); SUB 26 05 00-02 (spec); SUB E6.1-01 (sheet),tag 0; spec 2; sheet 1,Not stated,1,ITP 26 05 00-01 (spec),tag 0; spec 1; sheet 0,Not stated,None found (Add. 4 checked; Addenda 1-3 not staged),OI-0371 (sheet),0,None found,None found,"26-C10 Electrical, Instrumentation & Controls — 480V service, MCC and PLC panel",2023-04-01,2023-10-04,2023-03-14,Not started (baseline: no progress entered),Verified-Visual,"E1.1 key note 1 and plan label ""NEW 225 kVA 480Y/277V TRANSFORMER PER OPALCO"" (plans_9 p.2); E0.2 demo note D1 (plans_8 p.7); E6.1 one-line ""OPALCO PAD MOUNT UTILITY TRANSFORMER 480Y/277V, 3-PHASE 225 kVA"" (plans_10 p.2); 26 05 00 ¶3.03 F.1.b–c and F.2 (pp.279–280): the Utility installs the new 480V transformer on the existing concrete pad, re-uses the primary conductors, makes the primary terminations, provides meter and CTs and terminates the contractor secondary at the transformer",OPALCO furnishes the transformer and does primary wire and connections; contractor modifies the existing pad per OPALCO. Grounding per NEC and OPALCO (E1.1 grounding note G1).; 225 kVA equals the E6.2 MDP total but is below the E6.1 load-calculation demand — see Issues.
L-0237,P-SEC,"Utility secondary conduit and conductors, new utility transformer to service equipment (by contractor)",Electrical,Electrical & Controls,Electric Service Area,New,E1.1; E6.1; E6.3,"E1.1 p.66 [331.74,420.72,347.11,425.75] text-layer (tag); E6.1 p.74 [100.08,70.08,115.45,75.11] text-layer (tag); E6.3 p.76 [628.20,335.88,644.58,339.84] ocr (+1 read) (tag)",CWP 26,"Electrical, Instrumentation & Controls",6,1,EA,MTO-0057 (tag),Verified — 1 line totaled,26 05 19; 26 05 33; 26 05 00,E1.1 (tag); E6.1 (tag); E6.3 (tag); 26 05 19 (spec); 26 05 33 (spec); 26 05 00 (spec),6,SUB 26 05 00-01 (spec); SUB 26 05 00-02 (spec); SUB 26 05 19-01 (spec); SUB 26 05 33-01 (spec); SUB 26 05 33-02 (spec); SUB E6.1-01 (sheet),tag 0; spec 5; sheet 1,N,3,ITP 26 05 00-01 (spec); ITP 26 05 19-01 (spec); ITP 26 05 33-01 (spec),tag 0; spec 3; sheet 0,Y,None found (Add. 4 checked; Addenda 1-3 not staged),OI-0371 (sheet),0,None found,None found,"26-C10 Electrical, Instrumentation & Controls — 480V service, MCC and PLC panel",2023-04-01,2023-10-04,2023-03-14,Not started (baseline: no progress entered),Verified-Visual,"E1.1 key note 1 (""secondary conduit and wire by contractor"") and plan conduit tag P-SEC (plans_9 p.2); E6.3 P-SEC (2) 2"" 4 ea #3/0, no ground, utility transformer secondary to CT enclosure (plans_10 p.4); 26 05 00 ¶3.03 E.1 (p.279): contractor provides the new underground secondary, conduit and conductors, from the existing transformer pad to the CT enclosure, service-rated ATS and 400 A distribution panel; Utility terminates it at the transformer (¶3.03 F.2.c); Testing/startup: 26 05 19 ¶3.07 pp.286–288 (insulation resistance 1,000 VDC, 1 megohm min; continuity; thermal imaging; ground rods 25 ohms max, composite 15 ohms)",Carried as a row because key note 1 assigns it as contractor scope. Sizing per E6.3.
L-0238,PROPOSED-CT-Enclosure-and-Meter-Base,"CT enclosure, landing pads and meter base (new; meter and CTs by utility)",Electrical,Electrical & Controls,Electric Service Area,New,E0.2; E1.1; E6.1; E6.3,Not linked (PROPOSED tag is not printed; no boxed anchor matched),CWP 26,"Electrical, Instrumentation & Controls",6,None found,None found,None found,None found (no MTO line: no tied callout and no tag found on a cited sheet),26 05 00,26 05 00 (tag); E0.2 (sheet); E1.1 (sheet); E6.1 (sheet); E6.3 (sheet),3,SUB 26 05 00-01 (spec); SUB 26 05 00-02 (spec); SUB E6.1-01 (sheet),tag 0; spec 2; sheet 1,Not stated,1,ITP 26 05 00-01 (spec),tag 0; spec 1; sheet 0,Not stated,None found (Add. 4 checked; Addenda 1-3 not staged),OI-0371 (sheet),0,None found,None found,"26-C10 Electrical, Instrumentation & Controls — 480V service, MCC and PLC panel",2023-04-01,2023-10-04,2023-03-14,Not started (baseline: no progress entered),Verified,"E1.1 key note 2 (plans_9 p.2); E0.2 demo note D7 (plans_8 p.7); E6.1 one-line ""CURRENT TRANSFORMER ENCLOSURE PER OPALCO REQUIREMENTS"" and utility meter (plans_10 p.2); 26 05 00 ¶3.03 E.3 (p.279): contractor provides the 480V CT enclosure, landing pads, mounting rack and meter bases per Utility requirements; Utility provides CTs and meter (¶3.03 F.2)",Per OPALCO requirements.
L-0239,ATS,"Automatic transfer switch, service-entrance rated, 480Y/277V, 400 A (permanent)",Electrical,Electrical & Controls,Electric Service Area,New,E1.1; E6.1; E6.3; E7.3,"E1.1 p.66 [223.92,379.14,239.00,384.17] text-layer (+3 reads) (tag); E6.1 p.74 [180.36,70.08,195.17,75.11] text-layer (+1 read) (tag); E6.3 p.76 [457.20,275.94,467.28,279.90] ocr (+5 reads) (tag)",CWP 26,"Electrical, Instrumentation & Controls",6; 18 — Unresolved (see 04) for the temporary-generator connection,1,EA,MTO-0058 (tag),Verified — 1 line totaled,26 36 00,26 05 00 (tag); 26 32 13 (tag); 26 36 00 (tag); 26 80 00 (tag); Add. 4 Generator Exhibit (tag); E0.2 (tag); E1.1 (tag); E6.1 (tag); E7.3 (tag); E6.3 (sheet),3,SUB 26 36 00-01 (spec); SUB 26 36 00-02 (spec); SUB E6.1-01 (sheet),tag 0; spec 2; sheet 1,Y,4,ITP 26 80 00-02 (tag); ITP Add. 4 Generator Exhibit-01 (tag); ITP 26 36 00-01 (spec); ITP 26 36 00-02 (spec),tag 2; spec 2; sheet 0,Y,"Add. 4 p.1, Clarification 5 — Add. 4 governs",OI-0371 (sheet),3,OI-0002 (tag); OI-0465 (tag); OI-0370 (sheet),#66 (tag); #255 (tag),"26-C10 Electrical, Instrumentation & Controls — 480V service, MCC and PLC panel",2023-04-01,2023-10-04,2023-03-14,Not started (baseline: no progress entered),Unresolved,"E1.1 plan label ""480Y/277V 400 AMP SERVICE ENTRANCE AUTOMATIC TRANSFER SWITCH"" (plans_9 p.2); Add. 4 p.1, Clarification 5; E6.1 one-line ""400A SERVICE ENTRANCE AUTOMATIC TRANSFER SWITCH 4W, 3 POLE NEMA 12, DELAYED OPEN TRANSITION"" (plans_10 p.2); E6.3 P-ATS, P-MDP, C-ATS (plans_10 p.4); E7.3 inputs ""UTILITY POWER NORMAL"" and ""EMERGENCY POSITION"" (plans_10 p.8); 26 05 00 ¶3.03 E.1 ""new Service Rated ATS panel"" and ¶3.03 G service equipment UL-labeled ""Suitable for Use as Service Equipment"" (pp.279–280); 26 80 00 ¶3.09 K (p.376): ATS status wired to the PLC; Submittal: 26 36 00 ¶1.03–1.05 p.338 (action, informational, closeout submittals); Testing/startup: 26 36 00 ¶2.05 and ¶3.03–3.04 pp.345–347 (factory dielectric test; field tests by manufacturer representative with reports)","Add. 4 Clarification 5: the transfer switch is the permanent ATS (not a long-lead item); the temporary back-up generator connects to it until the permanent genset arrives; test generator connections and automatic load transfer. Status New inferred: 480Y/277V equipment belongs to the new service (E0.2 gen. note 1) and the existing ATS is demolished (E0.2 D4).; E6.1: 4-wire, 3-pole, NEMA 12, delayed open transition, 400/3. E6.3: P-ATS (2) 2"" 4 ea #3/0 from the CT enclosure; P-MDP (2) 2"" 4 ea #3/0 + #3 G to MDP; C-ATS 24 VDC 8 #14 from the generator control panel.; 26 36 00: basis of design Cummins OTECSE, NEMA 12, PowerCommand 40-01; programmed transition 0–60 s; 100% neutral bus; other makes need approval two weeks before bid. || [Merge] Exceptions: #66, #255."
L-0240,MDP,"Main distribution panel MDP, 480Y/277V 3-ph 4-W, 400 A bus, main lugs only, 42,000 AIC, surface mounted, with SPD",Electrical,Electrical & Controls,Electric Service Area,New,E1.1; E6.1; E6.2; E6.3,"E1.1 p.66 [433.26,330.00,449.46,335.03] text-layer (+1 read) (tag); E6.1 p.74 [323.10,79.08,339.30,84.11] text-layer (+1 read) (tag); E6.2 p.75 [599.89,354.71,622.24,364.77] text-layer (+2 reads) (tag); E6.3 p.76 [627.84,348.30,644.76,356.58] ocr (+1 read) (tag)",CWP 26,"Electrical, Instrumentation & Controls",6,1,EA,MTO-0059 (tag),Verified — 1 line totaled,26 24 16,26 05 00 (tag); 26 24 16 (tag); E1.1 (tag); E6.1 (tag); E6.2 (tag); E6.3 (sheet),3,SUB E6.1-01 (tag); SUB E6.2-01 (tag); SUB 26 24 16-01 (spec),tag 2; spec 1; sheet 0,Y,1,ITP 26 24 16-01 (spec),tag 0; spec 1; sheet 0,Y,None found (Add. 4 checked; Addenda 1-3 not staged),OI-0371 (sheet),0,None found,None found,"26-C10 Electrical, Instrumentation & Controls — 480V service, MCC and PLC panel",2023-04-01,2023-10-04,2023-03-14,Not started (baseline: no progress entered),Inferred,"E1.1 plan label ""480Y/277V 400 AMP PANEL"" tag MDP (plans_9 p.2); E6.1 one-line (plans_10 p.2); E6.2 Panel MDP schedule dated September 15, 2022 (plans_10 p.3); E6.3 P-MDP, P-MCC, P-TSP (plans_10 p.4); Submittal: 26 24 16 ¶1.02 p.300 (catalog data per 26 05 00); Testing/startup: 26 24 16 ¶3.03 pp.303–304 (inspection, phase load balancing within 20%, torque check)","Status New inferred: 480Y/277V equipment belongs to the new service (E0.2 gen. note 1). Feeds MCC (P-MCC) and transformer TS (P-TSP).; Circuits: MCC 400/3 (60,000 VA/phase), transformer TS 125/3 (15,000 VA/phase); rest spaces. Schedule total 225.0 kVA, 270.6 A vs E6.1 demand 355.7 A — see Issues.; 26 24 16: 25,000 AIC minimum at 480 V (MDP schedule shows 42,000 AIC); surge arrester with indicator on every panel."
L-0241,TS,"Transformer TS, 75 kVA, 480–208Y/120V",Electrical,Electrical & Controls,Electric Service Area,New,E1.1; E6.1; E6.3,"E1.1 p.66 [623.52,313.62,629.95,318.65] text-layer (tag); E6.1 p.74 [626.58,67.74,633.01,72.77] text-layer (tag); E6.3 p.76 [910.98,583.56,917.64,587.52] ocr (+3 reads) (tag)",CWP 26,"Electrical, Instrumentation & Controls",6,1,EA,MTO-0060 (tag),Verified — 1 line totaled,26 22 13,26 22 13 (tag); 40 05 71 (tag); E1.1 (tag); E6.1 (tag); E6.2 (tag); E6.3 (sheet),2,SUB 26 22 13-01 (spec); SUB E6.1-01 (sheet),tag 0; spec 1; sheet 1,Y,0,None found,tag 0; spec 0; sheet 0,N,None found (Add. 4 checked; Addenda 1-3 not staged),OI-0371 (sheet),0,None found,None found,"26-C10 Electrical, Instrumentation & Controls — 480V service, MCC and PLC panel",2023-04-01,2023-10-04,2023-03-14,Not started (baseline: no progress entered),Inferred,"E1.1 plan label ""75 kVA 480-208Y/120V"" tag TS (plans_9 p.2); grounding note G3; E6.1 one-line (plans_10 p.2); E6.3 P-TSP 1-1/2"" 3 #1 + #6 G, P-TSS (2) 2"" 4 ea #3/0 + #3 G (plans_10 p.4); Submittal: 26 22 13 ¶1.05 p.297 (catalog data per 26 05 00)","Tag TS is the transformer, not a transfer switch (Verified-Visual). Feeds the existing 208Y/120V 400 A panel via P-TSS. Separately derived system grounding (G3) applies to this unit by context (Inferred). Status New inferred: new service equipment.; Primary breaker MDP 125/3. E6.3 names the secondary load ""existing 208Y/120V 400A shop panel"" (the Office Building I-Line panel on E6.1).; 26 22 13: 45 dB maximum and 98.0% minimum efficiency for 75 kVA three-phase; floor-mounted on vibration isolators; separately derived system."
L-0242,GEN,"Standby diesel generator, 480Y/277V, 125 kW / 156 kVA, sound-attenuated outdoor enclosure with sub-base diesel fuel tank (permanent)",Electrical,Electrical & Controls,Electric Service Area,New,E1.1; E6.1; E6.3; E7.3; E10.3,"E1.1 p.66 [158.04,510.18,168.94,515.21] text-layer (+2 reads) (tag); E6.1 p.74 [254.52,150.00,265.42,155.03] text-layer (+4 reads) (tag); E6.3 p.76 [628.20,365.94,644.58,369.90] ocr (+3 reads) (tag)",CWP 26,"Electrical, Instrumentation & Controls","Unresolved — 1 or 6 (see 04, Other bid-item conflicts #1); Equipment Alternate E",1,EA,MTO-0061 (tag),Verified — 1 line totaled,26 32 13,26 32 13 (tag); E0.2 (tag); E1.1 (tag); E10.3 (tag); E6.1 (tag); E7.3 (tag); E6.3 (sheet),3,SUB 26 32 13-01 (spec); SUB 26 32 13-02 (spec); SUB E6.1-01 (sheet),tag 0; spec 2; sheet 1,Y,1,ITP 26 32 13-01 (spec),tag 0; spec 1; sheet 0,Y,None found (Add. 4 checked; Addenda 1-3 not staged),OI-0001 (tag); OI-0371 (sheet),2,OI-0325 (tag); OI-0370 (sheet),#65 (tag); #257 (tag),"26-C07 Electrical, Instrumentation & Controls — Permanent standby generator",2024-03-01,2024-04-30,2023-03-14,Not started (baseline: no progress entered),Unresolved,"E1.1 plan label ""NEW 480Y/277V 125 kW DIESEL GENERATOR"" (plans_9 p.2); E6.1 one-line ""STANDBY DIESEL GENERATOR IN SOUND ATTENUATED OUTDOOR ENCLOSURE WITH SUB BASE DIESEL FUEL TANK 480Y/277V 3-PHASE 125kW / 156kVA"" and load calculations (plans_10 p.2); E6.3 P-GEN, C-GEN (plans_10 p.4); E7.3 inputs ""GENERATOR RUNNING"" and ""GENERATOR ALARM"" (plans_10 p.8); E10.3 elevations and general notes 1–3 (plans_12 p.8); 26 80 00 ¶3.09 K (p.376): generator status wired to the PLC; Submittal: 26 32 13 ¶1.04–1.08 pp.322–324 (action, informational, closeout, maintenance-material submittals); Testing/startup: 26 32 13 ¶3.06–3.07 p.336 (field quality control; on-site acceptance with full-load resistive load bank, 2 h minimum)","Detail 1/E10.3. Pad: ""concrete generator pad per civil"" — Cross-lane: Civil & Site / Structural & Building. Pad rebar bonded to generator and grounding electrode system (G2). 120 V 20 A auxiliary circuit for battery charger and coolant heater (E1.1 key note 4; LP1 circuit 8 on E2.2). Add. 4 Clarification 5: temporary generator serves until this genset arrives.; Output breaker 250/3; P-GEN 3"" 4 #250 kcmil + #4 G; C-GEN 24 VDC 8 #14 to the PLC (E6.3). E6.1 generator load 188.0 A = 156 kVA at 480 V.; E10.3: basis of design Cummins C125D6D, EPA Tier 3, 72 dBA at 7 m; sub-base dual-wall tank, 351 gal usable, 35 h at full load (10.1 gal/hr), leak detection, high fuel alarm, low fuel switch; pad per civil specifications.; 26 32 13: pre-approved Cummins, Kohler, Caterpillar, Generac; NFPA 110 Level 2; UL 2200; Tier 3; 35 h tank at 100% load; full-load resistive load bank test, 2 h minimum; full tank at commissioning; 2-year warranty. || [Merge] Exceptions: #65, #257."
L-0243,P-TPS,"Replacement 200 A 208Y/120V feeder, existing switchgear to Panel TPS",Electrical,Electrical & Controls,Site — Electric Service Area to existing Treatment Building,New,E0.2; E1.1; E4.1; E6.1; E6.3,"E1.1 p.66 [817.92,72.42,832.73,77.45] text-layer (tag); E4.1 p.70 [98.28,367.62,113.09,372.65] text-layer (tag); E6.1 p.74 [696.60,147.66,711.41,152.69] text-layer (tag); E6.3 p.76 [627.84,588.60,644.22,596.88] ocr (+1 read) (tag)",CWP 26,"Electrical, Instrumentation & Controls",6,1,EA,MTO-0062 (tag),Verified — 1 line totaled,26 05 19; 26 05 33,E1.1 (tag); E4.1 (tag); E6.3 (tag); 26 05 19 (spec); 26 05 33 (spec); E0.2 (sheet); E6.1 (sheet),5,SUB 26 05 19-01 (spec); SUB 26 05 33-01 (spec); SUB 26 05 33-02 (spec); SUB E4.1-01 (sheet); SUB E6.1-01 (sheet),tag 0; spec 3; sheet 2,N,3,ITP 26 05 19-01 (spec); ITP 26 05 33-01 (spec); ITP E4.1-01 (sheet),tag 0; spec 2; sheet 1,Y,None found (Add. 4 checked; Addenda 1-3 not staged),OI-0371 (sheet),1,OI-0378 (sheet),None found,"26-C15 Electrical, Instrumentation & Controls — Existing dewatering / treatment building",2023-04-01,2024-02-09,2023-03-14,Not started (baseline: no progress entered),Verified,"E1.1 key note 6 and plan conduit tag (plans_9 p.2); E0.2 demo note D5 (plans_8 p.7); E6.1 one-line: 200/3 in the Office Building 400 A I-Line panel to Panel TPS (plans_10 p.2); E6.3 P-TPS 208 V 2"" 4 #3/0 + #6 G (plans_10 p.4); E4.1 plan (plans_9 p.6); Testing/startup: 26 05 19 ¶3.07 pp.286–288 (insulation resistance 1,000 VDC, 1 megohm min; continuity; thermal imaging; ground rods 25 ohms max, composite 15 ohms)","Replaces the demolished existing 200 A feeder. Source named only as ""existing switchgear"". Routing per site plan and E6.3.; Source named three ways — ""existing switchgear"" (E0.2 D5, E1.1 key note 6), ""existing 208Y/120V shop SWBD"" (E6.3), and the 400 A I-Line distribution panel (E6.1 one-line); same equipment by the one-line (Inferred)."
L-0244,PROPOSED-Service-Area-Grounding-Electrode-System,"Grounding electrode systems at the new service: utility transformer grounding, generator pad rebar bond, separately derived system grounding",Electrical,Electrical & Controls,Electric Service Area,New,E1.1; E6.1; E10.1,Not linked (PROPOSED tag is not printed; no boxed anchor matched),CWP 26,"Electrical, Instrumentation & Controls",6,None found,None found,None found,None found (no MTO line: no tied callout and no tag found on a cited sheet),26 05 26,26 05 26 (spec); E1.1 (sheet); E6.1 (sheet); E10.1 (sheet),1,SUB E6.1-01 (sheet),tag 0; spec 0; sheet 1,N,1,ITP 26 05 26-01 (spec),tag 0; spec 1; sheet 0,Y,None found (Add. 4 checked; Addenda 1-3 not staged),OI-0364 (sheet); OI-0371 (sheet),0,None found,None found,"26-C07 Electrical, Instrumentation & Controls — Permanent standby generator",2024-03-01,2024-04-30,2023-03-14,Not started (baseline: no progress entered),Inferred,"E1.1 grounding notes G1–G4 (plans_9 p.2); E6.1 one-line: grounding electrode system per NEC Art. 250 at the ATS, #1/0 as printed, detail 1/E10.1 (plans_10 p.2); E10.1 grounding system and ground rod details (plans_12 p.6); 26 05 26 ¶2.01 D (p.289): copper-clad rods 3/4 in x 8 ft; 26 05 19 ¶3.07 G.3 (p.288): 25 ohms maximum per rod, 15 ohms composite; Testing/startup: 26 05 19 ¶3.07 pp.286–288 (insulation resistance 1,000 VDC, 1 megohm min; continuity; thermal imaging; ground rods 25 ohms max, composite 15 ohms)",Tied to the existing building grounding electrode system (G4). Separately derived system grounding assigned to TS by context (Inferred).
L-0245,PROPOSED-Existing-Utility-Transformer-208V,"Existing OPALCO pad-mount utility transformer, 208Y/120V 3-ph, 45 kVA",Electrical,Electrical & Controls,Electric Service Area,Demolished,E0.2; E1.1,Not linked (PROPOSED tag is not printed; no boxed anchor matched),CWP 26,"Electrical, Instrumentation & Controls",6 (coordination only),None found,None found,None found,None found (no MTO line: no tied callout and no tag found on a cited sheet),26 05 00,26 05 00 (spec); E0.2 (sheet); E1.1 (sheet),2,SUB 26 05 00-01 (spec); SUB 26 05 00-02 (spec),tag 0; spec 2; sheet 0,Not stated,1,ITP 26 05 00-01 (spec),tag 0; spec 1; sheet 0,Not stated,None found (Add. 4 checked; Addenda 1-3 not staged),None found,0,None found,None found,"26-C04 Electrical, Instrumentation & Controls — Existing service equipment removal",2023-10-05,2023-10-31,2023-03-14,Not started (baseline: no progress entered),Verified,E0.2 demo note D1 and one-line (plans_8 p.7); E1.1 key note 1 (plans_9 p.2); 26 05 00 ¶3.03 F.1.a (main spec p.279): the Utility removes the existing 208V transformer from the existing concrete pad; ¶3.03 D: the contractor coordinates demolition with the Utility,Removed by the Utility (OPALCO) per 26 05 00 ¶3.03 F.1.a; contractor coordinates and sequences the outage. Resolves the batch 1 issue on who removes it.
L-0246,GEN (E),"Existing standby diesel generator, 208Y/120V 3-ph, 30 kW / 37.5 kVA",Electrical,Electrical & Controls,Electric Service Area,Demolished,E0.2,None found (tag searched on every page),CWP 26,"Electrical, Instrumentation & Controls",6,None found,None found,None found,None found (no MTO line: no tied callout and no tag found on a cited sheet),26 05 00,E0.2 (tag); 26 05 00 (spec),2,SUB 26 05 00-01 (spec); SUB 26 05 00-02 (spec),tag 0; spec 2; sheet 0,Not stated,1,ITP 26 05 00-01 (spec),tag 0; spec 1; sheet 0,Not stated,None found (Add. 4 checked; Addenda 1-3 not staged),None found,0,None found,#150 (tag),"26-C03 Electrical, Instrumentation & Controls — Existing generator, switchgear and fuel tank removal",2024-05-01,2024-05-31,2023-03-14,Not started (baseline: no progress entered),Verified-Visual,"E0.2 one-line and demo note D2 (plans_8 p.7); 26 05 00 ¶3.03 E.4 (main spec p.279): contractor demolishes the existing 208V service — secondary raceway and conductors, CT enclosure, meter base, generator and ATS","Removed with its fuel tank, exhaust and louvers (separate row). || [Merge] Exceptions: #150."
L-0247,PROPOSED-Existing-Generator-Fuel-Tank-Exhaust-Louvers,"Existing diesel fuel tank, generator exhaust system and louvers",Electrical,Electrical & Controls,Electric Service Area,Demolished,E0.2,Not linked (PROPOSED tag is not printed; no boxed anchor matched),CWP 13,Pre-Engineered Metal Building,6,None found,None found,None found,None found (no MTO line: no tied callout and no tag found on a cited sheet),None found (no spec section cited in rev0),E0.2 (sheet),0,None found,tag 0; spec 0; sheet 0,Not stated,0,None found,tag 0; spec 0; sheet 0,Not stated,None found (Add. 4 checked; Addenda 1-3 not staged),None found,0,None found,#28 (tag),"13-C02 Pre-Engineered Metal Building — Existing generator, switchgear and fuel tank removal",2024-05-01,2024-05-31,2023-03-31,Not started (baseline: no progress entered),Verified,"E0.2 demo note D2 and plan label ""DIESEL FUEL TANK, EXHAUST, LOUVERS (E)"" (plans_8 p.7)",Building openings repaired per civil/architectural — Cross-lane: Structural & Building / Civil & Site. || [Merge] Exceptions: #28.
L-0248,SES (E),"Existing 300 A service entrance breaker, SUSE rated, NEMA 3R",Electrical,Electrical & Controls,Electric Service Area,Demolished,E0.2,None found (tag searched on every page),CWP 26,"Electrical, Instrumentation & Controls",6,None found,None found,None found,None found (no MTO line: no tied callout and no tag found on a cited sheet),26 05 00,E0.2 (tag); 26 05 00 (spec),2,SUB 26 05 00-01 (spec); SUB 26 05 00-02 (spec),tag 0; spec 2; sheet 0,Not stated,1,ITP 26 05 00-01 (spec),tag 0; spec 1; sheet 0,Not stated,None found (Add. 4 checked; Addenda 1-3 not staged),None found,0,None found,#150 (tag),"26-C03 Electrical, Instrumentation & Controls — Existing generator, switchgear and fuel tank removal",2024-05-01,2024-05-31,2023-03-14,Not started (baseline: no progress entered),Verified-Visual,"E0.2 one-line; demo note D4 (plans_8 p.7); 26 05 00 ¶3.03 E.4 (main spec p.279): contractor demolishes the existing 208V service — secondary raceway and conductors, CT enclosure, meter base, generator and ATS",[Merge] Exceptions: #150.
L-0249,ATS (E),"Existing automatic transfer switch, 4-wire, 3-pole",Electrical,Electrical & Controls,Electric Service Area,Demolished,E0.2,"E0.2 p.63 [232.33,247.74,242.11,252.77] text-layer (tag)",CWP 26,"Electrical, Instrumentation & Controls",6,1,EA,MTO-0063 (tag),Verified — 1 line totaled,26 05 00,E0.2 (tag); 26 05 00 (spec),2,SUB 26 05 00-01 (spec); SUB 26 05 00-02 (spec),tag 0; spec 2; sheet 0,Not stated,3,ITP 26 80 00-02 (tag); ITP Add. 4 Generator Exhibit-01 (tag); ITP 26 05 00-01 (spec),tag 2; spec 1; sheet 0,Not stated,None found (Add. 4 checked; Addenda 1-3 not staged),None found,0,None found,#150 (tag),"26-C03 Electrical, Instrumentation & Controls — Existing generator, switchgear and fuel tank removal",2024-05-01,2024-05-31,2023-03-14,Not started (baseline: no progress entered),Verified-Visual,"E0.2 one-line; demo note D4 (plans_8 p.7); 26 05 00 ¶3.03 E.4 (main spec p.279): contractor demolishes the existing 208V service — secondary raceway and conductors, CT enclosure, meter base, generator and ATS",[Merge] Exceptions: #150.
L-0250,PROPOSED-Existing-CT-Enclosure-and-Meter,Existing current transformer enclosure and OPALCO utility meter,Electrical,Electrical & Controls,Electric Service Area,Demolished,E0.2,Not linked (PROPOSED tag is not printed; no boxed anchor matched),CWP 26,"Electrical, Instrumentation & Controls",6,None found,None found,None found,None found (no MTO line: no tied callout and no tag found on a cited sheet),26 05 00,E0.2 (tag); 26 05 00 (spec),2,SUB 26 05 00-01 (spec); SUB 26 05 00-02 (spec),tag 0; spec 2; sheet 0,Not stated,1,ITP 26 05 00-01 (spec),tag 0; spec 1; sheet 0,Not stated,None found (Add. 4 checked; Addenda 1-3 not staged),None found,0,None found,None found,"26-C04 Electrical, Instrumentation & Controls — Existing service equipment removal",2023-10-05,2023-10-31,2023-03-14,Not started (baseline: no progress entered),Verified,"E0.2 demo note D3 and one-line (plans_8 p.7); 26 05 00 ¶3.03 E.4 (main spec p.279): contractor demolishes the existing 208V service — secondary raceway and conductors, CT enclosure, meter base, generator and ATS",Removed after the new service is operational (D3).
L-0251,PROPOSED-Existing-Meter-Base-and-Wall-Raceway,Existing obsolete meter base and raceway on building wall,Electrical,Electrical & Controls,Electric Service Area,Demolished,E0.2,Not linked (PROPOSED tag is not printed; no boxed anchor matched),CWP 26,"Electrical, Instrumentation & Controls",6,None found,None found,None found,None found (no MTO line: no tied callout and no tag found on a cited sheet),26 05 00,26 05 00 (spec); E0.2 (sheet),2,SUB 26 05 00-01 (spec); SUB 26 05 00-02 (spec),tag 0; spec 2; sheet 0,Not stated,1,ITP 26 05 00-01 (spec),tag 0; spec 1; sheet 0,Not stated,None found (Add. 4 checked; Addenda 1-3 not staged),None found,0,None found,None found,"26-C04 Electrical, Instrumentation & Controls — Existing service equipment removal",2023-10-05,2023-10-31,2023-03-14,Not started (baseline: no progress entered),Verified,"E0.2 demo note D7 (plans_8 p.7); 26 05 00 ¶3.03 E.4 (main spec p.279): contractor demolishes the existing 208V service — secondary raceway and conductors, CT enclosure, meter base, generator and ATS",Keep the existing telephone junction box and telephone service (D7).
L-0252,PROPOSED-Existing-200A-Feeder-to-Panel-TPS,Existing 200 A 208Y/120V power feeder to Panel TPS,Electrical,Electrical & Controls,Site,Demolished,E0.2; E1.1,Not linked (PROPOSED tag is not printed; no boxed anchor matched),CWP 26,"Electrical, Instrumentation & Controls",6,None found,None found,None found,None found (no MTO line: no tied callout and no tag found on a cited sheet),None found (no spec section cited in rev0),E0.2 (sheet); E1.1 (sheet),0,None found,tag 0; spec 0; sheet 0,Not stated,0,None found,tag 0; spec 0; sheet 0,Not stated,None found (Add. 4 checked; Addenda 1-3 not staged),None found,0,None found,None found,"26-C04 Electrical, Instrumentation & Controls — Existing service equipment removal",2023-10-05,2023-10-31,2023-03-14,Not started (baseline: no progress entered),Verified,E0.2 demo note D5 (plans_8 p.7); E1.1 key note 6 (plans_9 p.2),Replaced by P-TPS.
L-0253,TPS,"Panel TPS, 208Y/120V 3-ph 4-W, 200 A (kept; re-fed)",Electrical,Electrical & Controls,Existing Treatment Building,Existing,E0.2; E1.1; E4.1; E6.1,"E0.2 p.63 [469.62,130.02,481.32,135.05] text-layer (+1 read) (tag); E1.1 p.66 [817.92,72.42,832.73,77.45] text-layer (+1 read) (tag); E4.1 p.70 [98.28,367.62,113.09,372.65] text-layer (tag); E6.1 p.74 [686.95,160.80,696.73,165.83] text-layer (+1 read) (tag)",CWP 26,"Electrical, Instrumentation & Controls",6,1,EA,MTO-0064 (tag),Verified — 1 line totaled,None found (no spec section cited in rev0),E0.2 (tag); E1.1 (tag); E6.1 (tag); E4.1 (sheet),2,SUB E4.1-01 (sheet); SUB E6.1-01 (sheet),tag 0; spec 0; sheet 2,Not stated,1,ITP E4.1-01 (sheet),tag 0; spec 0; sheet 1,Not stated,None found (Add. 4 checked; Addenda 1-3 not staged),OI-0371 (sheet),1,OI-0378 (sheet),None found,"26-C15 Electrical, Instrumentation & Controls — Existing dewatering / treatment building",2023-04-01,2024-02-09,2023-03-14,Not started (baseline: no progress entered),Verified,"E0.2 label ""MAINTAIN PANEL TPS AND SUB PANEL (E)"" and one-line (plans_8 p.7); E1.1 key note 6 (plans_9 p.2); E4.1 label ""RE-FEED EXISTING 208Y/120V POWER PANEL"" (plans_9 p.6); E6.1 one-line (plans_10 p.2)",New feeder P-TPS. Its 208Y/120V 100 A load center is also kept (not carried).
L-0254,PROPOSED-Existing-208V-400A-Distribution-Panel,"Existing 208Y/120V 400 A distribution panel (Square-D I-Line), Office Building, re-fed from transformer TS",Electrical,Electrical & Controls,Existing Office Building,Existing,E0.2; E1.1; E6.1; E6.3,Not linked (PROPOSED tag is not printed; no boxed anchor matched),CWP 26,"Electrical, Instrumentation & Controls",6,None found,None found,None found,None found (no MTO line: no tied callout and no tag found on a cited sheet),None found (no spec section cited in rev0),E0.2 (sheet); E1.1 (sheet); E6.1 (sheet); E6.3 (sheet),1,SUB E6.1-01 (sheet),tag 0; spec 0; sheet 1,Not stated,0,None found,tag 0; spec 0; sheet 0,Not stated,None found (Add. 4 checked; Addenda 1-3 not staged),OI-0371 (sheet),0,None found,None found,"26-C15 Electrical, Instrumentation & Controls — Existing dewatering / treatment building",2023-04-01,2024-02-09,2023-03-14,Not started (baseline: no progress entered),Inferred,"E1.1 plan label ""EXISTING 208Y/120V 400 AMP PANEL"" (plans_9 p.2); E0.2 one-line ""DISTRIBUTION PANEL - 400 AMP - SQUARE-D I-LINE - 208Y/120V - OFFICE BUILDING"" (plans_8 p.7); E6.1 one-line (plans_10 p.2); E6.3 P-TSS destination ""EXISTING 208Y/120V 400A SHOP PANEL"" (plans_10 p.4)","Same panel on both sheets by matching voltage and rating (Inferred). New feeder P-TSS from TS. Downstream Office Building switchboard and Lab/SP/SH panels are kept and not carried.; E6.1 breakers: 200/3 Panel TPS, 200/3, 100/3, 100/3 (100 A switchboard feeding the Lab panel and Panels SP, SH). ""Shop panel"" (E6.3) matches the Office/Lab/Shop Building name on E0.2."
L-0255,PROPOSED-Existing-Grounding-Electrode-System,Existing grounding electrode system (kept; new equipment and electrodes bonded to it),Electrical,Electrical & Controls,Electric Service Area / existing buildings,Existing,E0.2; E1.1,Not linked (PROPOSED tag is not printed; no boxed anchor matched),CWP 26,"Electrical, Instrumentation & Controls",6,None found,None found,None found,None found (no MTO line: no tied callout and no tag found on a cited sheet),26 05 26,E0.2 (tag); E1.1 (tag); 26 05 26 (spec),0,None found,tag 0; spec 0; sheet 0,N,1,ITP 26 05 26-01 (spec),tag 0; spec 1; sheet 0,N,None found (Add. 4 checked; Addenda 1-3 not staged),None found,0,None found,None found,"26-C10 Electrical, Instrumentation & Controls — 480V service, MCC and PLC panel",2023-04-01,2023-10-04,2023-03-14,Not started (baseline: no progress entered),Verified,E0.2 demo note D6 (plans_8 p.7); E1.1 grounding note G4 (plans_9 p.2),None found (no notes in rev0)
L-0256,BL-1,"Aeration Blower No.1 — cell aeration blower, Cell 1, 20 HP, VFD in MCC",Process-Mechanical,Electrical & Controls,Blower Building,New,E2.1; E6.1; E6.3; E7.1; E7.2; E7.3; E7.4; E9.1; E9.2,"E2.1 p.67 [313.38,574.80,324.00,579.83] text-layer (tag); E6.1 p.74 [798.12,501.54,808.74,506.57] text-layer (+1 read) (tag); E6.3 p.76 [628.20,415.80,643.86,424.26] ocr (+1 read) (tag)",CWP 43,Blowers & 2W Plant Water System,"1 (equipment, Inferred per 04); 6 (power and control)",1,EA,MTO-0065 (tag),Verified — 1 line totaled,None found (no spec section cited in rev0),E2.1 (tag); E6.1 (tag); E7.3 (tag); E7.4 (tag); E9.1 (tag); E6.3 (sheet); E7.1 (sheet); E7.2 (sheet); E9.2 (sheet),3,SUB E6.1-01 (tag); SUB E7.2-01 (sheet); SUB E9.2-01 (sheet),tag 1; spec 0; sheet 2,Not stated,1,ITP E9.2-01 (sheet),tag 0; spec 0; sheet 1,Not stated,None found (Add. 4 checked; Addenda 1-3 not staged),OI-0371 (sheet),2,OI-0370 (sheet); OI-0469 (sheet),#18 (tag); #202 (tag); #215 (tag),43-C02 Blowers & 2W Plant Water System — Blower Building,2023-04-01,2023-07-31,2023-03-31,Not started (baseline: no progress entered),Inferred,"E2.1 plan tag and label (plans_9 p.3); E6.1 one-line (35/3, VFD, line reactor) and load calculations 20 HP (plans_10 p.2); E6.3 P-BL-1 1"" 3 #8 + #10 G, C-BL1 to ""blower enclosure #1"" (plans_10 p.4); E7.3 ""AERATION BLOWER 1: MCC"" hand, auto, VFD running, VFD fault and blower 1 enclosure high motor and high enclosure temperature inputs (plans_10 p.8); E7.4 output 0 ""BLOWER #1 CALL TO RUN"" (plans_11 p.1); E9.1 NP-5A ""AERATION BLOWER NO.1 / 20 HP"" (plans_12 p.3)","Cross-lane: Process & Mechanical. Governing spec 43 11 00 and sheets C6.4 (reissued Add. 4 p.6)/C6.5 are in that lane. E&C scope: power, control, all manufacturer connections incl. sensors, skid grounding (E2.1 key note 3). Motor marking ""20"" = 20 HP (E6.1). Generator factor 1. Disconnect is the MCC unit within sight of the motor (E6.1 key note 5). Status New inferred: inside the new Blower Building (E0.3).; Motor PTC relay module by the blower supplier in the main PLC panel (E7.2 key note 1).; 120 V blower enclosure fan circuit from its MCC unit (E9.2 key note 1; basis 0.21 HP, 1.51 A per fan, confirm in submittals). || [Merge] Exceptions: #18, #202, #215."
L-0257,BL-2,"Aeration Blower No.2 — cell aeration blower, Cell 2, 20 HP, VFD in MCC",Process-Mechanical,Electrical & Controls,Blower Building,New,E2.1; E6.1; E6.3; E7.1; E7.2; E7.3; E7.4; E9.1; E9.2,"E2.1 p.67 [431.64,575.70,442.26,580.73] text-layer (tag); E6.1 p.74 [843.30,501.54,853.92,506.57] text-layer (+2 reads) (tag); E6.3 p.76 [628.20,423.36,644.58,431.64] ocr (+1 read) (tag)",CWP 43,Blowers & 2W Plant Water System,"1 (equipment, Inferred per 04); 6 (power and control)",1,EA,MTO-0066 (tag),Verified — 1 line totaled,None found (no spec section cited in rev0),E2.1 (tag); E6.1 (tag); E7.3 (tag); E7.4 (tag); E9.1 (tag); E6.3 (sheet); E7.1 (sheet); E7.2 (sheet); E9.2 (sheet),3,SUB E6.1-01 (sheet); SUB E7.2-01 (sheet); SUB E9.2-01 (sheet),tag 0; spec 0; sheet 3,Not stated,1,ITP E9.2-01 (sheet),tag 0; spec 0; sheet 1,Not stated,None found (Add. 4 checked; Addenda 1-3 not staged),OI-0371 (sheet),2,OI-0370 (sheet); OI-0469 (sheet),#18 (tag),43-C02 Blowers & 2W Plant Water System — Blower Building,2023-04-01,2023-07-31,2023-03-31,Not started (baseline: no progress entered),Inferred,"E2.1 plan tag and label (plans_9 p.3); E6.1 one-line (35/3, VFD, line reactor) and load calculations 20 HP (plans_10 p.2); E6.3 P-BL-2 1"" 3 #8 + #10 G, C-BL2 to ""blower enclosure #2"" (plans_10 p.4); E7.3 ""AERATION BLOWER 2: MCC"" hand, auto, VFD running, VFD fault and blower 2 enclosure high motor and high enclosure temperature inputs (plans_10 p.8); E7.4 output 1 ""BLOWER #2 CALL TO RUN"" (plans_11 p.1); E9.1 NP-5G ""AERATION BLOWER NO.2 / 20 HP"" (plans_12 p.3)","Cross-lane: Process & Mechanical. Governing spec 43 11 00 and sheets C6.4 (reissued Add. 4 p.6)/C6.5 are in that lane. E&C scope: power, control, all manufacturer connections incl. sensors, skid grounding (E2.1 key note 3). Motor marking ""20"" = 20 HP (E6.1). Generator factor 1. Disconnect is the MCC unit within sight of the motor (E6.1 key note 5). Status New inferred: inside the new Blower Building (E0.3).; Motor PTC relay module by the blower supplier in the main PLC panel (E7.2 key note 1).; 120 V blower enclosure fan circuit from its MCC unit (E9.2 key note 1; basis 0.21 HP, 1.51 A per fan, confirm in submittals). || [Merge] Exceptions: #18."
L-0258,BL-3,"Aeration Blower No.3 — cell aeration blower, Cell 3, 20 HP, VFD in MCC",Process-Mechanical,Electrical & Controls,Blower Building,New,E2.1; E6.1; E6.3; E7.1; E7.2; E7.3; E7.4; E9.1; E9.2,"E2.1 p.67 [521.82,574.80,532.44,579.83] text-layer (tag); E6.1 p.74 [888.30,501.36,898.92,506.39] text-layer (+2 reads) (tag); E6.3 p.76 [628.20,430.92,644.76,439.20] ocr (+1 read) (tag)",CWP 43,Blowers & 2W Plant Water System,"1 (equipment, Inferred per 04); 6 (power and control)",1,EA,MTO-0067 (tag),Verified — 1 line totaled,None found (no spec section cited in rev0),E2.1 (tag); E6.1 (tag); E7.3 (tag); E7.4 (tag); E9.1 (tag); E6.3 (sheet); E7.1 (sheet); E7.2 (sheet); E9.2 (sheet),3,SUB E6.1-01 (tag); SUB E7.2-01 (sheet); SUB E9.2-01 (sheet),tag 1; spec 0; sheet 2,Not stated,1,ITP E9.2-01 (sheet),tag 0; spec 0; sheet 1,Not stated,None found (Add. 4 checked; Addenda 1-3 not staged),OI-0371 (sheet),2,OI-0370 (sheet); OI-0469 (sheet),#18 (tag),43-C02 Blowers & 2W Plant Water System — Blower Building,2023-04-01,2023-07-31,2023-03-31,Not started (baseline: no progress entered),Inferred,"E2.1 plan tag and label (plans_9 p.3); E6.1 one-line (35/3, VFD, line reactor) and load calculations 20 HP (plans_10 p.2); E6.3 P-BL-3 1"" 3 #8 + #10 G, C-BL3 to ""blower enclosure #3"" (plans_10 p.4); E7.3 ""AERATION BLOWER 3: MCC"" hand, auto, VFD running, VFD fault and blower 3 enclosure high motor and high enclosure temperature inputs (plans_10 p.8); E7.4 output 2 ""BLOWER #3 CALL TO RUN"" (plans_11 p.1); E9.1 NP-6A ""AERATION BLOWER NO.3 / 20 HP"" (plans_12 p.3)","Cross-lane: Process & Mechanical. Governing spec 43 11 00 and sheets C6.4 (reissued Add. 4 p.6)/C6.5 are in that lane. E&C scope: power, control, all manufacturer connections incl. sensors, skid grounding (E2.1 key note 3). Motor marking ""20"" = 20 HP (E6.1). Generator factor 1. Disconnect is the MCC unit within sight of the motor (E6.1 key note 5). Status New inferred: inside the new Blower Building (E0.3).; Motor PTC relay module by the blower supplier in the main PLC panel (E7.2 key note 1).; 120 V blower enclosure fan circuit from its MCC unit (E9.2 key note 1; basis 0.21 HP, 1.51 A per fan, confirm in submittals). || [Merge] Exceptions: #18."
L-0259,BL-4,"Aeration Blower No.4 — backup, 20 HP, VFD in MCC",Process-Mechanical,Electrical & Controls,Blower Building,New,E2.1; E6.1; E6.3; E7.1; E7.2; E7.3; E7.4; E9.1; E9.2,"E2.1 p.67 [648.54,574.80,659.16,579.83] text-layer (tag); E6.1 p.74 [933.48,501.36,944.10,506.39] text-layer (+2 reads) (tag); E6.3 p.76 [628.20,438.48,644.76,446.76] ocr (+1 read) (tag)",CWP 43,Blowers & 2W Plant Water System,"1 (equipment, Inferred per 04); 6 (power and control)",1,EA,MTO-0068 (tag),Verified — 1 line totaled,None found (no spec section cited in rev0),E2.1 (tag); E6.1 (tag); E7.3 (tag); E7.4 (tag); E9.1 (tag); E6.3 (sheet); E7.1 (sheet); E7.2 (sheet); E9.2 (sheet),3,SUB E6.1-01 (sheet); SUB E7.2-01 (sheet); SUB E9.2-01 (sheet),tag 0; spec 0; sheet 3,Not stated,1,ITP E9.2-01 (sheet),tag 0; spec 0; sheet 1,Not stated,None found (Add. 4 checked; Addenda 1-3 not staged),OI-0371 (sheet),2,OI-0370 (sheet); OI-0469 (sheet),#18 (tag); #202 (tag); #215 (tag),43-C02 Blowers & 2W Plant Water System — Blower Building,2023-04-01,2023-07-31,2023-03-31,Not started (baseline: no progress entered),Inferred,"E2.1 plan tag and label (plans_9 p.3); E6.1 one-line (35/3, VFD, line reactor) and load calculations 20 HP (plans_10 p.2); E6.3 P-BL-4 1"" 3 #8 + #10 G, C-BL4 to ""blower enclosure #4"" (plans_10 p.4); E7.3 ""AERATION BLOWER 4: MCC"" hand, auto, VFD running, VFD fault and blower 4 enclosure high motor and high enclosure temperature inputs (plans_10 p.8); E7.4 output 3 ""BLOWER #4 CALL TO RUN"" (plans_11 p.1); E9.1 NP-6G ""AERATION BLOWER NO.4 / 20 HP"" (plans_12 p.3)","Cross-lane: Process & Mechanical. Governing spec 43 11 00 and sheets C6.4 (reissued Add. 4 p.6)/C6.5 are in that lane. E&C scope: power, control, all manufacturer connections incl. sensors, skid grounding (E2.1 key note 3). Motor marking ""20"" = 20 HP (E6.1). Generator factor 0. Disconnect is the MCC unit within sight of the motor (E6.1 key note 5). Status New inferred: inside the new Blower Building (E0.3).; Motor PTC relay module by the blower supplier in the main PLC panel (E7.2 key note 1).; 120 V blower enclosure fan circuit from its MCC unit (E9.2 key note 1; basis 0.21 HP, 1.51 A per fan, confirm in submittals). || [Merge] Exceptions: #18, #202, #215."
L-0260,DB,"Digester blower, 5 HP, VFD in MCC",Process-Mechanical,Electrical & Controls,"Not stated — drawn on E2.1 outside the Blower Building outline, beside a ""building interior wall""",Not stated,E2.1; E6.1; E6.3; E7.1; E7.2; E7.3; E7.4; E9.1; E9.2,"E2.1 p.67 [211.68,375.72,223.69,380.75] text-layer (+3 reads) (tag); E6.1 p.74 [956.88,453.84,968.89,458.87] text-layer (+3 reads) (tag); E6.3 p.76 [630.00,448.38,642.78,452.34] ocr (+3 reads) (tag)",CWP 43,Blowers & 2W Plant Water System,"1 (equipment, Inferred per 04); 6 (power and control)",1,EA,MTO-0069 (tag),Verified — 1 line totaled,None found (no spec section cited in rev0),00 53 00 (tag); 26 28 16 (tag); 43 11 00 (tag); E2.1 (tag); E6.1 (tag); E7.3 (tag); E7.4 (tag); E9.1 (tag); E6.3 (sheet); E7.1 (sheet); E7.2 (sheet); E9.2 (sheet),3,SUB E6.1-01 (sheet); SUB E7.2-01 (sheet); SUB E9.2-01 (sheet),tag 0; spec 0; sheet 3,Not stated,1,ITP E9.2-01 (sheet),tag 0; spec 0; sheet 1,Not stated,None found (Add. 4 checked; Addenda 1-3 not staged),OI-0371 (sheet),2,OI-0370 (sheet); OI-0469 (sheet),#19 (tag),43-C02 Blowers & 2W Plant Water System — Blower Building,2023-04-01,2023-07-31,2023-03-31,Not started (baseline: no progress entered),Inferred,"E2.1 plan tag and label ""DIGESTER BLOWER"" (plans_9 p.3); E6.1 one-line (20/3, VFD, line reactor) and load calcs 5 HP (plans_10 p.2); E6.3 P-DB, C-DB to ""digester blower enclosure"" (plans_10 p.4); E7.3 ""DIGESTER BLOWER 1"" hand, auto, VFD running, VFD fault and enclosure high motor and high enclosure temperature inputs (plans_10 p.8); E7.4 output 4 ""DIGESTER BLOWER CALL TO RUN"" (plans_11 p.1); E9.1 NP-4K ""DIGESTER BLOWER / 5 HP"" (plans_12 p.3)","Cross-lane: Process & Mechanical. Sheet C6.3 Digester Blower is in that lane. Conduits P-DB, C-DB; local disconnect row below.; Motor PTC relay module by the blower supplier in the main PLC panel (E7.2 key note 1).; 120 V blower enclosure fan circuit from its MCC unit (E9.2 key note 1; basis 0.21 HP, 1.51 A per fan, confirm in submittals). || [Merge] Exceptions: #19."
L-0261,PROPOSED-DB-Local-Disconnect,"Local disconnect for digester blower DB, NEMA 4X stainless steel",Electrical,Electrical & Controls,Not stated — at DB (see DB row),New,E2.1,Not linked (PROPOSED tag is not printed; no boxed anchor matched),CWP 26,"Electrical, Instrumentation & Controls",6,None found,None found,None found,None found (no MTO line: no tied callout and no tag found on a cited sheet),26 28 16,26 28 16 (spec); E2.1 (sheet),1,SUB 26 28 16-01 (spec),tag 0; spec 1; sheet 0,Y,0,None found,tag 0; spec 0; sheet 0,N,None found (Add. 4 checked; Addenda 1-3 not staged),None found,1,OI-0469 (sheet),None found,"26-C05 Electrical, Instrumentation & Controls — Aerobic digester",2023-04-01,2023-11-01,2023-03-14,Not started (baseline: no progress entered),Verified-Visual,"E2.1 key note 6 and plan label ""LOCAL DISCONNECT"" (plans_9 p.3); Submittal: 26 28 16 ¶1.03 p.314 (catalog data per 26 05 00 ¶1.012)",None found (no notes in rev0)
L-0262,MCC,"Motor control center, 480 V 3-ph 4-W, Blower Building, Allen-Bradley Centerline 2100 IntelliCENTER | Blower Building motor control center — 8 sections at 20 in, 160 in total per Add. 4",Electrical,Electrical & Controls; Structural & Building,Blower Building,New,E1.1; E2.1; E2.2; E6.1; E6.2; E6.3; E7.0; E9.1; E9.2; A1.1,"A1.1 Add. 4 p.4 [481.03,26.36,508.35,42.85] text-layer (+2 reads) (tag); E1.1 p.66 [543.96,386.34,560.44,391.37] text-layer (+1 read) (tag); E2.1 p.67 [768.60,493.26,780.05,498.29] text-layer (+4 reads) (tag); E2.2 p.68 [331.78,377.01,353.98,384.55] text-layer (+1 read) (tag); E6.1 p.74 [179.46,284.46,190.91,289.49] text-layer (+4 reads) (tag); E6.2 p.75 [336.00,627.23,365.60,637.29] text-layer (+2 reads) (tag); E6.3 p.76 [904.86,410.94,916.56,414.90] ocr (+58 reads) (tag); E7.0 p.77 [107.10,281.58,118.55,286.61] text-layer (+1 read) (tag); E9.1 p.91 [203.76,45.60,215.21,50.63] text-layer (+3 reads) (tag); E9.2 p.92 [341.46,286.08,352.91,291.11] text-layer (+3 reads) (tag)",CWP 26,"Electrical, Instrumentation & Controls",6 | 6 (Inferred per 04),1,EA,MTO-0070 (tag),Verified — 1 line totaled,26 24 19,00 31 13 (tag); 01 91 00 (tag); 26 05 00 (tag); 26 22 13 (tag); 26 24 19 (tag); 26 29 23 (tag); 26 80 00 (tag); 41 12 13 (tag); 43 11 00 (tag); A1.1 (tag); C6.4 (tag); E1.1 (tag); E2.1 (tag); E2.2 (tag); E4.3 (tag); E5.1 (tag); E6.1 (tag); E6.2 (tag); E6.3 (tag); E7.0 (tag); E7.3 (tag); E7.4 (tag); E7.7 (tag); E8.1 (tag); E8.3 (tag); E9.1 (tag); E9.2 (tag),7,SUB 26 05 00-02 (tag); SUB 26 29 23-01 (tag); SUB E9.2-01 (tag); SUB 26 24 19-01 (spec); SUB A1.1-01 (sheet); SUB E6.1-01 (sheet); SUB E6.2-01 (sheet),tag 3; spec 1; sheet 3,Y,4,ITP 26 05 00-01 (tag); ITP 26 24 19-01 (tag); ITP E5.1-01 (tag); ITP E9.2-01 (tag),tag 4; spec 0; sheet 0,Y,"Add. 4 p.1, Clarification 4 — Add. 4 governs; Add. 4 p.3, A1.1/A1.2/C6.4 item (relocation) — Add. 4 governs | Add. 4 p.1, Clarification 4; p.4 (A1.1) — Add. 4 governs",OI-0371 (sheet),2,OI-0252 (sheet); OI-0469 (sheet),#23 (tag); #225 (tag),"26-C02 Electrical, Instrumentation & Controls — Blower Building",2023-04-01,2023-07-31,2023-03-14,Not started (baseline: no progress entered),Inferred,"[Electrical & Controls] E2.1 plan (plans_9 p.3); E1.1 feeder P-MCC (plans_9 p.2); Add. 4 p.1, Clarification 4; Add. 4 p.3; E6.1 one-line ""MOTOR CONTROL CENTER - 480V, THREE PHASE, 4 WIRE - BLOWER BUILDING"" (plans_10 p.2); E6.2 MDP circuit 1 (plans_10 p.3); E6.3 P-MCC (2) 2"" 4 ea #3/0 + #3 G (plans_10 p.4); E7.0 (plans_10 p.5); E9.1 elevation, nameplate schedule and general note 1 (plans_12 p.3); E9.2 VFD functional wiring (plans_12 p.4); Submittal: 26 24 19 ¶1.04 pp.305–306 (unit wiring diagrams, component data, scaled arrangement drawings, bill of materials); Testing/startup: 26 24 19 ¶3.02 p.311 (shop test with the control system: all I/O points, control devices, motor controllers) || [Structural & Building] plans_7 p.5 (ELECTRICAL PANELS); Add. 4 p.1; Add. 4 p.4","[Electrical & Controls] Add. 4 Clarification 4: eight 20-in sections, 160 in total length (E9.1 base shows 7 sections). Location per A1.1 reissue (Add. 4 p.4) — Structural & Building stack; cross-check for Merge. Status New inferred: sized and furnished under Add. 4 Clarification 4.; E6.1: 400/3 main, power monitor with (3) 400:5 CTs on the PLC network (E7.0), SPD; units 30/3 TCP-1 and TCP-2 (future), 30/3 TCP-3, 60/3 DW-1, 60/3 IPS, 60/2 T2; 10 VFDs (own row). Aeration blower disconnects are the MCC units within sight of the motors (key note 5).; E9.1: seven 20-in sections, 140 in, 90 in high, 4-in pad; Add. 4 Clarification 4 governs at eight sections, 160 in; contents of the added section not stated (general note 1: contractor provides final layout). Units: Ethernet switch NP-1A, surge protector NP-1D, power monitor NP-1E, 400 A main NP-1H; feeders NP-2A/2B Trains 1–2 (future), NP-2C Train 3, NP-2D dewatering skid, NP-2E Influent Pump Station; ten VFDs NP-3A to NP-6G; LP1 NP-7A, transformer disconnect NP-7G, 20 kVA transformer NP-7J; four spaces. MCC cooling fans on a thermostat (E9.2).; 26 24 19: Allen-Bradley, no exceptions; shop assembly and shop test with the control system (all I/O points and motor controllers) before delivery. || [Structural & Building] Cross-lane: Electrical & Controls (E9.1). Base shows an electrical panel bank with 3.5 ft clearance note; Add. 4: move as far east as possible, add one section, spare section for future expansion. || [Merge] Combined by rule (same tag) from Electrical_and_Controls_Ledger.csv row 27; Structural_and_Building_Ledger.csv row 5. Tag level = weakest of the parts (Inferred, Inferred). Submittal: Y (Electrical & Controls), Not stated (Structural & Building) — Y kept (each lane's N covers only its own stack); Testing/Startup: Y (Electrical & Controls), Not stated (Structural & Building) — Y kept (each lane's N covers only its own stack). || [Merge] Exceptions: #23, #225."
L-0263,MCP,"Main Control Panel (PLC), Blower Building | Main control panel (MCP) — relocated per Add. 4",Controls,Electrical & Controls; Structural & Building,Blower Building,New,E2.1; E2.2; E6.2; E6.3; E7.0; E7.1; E7.2; E7.3; E7.4; E7.5; E7.6; E7.7; A1.1,"A1.1 Add. 4 p.4 [930.77,586.01,957.43,602.50] text-layer (tag); E2.1 p.67 [880.38,565.08,891.55,570.11] text-layer (+3 reads) (tag); E6.3 p.76 [627.84,641.16,644.76,649.44] ocr (+5 reads) (tag)",CWP 26,"Electrical, Instrumentation & Controls",6 | 6 (Inferred per 04),1,EA,MTO-0071 (tag),Verified — 1 line totaled,26 80 00,26 80 00 (tag); A1.1 (tag); C6.4 (tag); E0.1 (tag); E2.1 (tag); E7.1 (tag); E7.2 (tag); E2.2 (sheet); E6.2 (sheet); E6.3 (sheet); E7.0 (sheet); E7.3 (sheet); E7.4 (sheet); E7.5 (sheet); E7.6 (sheet); E7.7 (sheet),4,SUB 26 80 00-00 (spec); SUB A1.1-01 (sheet); SUB E6.2-01 (sheet); SUB E7.2-01 (sheet),tag 0; spec 1; sheet 3,Y,2,ITP 26 80 00-01 (spec); ITP 26 80 00-02 (spec),tag 0; spec 2; sheet 0,Y,"Add. 4 p.3, A1.1/A1.2/C6.4 item (relocation) — Add. 4 governs; Add. 4 p.2, 22 13 36 ¶2.01 A and 43 22 10 ¶2.01 A (PLC in the Main Control Panel controls the pump VFDs) — Add. 4 governs | Add. 4 p.3; p.4 (A1.1) — Add. 4 governs",OI-0361 (spec),5,OI-0258 (spec); OI-0374 (spec); OI-0252 (sheet); OI-0370 (sheet); OI-0469 (sheet),#24 (tag); #226 (tag),"26-C02 Electrical, Instrumentation & Controls — Blower Building",2023-04-01,2023-07-31,2023-03-14,Not started (baseline: no progress entered),Unresolved,"[Electrical & Controls] E2.1 plan label ""MAIN CONTROL PANEL"" (plans_9 p.3); E2.2 LP1 circuit 2 (plans_9 p.4); Add. 4 p.3; E7.0 ""MAIN PLC CONTROL PANEL"" (plans_10 p.5); E6.3 P-MCP, C-MCP, S-MCP, S-ICP (plans_10 p.4); E6.2 LP1 circuit 2 (plans_10 p.3); Add. 4 p.2; E7.1 elevations (plans_10 p.6); E7.2 power wiring (plans_10 p.7); E7.3 to E7.7 I/O (plans_10 p.8; plans_11 pp.1–4); 26 80 00 ¶2.02 A.3.a and ¶2.05 (pp.357, 365–367): CompactLogix, PanelView Plus 7 2711P-T9W22D9P, DC UPS 1606-XLS240-UPS with 26 Ah battery; Submittal: 26 80 00 ¶1.06 p.356 (hardware submittals before fabrication; control system documentation); Testing/startup: 26 80 00 ¶3.03–3.04 and ¶3.08 pp.371–372 (witnessed factory simulation; field acceptance test; programming, start-up, commissioning) || [Structural & Building] Add. 4 p.3; Add. 4 p.4","[Electrical & Controls] Receives smoke/heat, door intrusion, 2W pressure and ATS/generator status signals (E2.1 key notes 4–5; E1.1 key note 3). Location per A1.1 reissue (Add. 4 p.4) — Structural & Building stack; cross-check for Merge. Status New inferred: in the new Blower Building.; Major components (E7.0): Allen-Bradley CompactLogix PLC, PanelView Plus operator interface, network switch linking the MCC power monitor, 2W and effluent flow meters and the 10 MCC VFDs; Cat 6 to the IPS panel (S-ICP). System integrator provides the detailed design (E7.0 gen. note 1). Add. 4 p.2: this PLC controls the pump VFDs.; E7.1: NEMA 12 painted steel enclosure, PanelView Plus on the door, CompactLogix PLC and I/O, network switch, DC power supply and UPS with battery pack (12 VDC 26 AH, E7.2), line filter, output relays, GFCI receptacle, five blower PTC relays from the blower supplier, intrinsic safety barrier for the digester level loop (E7.5), on a concrete housekeeping pad per civil specs. E7.2: 120 VAC from the lighting panel through a 20 A TVSS; 24 VDC 10 A supply. I/O drawn: five 16-point input cards (74 points; numbering errors, see Issues), one 16-point output card (11 used), two 8-channel analog input cards (6 used, 4 reserved for future Cells 1–2 DO), one 8-channel analog output card (2 used). || [Structural & Building] Cross-lane: Electrical & Controls. MCP read as Main Control Panel (Inferred from Add. 4 p.2 wording ""PLC in the Main Control Panel""). Add. 4: move to the wall shown; adjust power and control raceway routing. || [Merge] Combined by rule (same tag) from Electrical_and_Controls_Ledger.csv row 28; Structural_and_Building_Ledger.csv row 6. Tag level = weakest of the parts (Unresolved, Inferred). Submittal: Y (Electrical & Controls), Not stated (Structural & Building) — Y kept (each lane's N covers only its own stack); Testing/Startup: Y (Electrical & Controls), Not stated (Structural & Building) — Y kept (each lane's N covers only its own stack). || [Merge] Exceptions: #24, #226."
L-0264,LP-1,"Lighting panel LP1, 120/240 V 1-ph 3-W, 100 A bus, 100 A main breaker, 10,000 AIC, surface mounted",Electrical,Electrical & Controls,Blower Building,New,E2.1; E2.2; E6.1; E6.2; E9.1; E9.3,"E2.1 p.67 [844.56,430.26,855.18,435.29] text-layer (tag); E2.2 p.68 [844.02,438.18,854.64,443.21] text-layer (tag); E6.1 p.74 [91.62,717.30,102.78,725.58] ocr (+1 read) (tag)",CWP 26,"Electrical, Instrumentation & Controls",6,1,EA,MTO-0072 (tag),Verified — 1 line totaled,26 24 16,26 24 16 (tag); E2.1 (tag); E2.2 (tag); E4.3 (tag); E5.1 (tag); E6.1 (tag); E6.2 (tag); E7.1 (tag); E7.2 (tag); E9.1 (tag); E9.3 (tag),3,SUB E6.1-01 (tag); SUB 26 24 16-01 (spec); SUB E6.2-01 (sheet),tag 1; spec 1; sheet 1,Y,1,ITP 26 24 16-01 (spec),tag 0; spec 1; sheet 0,Y,None found (Add. 4 checked; Addenda 1-3 not staged),OI-0371 (sheet),1,OI-0469 (sheet),None found,"26-C02 Electrical, Instrumentation & Controls — Blower Building",2023-04-01,2023-07-31,2023-03-14,Not started (baseline: no progress entered),Inferred,"E2.2 Panel LP1 (MCC) schedule (plans_9 p.4); E2.1 plan (plans_9 p.3); E6.2 Panel LP1 (MCC) schedule (plans_10 p.3); E6.1 T2 and load calcs ""LP-1 MCC load center 20 kVA"" (plans_10 p.2); E9.1 NP-7A ""LIGHTING PANEL / 120-240V 1 PH"" in MCC section 7 (plans_12 p.3); Submittal: 26 24 16 ¶1.02 p.300 (catalog data per 26 05 00); Testing/startup: 26 24 16 ¶3.03 pp.303–304 (inspection, phase load balancing within 20%, torque check)","Printed LP-1 on plans and LP1 on the schedule; schedule title ""PANEL LP1 (MCC)"" and E1.1 key note 4 ""load center in MCC"". Demand 17.3 kVA / 72.1 A. Status New inferred: in the new Blower Building.; E6.2 repeats the E2.2 schedule unchanged. Fed from T2. E6.3 calls it the ""MCC lighting panel"".; E9.3 feeds the Treatment Building ventilation control panel ""FROM LP1"", but the LP1 schedule (E6.2) has no such circuit — see Issues.; 26 24 16 ¶2.02 H: surge arrester with indicator required on every panel — not shown on the E6.2 schedule; complementary per 26 05 00 ¶1.011 B."
L-0265,PROPOSED-Blower-Building-Power-Handholes,Electric power handholes at the Blower Building (2 shown),Electrical,Electrical & Controls,Blower Building,New,E2.1; E10.1,Not linked (PROPOSED tag is not printed; no boxed anchor matched),CWP 26,"Electrical, Instrumentation & Controls",6,None found,None found,None found,None found (no MTO line: no tied callout and no tag found on a cited sheet),26 05 33,26 05 33 (spec); E2.1 (sheet); E10.1 (sheet),2,SUB 26 05 33-01 (spec); SUB 26 05 33-02 (spec),tag 0; spec 2; sheet 0,N,1,ITP 26 05 33-01 (spec),tag 0; spec 1; sheet 0,N,None found (Add. 4 checked; Addenda 1-3 not staged),OI-0364 (sheet),1,OI-0469 (sheet),None found,"26-C02 Electrical, Instrumentation & Controls — Blower Building",2023-04-01,2023-07-31,2023-03-14,Not started (baseline: no progress entered),Verified-Visual,"E2.1 plan labels ""POWER HANDHOLE"" and key note 7 (plans_9 p.3); E10.1 electrical handhole detail: Oldcastle Precast #233-LA (vault #233-BL, cover #23-2436P) or equal, galvanized diamond-plate traffic cover with locking latch, 6 in sump and drainage rock, 18 x 18 in knockouts, 8 ft copper-clad ground rod, ""ELECTRIC""/""SIGNAL"" label (plans_12 p.6); 26 05 33 ¶2.07 (p.294): precast 3,000 psi, H-20 traffic covers, solid bottoms with sumps",Locations schematic; final locations with the Engineer (E2.1 gen. note 3). At least 2 spares from each power handhole to the MCC.
L-0266,PROPOSED-Blower-Building-Control-Signal-Handholes,Electric control and signal handholes at the Blower Building (2 shown),Electrical,Electrical & Controls,Blower Building,New,E2.1; E10.1,Not linked (PROPOSED tag is not printed; no boxed anchor matched),CWP 26,"Electrical, Instrumentation & Controls",6,None found,None found,None found,None found (no MTO line: no tied callout and no tag found on a cited sheet),26 05 33,26 05 33 (spec); E2.1 (sheet); E10.1 (sheet),2,SUB 26 05 33-01 (spec); SUB 26 05 33-02 (spec),tag 0; spec 2; sheet 0,N,1,ITP 26 05 33-01 (spec),tag 0; spec 1; sheet 0,N,None found (Add. 4 checked; Addenda 1-3 not staged),OI-0364 (sheet),1,OI-0469 (sheet),None found,"26-C02 Electrical, Instrumentation & Controls — Blower Building",2023-04-01,2023-07-31,2023-03-14,Not started (baseline: no progress entered),Verified-Visual,"E2.1 plan labels ""CONTROL AND SIGNAL HANDHOLE"" and key note 7 (plans_9 p.3); E10.1 electrical handhole detail: Oldcastle Precast #233-LA (vault #233-BL, cover #23-2436P) or equal, galvanized diamond-plate traffic cover with locking latch, 6 in sump and drainage rock, 18 x 18 in knockouts, 8 ft copper-clad ground rod, ""ELECTRIC""/""SIGNAL"" label (plans_12 p.6); 26 05 33 ¶2.07 (p.294): precast 3,000 psi, H-20 traffic covers, solid bottoms with sumps",At least 2 spares from each control handhole to the PLC panel.
L-0267,PROPOSED-Blower-Building-Smoke-Heat-Detector,"Ceiling smoke/heat detector, System Sensor 4WTAR-B, Form C relay, sounder, 4-wire",Controls,Electrical & Controls,Blower Building,New,E2.1; E6.3; E7.3,Not linked (PROPOSED tag is not printed; no boxed anchor matched),CWP 26,"Electrical, Instrumentation & Controls",6,None found,None found,None found,None found (no MTO line: no tied callout and no tag found on a cited sheet),26 80 00,26 80 00 (spec); E2.1 (sheet); E6.3 (sheet); E7.3 (sheet),1,SUB 26 80 00-00 (spec),tag 0; spec 1; sheet 0,Y,2,ITP 26 80 00-01 (spec); ITP 26 80 00-02 (spec),tag 0; spec 2; sheet 0,Y,None found (Add. 4 checked; Addenda 1-3 not staged),OI-0361 (spec),4,OI-0258 (spec); OI-0374 (spec); OI-0370 (sheet); OI-0469 (sheet),None found,"26-C02 Electrical, Instrumentation & Controls — Blower Building",2023-04-01,2023-07-31,2023-03-14,Not started (baseline: no progress entered),Verified,"E2.1 key note 4 (plans_9 p.3); E6.3 C-SD1 1/2"" 2 #14 (plans_10 p.4); E7.3 input ""SMOKE DETECTOR"", card 3 (plans_10 p.8); 26 80 00 ¶2.02 (p.359) and ¶2.04 H (pp.364–365): combination smoke and heat detector, one in the Blower Building; ¶3.09 M (p.377) status and alarm monitoring; Submittal: 26 80 00 ¶1.06 p.356 (hardware submittals before fabrication; control system documentation); Testing/startup: 26 80 00 ¶3.03–3.04 and ¶3.08 pp.371–372 (witnessed factory simulation; field acceptance test; programming, start-up, commissioning)",Wired to the PLC control panel (C-SD1).
L-0268,PROPOSED-Blower-Building-Door-Intrusion-Switch,"Door intrusion switch, magnetic reed SPDT, Interlogix Sentrol 2807T or equal",Controls,Electrical & Controls,Blower Building,New,E2.1; E6.3; E7.3,Not linked (PROPOSED tag is not printed; no boxed anchor matched),CWP 26,"Electrical, Instrumentation & Controls",6,None found,None found,None found,None found (no MTO line: no tied callout and no tag found on a cited sheet),26 80 00,26 80 00 (spec); E2.1 (sheet); E6.3 (sheet); E7.3 (sheet),1,SUB 26 80 00-00 (spec),tag 0; spec 1; sheet 0,Y,2,ITP 26 80 00-01 (spec); ITP 26 80 00-02 (spec),tag 0; spec 2; sheet 0,Y,None found (Add. 4 checked; Addenda 1-3 not staged),OI-0361 (spec),4,OI-0258 (spec); OI-0374 (spec); OI-0370 (sheet); OI-0469 (sheet),None found,"26-C02 Electrical, Instrumentation & Controls — Blower Building",2023-04-01,2023-07-31,2023-03-14,Not started (baseline: no progress entered),Verified,"E2.1 key note 5 (plans_9 p.3); E6.3 C-INT 1/2"" 2 #14 (plans_10 p.4); E7.3 input ""INTRUSION DOOR SWITCH"" (printed ""DOOOR""), card 3 (plans_10 p.8); 26 80 00 ¶2.04 I (p.365): door switch for intrusion sensing; ¶3.09 L (p.377) intrusion alarms in the PLC; Submittal: 26 80 00 ¶1.06 p.356 (hardware submittals before fabrication; control system documentation); Testing/startup: 26 80 00 ¶3.03–3.04 and ¶3.08 pp.371–372 (witnessed factory simulation; field acceptance test; programming, start-up, commissioning)",Wired to the PLC control panel (C-INT).
L-0269,PROPOSED-2W-Pressure-Transducer,"2W system pressure transducer, 0–150 psi, 4–20 mA, Blower Building",Controls,Electrical & Controls,Blower Building,Not stated,E2.1; E6.3; E7.5,Not linked (PROPOSED tag is not printed; no boxed anchor matched),CWP 26,"Electrical, Instrumentation & Controls",6,None found,None found,None found,None found (no MTO line: no tied callout and no tag found on a cited sheet),26 80 00; 26 80 00,E2.1 (tag); 26 80 00 (spec); E6.3 (sheet); E7.5 (sheet),1,SUB 26 80 00-00 (spec),tag 0; spec 1; sheet 0,Y,2,ITP 26 80 00-01 (spec); ITP 26 80 00-02 (spec),tag 0; spec 2; sheet 0,Y,None found (Add. 4 checked; Addenda 1-3 not staged),OI-0361 (spec),3,OI-0258 (spec); OI-0374 (spec); OI-0469 (sheet),#48 (tag),"26-C02 Electrical, Instrumentation & Controls — Blower Building",2023-04-01,2023-07-31,2023-03-14,Not started (baseline: no progress entered),Verified,"E2.1 plan label ""2W PRESSURE TRANSDUCER"" and conduit C-2WPT (plans_9 p.3); E6.3 C-2WPT 1/2"" 1 #18TSP to ""2W PRESSURE SENSOR"" (plans_10 p.4); E7.5 analog input 0 ""2W SYSTEM PRESSURE 0-150 PSI"" (plans_11 p.2); 26 80 00 ¶2.04 C (pp.362–363): piezo-resistive pressure transducer, ASCO Model G2 or equal; Submittal: 26 80 00 ¶1.06 p.356 (hardware submittals before fabrication; control system documentation); Testing/startup: 26 80 00 ¶3.03–3.04 and ¶3.08 pp.371–372 (witnessed factory simulation; field acceptance test; programming, start-up, commissioning)","No printed tag on E7.5 (instrument symbol ""PT"" only), so the PROPOSED tag stays. Main PLC analog input 0 (E7.5); signal C-2WPT (E6.3). || [Merge] Exceptions: #48."
L-0270,PROPOSED-Blower-High-Temperature-Switches,High-temperature switches at the aeration blowers (typ.),Controls,Electrical & Controls,Blower Building,Not stated,E2.1; E7.3,Not linked (PROPOSED tag is not printed; no boxed anchor matched),CWP 26,"Electrical, Instrumentation & Controls",6,None found,None found,None found,None found (no MTO line: no tied callout and no tag found on a cited sheet),None found (no spec section cited in rev0),E2.1 (sheet); E7.3 (sheet),0,None found,tag 0; spec 0; sheet 0,Not stated,0,None found,tag 0; spec 0; sheet 0,Not stated,None found (Add. 4 checked; Addenda 1-3 not staged),None found,3,OI-0225 (tag); OI-0370 (sheet); OI-0469 (sheet),#118 (tag),"26-C02 Electrical, Instrumentation & Controls — Blower Building",2023-04-01,2023-07-31,2023-03-14,Not started (baseline: no progress entered),Verified-Visual,"E2.1 plan label ""HIGH TEMPERATURE SWITCHES (TYP)"" (plans_9 p.3); E7.3 inputs ""HIGH MOTOR TEMP"" (key note 1) and ""HIGH ENCLOSURE TEMP"" for the digester blower and aeration blower 1–4 enclosures (plans_10 p.8)","Whether furnished with the blower package is not stated.; E7.3 shows two thermal contacts per blower enclosure, five enclosures, 10 inputs; the motor contact comes through the supplier PTC relay (key note 1), the enclosure switch furnisher is still not stated.; No Division 26 section covers these switches (26 80 00 ¶2.04 read by instrument type). || [Merge] Exceptions: #118."
L-0271,PROPOSED-Blower-Building-Grounding-Electrode-System,"Blower Building grounding electrode system (ground rods, concrete-encased electrode, structural steel, metal water pipe)",Electrical,Electrical & Controls,Blower Building,New,E2.1; E10.1,Not linked (PROPOSED tag is not printed; no boxed anchor matched),CWP 26,"Electrical, Instrumentation & Controls",6,None found,None found,None found,None found (no MTO line: no tied callout and no tag found on a cited sheet),26 05 26,26 05 26 (spec); E2.1 (sheet); E10.1 (sheet),0,None found,tag 0; spec 0; sheet 0,N,1,ITP 26 05 26-01 (spec),tag 0; spec 1; sheet 0,Y,None found (Add. 4 checked; Addenda 1-3 not staged),OI-0364 (sheet),1,OI-0469 (sheet),None found,"26-C02 Electrical, Instrumentation & Controls — Blower Building",2023-04-01,2023-07-31,2023-03-14,Not started (baseline: no progress entered),Verified,"E2.1 key note 1 and reference to detail 1/E10.1 (plans_9 p.3); E10.1 grounding system and ground rod details (plans_12 p.6); 26 05 26 ¶2.01 D (p.289): copper-clad rods 3/4 in x 8 ft; 26 05 19 ¶3.07 G.3 (p.288): 25 ohms maximum per rod, 15 ohms composite; Testing/startup: 26 05 19 ¶3.07 pp.286–288 (insulation resistance 1,000 VDC, 1 megohm min; continuity; thermal imaging; ground rods 25 ohms max, composite 15 ohms)",None found (no notes in rev0)
L-0272,EF-1,"Exhaust Fan 1, Blower Building (motor marked 1/2), circuit LP1-5",Process-Mechanical,Electrical & Controls,Blower Building,New,E2.2; E6.2,"E0.1 p.62 [312.30,85.56,323.20,90.59] text-layer — sheet not cited (tag); E2.2 p.68 [969.66,472.92,980.56,477.95] text-layer (+2 reads) (tag); E6.2 p.75 [170.82,493.38,180.18,496.98] ocr (+1 read) (tag)",CWP 23,HVAC & Ventilation,"1 (equipment, Inferred per 04); 6 (power and control)",1,EA,MTO-0073 (tag),Verified — 1 line totaled,None found (no spec section cited in rev0),E2.2 (tag); E6.2 (tag),1,SUB E6.2-01 (sheet),tag 0; spec 0; sheet 1,Not stated,0,None found,tag 0; spec 0; sheet 0,Not stated,"Add. 4 p.3, A1.1/A1.2/C6.4 item (relocation) — Add. 4 governs",None found,1,OI-0287 (tag),#20 (tag); #203 (tag),23-C01 HVAC & Ventilation — Blower Building,2023-04-01,2023-07-31,2023-03-31,Not started (baseline: no progress entered),Inferred,E2.2 plan label and LP1 schedule circuit 5 (plans_9 p.4); Add. 4 p.3; E6.2 LP1 circuit 5 (plans_10 p.3),"Cross-lane: Process & Mechanical. Governing spec 23 34 00 is in that lane. LP1 circuit 5: 1,127 VA, 20 A 1-pole. Thermostat control through the ventilation control panel (E2.2 key note 4). Location per A1.1 reissue (Add. 4 p.4). Status New inferred: in the new Blower Building. || [Merge] Exceptions: #20, #203."
L-0273,EF-2,"Exhaust Fan 2, Blower Building (motor marked 1/2), circuit LP1-7",Process-Mechanical,Electrical & Controls,Blower Building,New,E2.2; E6.2,"E2.2 p.68 [969.66,540.78,980.56,545.81] text-layer (+2 reads) (tag); E6.2 p.75 [170.82,501.12,180.72,504.72] ocr (+1 read) (tag)",CWP 23,HVAC & Ventilation,"1 (equipment, Inferred per 04); 6 (power and control)",1,EA,MTO-0074 (tag),Verified — 1 line totaled,None found (no spec section cited in rev0),E2.2 (tag); E6.2 (tag),1,SUB E6.2-01 (sheet),tag 0; spec 0; sheet 1,Not stated,0,None found,tag 0; spec 0; sheet 0,Not stated,"Add. 4 p.3, A1.1/A1.2/C6.4 item (relocation) — Add. 4 governs",None found,1,OI-0287 (tag),#20 (tag); #203 (tag),23-C01 HVAC & Ventilation — Blower Building,2023-04-01,2023-07-31,2023-03-31,Not started (baseline: no progress entered),Inferred,E2.2 plan label and LP1 schedule circuit 7 (plans_9 p.4); Add. 4 p.3; E6.2 LP1 circuit 7 (plans_10 p.3),"Cross-lane: Process & Mechanical. Governing spec 23 34 00 is in that lane. LP1 circuit 7: 1,127 VA, 20 A 1-pole. Location per A1.1 reissue (Add. 4 p.4). Status New inferred. || [Merge] Exceptions: #20, #203."
L-0274,ML-1,"Motorized louver ML-1, Blower Building (motor marked 1/6), louver and HVAC control circuit LP1-3",Process-Mechanical,Electrical & Controls,Blower Building,New,E2.2,"E2.2 p.68 [150.84,483.00,162.29,488.03] text-layer (tag)",CWP 23,HVAC & Ventilation,"1 (equipment, Inferred per 04); 6 (power and control)",1,EA,MTO-0075 (tag),Verified — 1 line totaled,None found (no spec section cited in rev0),E2.2 (tag),0,None found,tag 0; spec 0; sheet 0,Not stated,0,None found,tag 0; spec 0; sheet 0,Not stated,None found (Add. 4 checked; Addenda 1-3 not staged),None found,1,OI-0287 (tag),#21 (tag); #203 (tag),23-C01 HVAC & Ventilation — Blower Building,2023-04-01,2023-07-31,2023-03-31,Not started (baseline: no progress entered),Inferred,"E2.2 plan label ""MOTORIZED LOUVER"" and LP1 schedule circuit 3 (plans_9 p.4)","Cross-lane: Process & Mechanical. Operates when either exhaust fan runs (E2.2 key note 4). Status New inferred. || [Merge] Exceptions: #21, #203."
L-0275,PROPOSED-Blower-Building-Manual-Louver,"Manual louver, Blower Building",Process-Mechanical,Electrical & Controls,Blower Building,New,E2.2,Not linked (PROPOSED tag is not printed; no boxed anchor matched),CWP 23,HVAC & Ventilation,1 (Inferred per 04),None found,None found,None found,None found (no MTO line: no tied callout and no tag found on a cited sheet),None found (no spec section cited in rev0),E2.2 (sheet),0,None found,tag 0; spec 0; sheet 0,Not stated,0,None found,tag 0; spec 0; sheet 0,Not stated,None found (Add. 4 checked; Addenda 1-3 not staged),None found,0,None found,#22 (tag),23-C01 HVAC & Ventilation — Blower Building,2023-04-01,2023-07-31,2023-03-31,Not started (baseline: no progress entered),Inferred,"E2.2 plan label ""MANUAL LOUVER"" (plans_9 p.4)",Cross-lane: Process & Mechanical. No electrical connection shown. Status New inferred. || [Merge] Exceptions: #22.
L-0276,L1 (Blower Building),"Light fixture type L1: narrow LED 4-ft, vapor tight, 120 V, 42 VA (Acuity CSVT-L48…)",Electrical,Electrical & Controls,Blower Building,New,E2.2,"E2.2 p.68 [851.58,538.08,857.17,543.11] text-layer (+2 reads) (tag)",CWP 26,"Electrical, Instrumentation & Controls",6,1,EA,MTO-0076 (tag),Verified — 1 line totaled,26 51 19,E2.2 (tag); 26 51 19 (spec),2,SUB 26 51 19-01 (spec); SUB 26 51 19-02 (spec),tag 0; spec 2; sheet 0,Y,1,ITP 26 51 19-01 (spec),tag 0; spec 1; sheet 0,Y,None found (Add. 4 checked; Addenda 1-3 not staged),None found,0,None found,None found,"26-C02 Electrical, Instrumentation & Controls — Blower Building",2023-04-01,2023-07-31,2023-03-14,Not started (baseline: no progress entered),Verified-Visual,"E2.2 Blower Building lighting fixture schedule and plan ""L1 (TYP)"" (plans_9 p.4); Submittal: 26 51 19 ¶1.06 p.350 (product sheets, photometric reports where scheduled, WSEC control devices); Testing/startup: 26 51 19 ¶3.01 I p.351 (test and demonstrate lighting controls, as applicable)",5 shown on plan. On occupancy sensor (key note 3). Full catalog string not legible at stored resolution.
L-0277,L2 (Blower Building),"Light fixture type L2: LED wall pack, wet location, photocell, 120 V, 17 VA (Acuity ARC1 LED…)",Electrical,Electrical & Controls,Blower Building,New,E2.2,"E2.2 p.68 [867.60,624.48,873.19,629.51] text-layer (+2 reads) (tag)",CWP 26,"Electrical, Instrumentation & Controls",6,1,EA,MTO-0077 (tag),Verified — 1 line totaled,26 51 19,E2.2 (tag); 26 51 19 (spec),2,SUB 26 51 19-01 (spec); SUB 26 51 19-02 (spec),tag 0; spec 2; sheet 0,Y,1,ITP 26 51 19-01 (spec),tag 0; spec 1; sheet 0,Y,None found (Add. 4 checked; Addenda 1-3 not staged),None found,0,None found,None found,"26-C02 Electrical, Instrumentation & Controls — Blower Building",2023-04-01,2023-07-31,2023-03-14,Not started (baseline: no progress entered),Verified-Visual,"E2.2 Blower Building lighting fixture schedule and plan (plans_9 p.4); Submittal: 26 51 19 ¶1.06 p.350 (product sheets, photometric reports where scheduled, WSEC control devices); Testing/startup: 26 51 19 ¶3.01 I p.351 (test and demonstrate lighting controls, as applicable)","1 shown on plan. Dedicated switch, dark-sky compliant (key note 1)."
L-0278,X1 (Blower Building),"Light fixture type X1: LED emergency combo with battery pack, 120 V, 6 VA (Lithonia ECC)",Electrical,Electrical & Controls,Blower Building,New,E2.2,"E2.2 p.68 [353.52,582.18,359.67,587.21] text-layer (+2 reads) (tag)",CWP 26,"Electrical, Instrumentation & Controls",6,1,EA,MTO-0078 (tag),Verified — 1 line totaled,26 51 19,E2.2 (tag); 26 51 19 (spec),2,SUB 26 51 19-01 (spec); SUB 26 51 19-02 (spec),tag 0; spec 2; sheet 0,Y,1,ITP 26 51 19-01 (spec),tag 0; spec 1; sheet 0,Y,None found (Add. 4 checked; Addenda 1-3 not staged),None found,0,None found,None found,"26-C02 Electrical, Instrumentation & Controls — Blower Building",2023-04-01,2023-07-31,2023-03-14,Not started (baseline: no progress entered),Verified-Visual,"E2.2 Blower Building lighting fixture schedule and plan (plans_9 p.4); Submittal: 26 51 19 ¶1.06 p.350 (product sheets, photometric reports where scheduled, WSEC control devices); Testing/startup: 26 51 19 ¶3.01 I p.351 (test and demonstrate lighting controls, as applicable)",2 shown on plan. Wired to the interior lighting circuit (key note 2).
L-0279,PROPOSED-Blower-Building-Ventilation-Control-Panel,"Ventilation control panel: relay controls, one thermostat per exhaust fan, louver interlock",Controls,Electrical & Controls,Blower Building,New,E2.2,Not linked (PROPOSED tag is not printed; no boxed anchor matched),CWP 26,"Electrical, Instrumentation & Controls",6,None found,None found,None found,None found (no MTO line: no tied callout and no tag found on a cited sheet),None found (no spec section cited in rev0),E2.2 (sheet),0,None found,tag 0; spec 0; sheet 0,Not stated,0,None found,tag 0; spec 0; sheet 0,Not stated,None found (Add. 4 checked; Addenda 1-3 not staged),None found,1,OI-0226 (tag),#119 (tag),"26-C02 Electrical, Instrumentation & Controls — Blower Building",2023-04-01,2023-07-31,2023-03-14,Not started (baseline: no progress entered),Verified,E2.2 key note 4 (plans_9 p.4),"Elevation and wiring on E9.3. 02 notes 23 34 00 cross-checks E9.3.; Tag renamed from PROPOSED-Ventilation-Control-Panel after a second ventilation control panel appeared on E4.1 (workflow log).; Not in 26 80 00 ¶2.02 (it lists one ventilation control panel, the Treatment Building unit of ¶3.09 J); no Division 26 section governs it. || [Merge] Exceptions: #119."
L-0280,TCP-3,"Train No.3 control panel TCP-3 (by treatment system provider), 480 V 3-ph input, NEMA 4X Type 316 SS",Controls,Electrical & Controls,Train No.3,New,E3.1; E6.1; E6.3; E7.3; E9.1,"E6.1 p.74 [389.88,501.36,404.41,506.39] text-layer (+2 reads) (tag)",CWP 46,Treatment Equipment,"1 (equipment, Inferred per 04); 6 (power and control)",1,EA,MTO-0079 (tag),Verified — 1 line totaled,None found (no spec section cited in rev0),E6.1 (tag); E7.3 (tag); E9.1 (tag); E3.1 (sheet); E6.3 (sheet),2,SUB E6.1-01 (tag); SUB E3.1-01 (sheet),tag 1; spec 0; sheet 1,Not stated,0,None found,tag 0; spec 0; sheet 0,Not stated,None found (Add. 4 checked; Addenda 1-3 not staged),OI-0371 (sheet),1,OI-0370 (sheet),#31 (tag); #161 (tag),46-C04 Treatment Equipment — Train 3,2023-08-01,2024-07-08,2023-03-31,Not started (baseline: no progress entered),Inferred,"E3.1 key note 1, plan label ""TRAIN NO.3 CONTROL PANEL"", conduits P-TCP3/C-TCP3 (plans_9 p.5); E6.1 one-line tag TCP-3 ""CELL 3 CONTROL PANEL"", MCC 30/3, load calcs ""Train 3 treatment panel"" 10 HP (plans_10 p.2); E6.3 P-TCP3 1"" 3 #10, C-TCP3 12 #14, P-TS3A field devices, P-TS3B pole light and receptacle (plans_10 p.4); E7.3 ""TREATMENT CELL 3 CONTROL PANEL"" running, alarm, shutdown inputs on card 4 (plans_10 p.8); E9.1 NP-2C ""TRAIN NO.3 / PANEL FEEDER"" (plans_12 p.3)","Cross-lane: Process & Mechanical. Furnished by the treatment system provider ""per specifications"" (46 53 00 by title — Inferred). E&C installs provider components and provides wiring and raceway back to the panel.; Tag renamed from PROPOSED-Train-3-Control-Panel after E6.1 showed the printed tag (workflow log). || [Merge] Exceptions: #31, #161."
L-0281,PROPOSED-Train-3-Clarifier-Drive-Motor,Train No.3 clarifier drive motor,Process-Mechanical,Electrical & Controls,Train No.3,New,E3.1; E6.3,Not linked (PROPOSED tag is not printed; no boxed anchor matched),CWP 46,Treatment Equipment,"1 (equipment, Inferred per 04); 6 (power and control)",None found,None found,None found,None found (no MTO line: no tied callout and no tag found on a cited sheet),None found (no spec section cited in rev0),E3.1 (sheet); E6.3 (sheet),1,SUB E3.1-01 (sheet),tag 0; spec 0; sheet 1,Not stated,0,None found,tag 0; spec 0; sheet 0,Not stated,None found (Add. 4 checked; Addenda 1-3 not staged),None found,0,None found,#33 (tag),46-C04 Treatment Equipment — Train 3,2023-08-01,2024-07-08,2023-03-31,Not started (baseline: no progress entered),Inferred,"E3.1 key note 1 and conduit P-CL3 (plans_9 p.5); E6.3 P-CL3 ""CLARIFIER DRIVE NO.3"" (plans_10 p.4)",Cross-lane: Process & Mechanical. Started from the Train No.3 control panel (full-voltage starter). || [Merge] Exceptions: #33.
L-0282,PROPOSED-Train-3-Submersible-Mixer-A,Train No.3 submersible mixer A,Process-Mechanical,Electrical & Controls,Train No.3,New,E3.1; E6.3,Not linked (PROPOSED tag is not printed; no boxed anchor matched),CWP 46,Treatment Equipment,"1 (equipment, Inferred per 04); 6 (power and control)",None found,None found,None found,None found (no MTO line: no tied callout and no tag found on a cited sheet),None found (no spec section cited in rev0),E3.1 (sheet); E6.3 (sheet),1,SUB E3.1-01 (sheet),tag 0; spec 0; sheet 1,Not stated,0,None found,tag 0; spec 0; sheet 0,Not stated,None found (Add. 4 checked; Addenda 1-3 not staged),None found,0,None found,#32 (tag),46-C04 Treatment Equipment — Train 3,2023-08-01,2024-07-08,2023-03-31,Not started (baseline: no progress entered),Inferred,"E3.1 key note 1, plan label ""SUBMERSIBLE MIXER MOTOR AND LOCAL DISCONNECT (TYP OF 2)"", conduit P-MX3A (plans_9 p.5); E6.3 P-MX3A ""CELL 3 SUBMERSIBLE MIXER 1"" (plans_10 p.4)",Cross-lane: Process & Mechanical. Governing spec 46 41 23 by title (Inferred). Seal-fail and over-temperature wiring back to the control panel (E3.1 key note). || [Merge] Exceptions: #32.
L-0283,PROPOSED-Train-3-Submersible-Mixer-B,Train No.3 submersible mixer B,Process-Mechanical,Electrical & Controls,Train No.3,New,E3.1; E6.3,Not linked (PROPOSED tag is not printed; no boxed anchor matched),CWP 46,Treatment Equipment,"1 (equipment, Inferred per 04); 6 (power and control)",None found,None found,None found,None found (no MTO line: no tied callout and no tag found on a cited sheet),None found (no spec section cited in rev0),E3.1 (sheet); E6.3 (sheet),1,SUB E3.1-01 (sheet),tag 0; spec 0; sheet 1,Not stated,0,None found,tag 0; spec 0; sheet 0,Not stated,None found (Add. 4 checked; Addenda 1-3 not staged),None found,0,None found,#32 (tag),46-C04 Treatment Equipment — Train 3,2023-08-01,2024-07-08,2023-03-31,Not started (baseline: no progress entered),Inferred,"E3.1 key note 1, plan label (TYP OF 2), conduit P-MX3B (plans_9 p.5); E6.3 P-MX3B ""CELL 3 SUBMERSIBLE MIXER 2"" (plans_10 p.4)",Cross-lane: Process & Mechanical. Governing spec 46 41 23 by title (Inferred). || [Merge] Exceptions: #32.
L-0284,PROPOSED-Train-3-Local-Disconnects,"Local motor disconnects, NEMA 4X Type 316 SS, for the clarifier drive and two mixers (3)",Electrical,Electrical & Controls,Train No.3,New,E3.1,Not linked (PROPOSED tag is not printed; no boxed anchor matched),CWP 26,"Electrical, Instrumentation & Controls",6,None found,None found,None found,None found (no MTO line: no tied callout and no tag found on a cited sheet),26 28 16,26 28 16 (spec); E3.1 (sheet),2,SUB 26 28 16-01 (spec); SUB E3.1-01 (sheet),tag 0; spec 1; sheet 1,Y,0,None found,tag 0; spec 0; sheet 0,N,None found (Add. 4 checked; Addenda 1-3 not staged),None found,0,None found,None found,"26-C14 Electrical, Instrumentation & Controls — Train 3",2023-08-01,2024-07-08,2023-03-14,Not started (baseline: no progress entered),Inferred,"E3.1 key note (""provide local motor disconnects for drive motor and mixer""), plan label ""(TYP OF 2)"", gen. note 4 (plans_9 p.5); Submittal: 26 28 16 ¶1.03 p.314 (catalog data per 26 05 00 ¶1.012)",Quantity 3 inferred: one drive motor plus two mixers.
L-0285,PROPOSED-Train-3-Pole-Light,"Platform pole light: 4-in square aluminum pole, 12 ft, receptacle, photocell, local switch; Lithonia ""#DXS0-LED-P3-30K-T3M-MVOLT-SPA-DNAXD"" (as printed) or equal",Electrical,Electrical & Controls,Train No.3,New,E3.1; E6.3,Not linked (PROPOSED tag is not printed; no boxed anchor matched),CWP 26,"Electrical, Instrumentation & Controls",6,None found,None found,None found,None found (no MTO line: no tied callout and no tag found on a cited sheet),26 51 19,26 51 19 (spec); E3.1 (sheet); E6.3 (sheet),3,SUB 26 51 19-01 (spec); SUB 26 51 19-02 (spec); SUB E3.1-01 (sheet),tag 0; spec 2; sheet 1,Y,1,ITP 26 51 19-01 (spec),tag 0; spec 1; sheet 0,Y,None found (Add. 4 checked; Addenda 1-3 not staged),None found,0,None found,None found,"26-C14 Electrical, Instrumentation & Controls — Train 3",2023-08-01,2024-07-08,2023-03-14,Not started (baseline: no progress entered),Verified,"E3.1 key note (plans_9 p.5); E6.3 P-TS3B 1"" 4 #12, Train No.3 control panel to pole light and receptacle (plans_10 p.4); Submittal: 26 51 19 ¶1.06 p.350 (product sheets, photometric reports where scheduled, WSEC control devices); Testing/startup: 26 51 19 ¶3.01 I p.351 (test and demonstrate lighting controls, as applicable)",Fed from the 120 V circuit in the Train No.3 control panel (key note 1 item 11). Secured to the handrail with stainless hardware.
L-0286,PROPOSED-SCADA-Computer-System,"SCADA computer system with Cat 6 network junction box, combo network/telephone outlet and SCADA alarm dialer connection",Controls,Electrical & Controls,Lab — existing Office/Lab/Shop Building,New,E0.3; E6.3; E7.0,Not linked (PROPOSED tag is not printed; no boxed anchor matched),CWP 26,"Electrical, Instrumentation & Controls","6 (extra SCADA/PLC programming, if ordered, is Item 17 — force account; 04)",None found,None found,None found,None found (no MTO line: no tied callout and no tag found on a cited sheet),26 80 00,26 80 00 (spec); E0.3 (sheet); E6.3 (sheet); E7.0 (sheet),1,SUB 26 80 00-00 (spec),tag 0; spec 1; sheet 0,Y,3,ITP 26 80 00-01 (spec); ITP 26 80 00-02 (spec); ITP E0.3-01 (sheet),tag 0; spec 2; sheet 1,Y,None found (Add. 4 checked; Addenda 1-3 not staged),OI-0361 (spec),2,OI-0258 (spec); OI-0374 (spec),None found,"26-C09 Electrical, Instrumentation & Controls — SCADA / PLC programming",2023-10-04,2024-07-26,2023-03-14,Not started (baseline: no progress entered),Verified-Visual,"E0.3 key note 1 and conduit tag S-LAB (plans_8 p.8); building name per E0.2 plan label ""EXISTING OFFICE/LAB/SHOP BUILDING"" (plans_8 p.7); E7.0 office: SCADA computer with alarm dialer, network switch, telephone (E), internet (E) (plans_10 p.5); E6.3 S-LAB 2"" 2 Cat 6, lab SCADA computer area to influent control panel (plans_10 p.4); Submittal: 26 80 00 ¶1.06 p.356 (hardware submittals before fabrication; control system documentation); Testing/startup: 26 80 00 ¶3.03–3.04 and ¶3.08 pp.371–372 (witnessed factory simulation; field acceptance test; programming, start-up, commissioning)",Final location in the lab coordinated with the Owner. Cat 6 to the network switch in the Influent Pump Station control panel; existing telephone circuit wired to the J-box for the alarm dialer.
L-0287,IP-1,"Influent Pump No.1, 3 HP, explosion-proof (XP), 4.8 FLA",Process-Mechanical,Electrical & Controls,Influent Pump Station,Not stated,E4.1; E4.2; E6.1; E6.3; E8.1; E8.2; E8.3; E8.4,"E4.1 p.70 [358.20,62.70,367.42,67.73] text-layer (tag); E4.2 p.71 [291.24,583.26,300.46,588.29] text-layer (+1 read) (tag); E6.1 p.74 [830.34,729.24,839.56,734.27] text-layer (+2 reads) (tag)",CWP 22,Plumbing & Process Pumps,"1 (equipment, Inferred per 04); 6 (power and control)",1,EA,MTO-0080 (tag),Verified — 1 line totaled,None found (no spec section cited in rev0),E4.1 (tag); E4.2 (tag); E6.1 (tag); E8.1 (tag); E8.2 (tag); E8.3 (tag); E8.4 (tag); E6.3 (sheet),3,SUB E6.1-01 (tag); SUB E4.1-01 (sheet); SUB E4.2-01 (sheet),tag 1; spec 0; sheet 2,Not stated,3,ITP E4.1-01 (sheet); ITP E8.1-01 (sheet); ITP E8.3-01 (sheet),tag 0; spec 0; sheet 3,Not stated,None found (Add. 4 checked; Addenda 1-3 not staged),OI-0371 (sheet),2,OI-0289 (tag); OI-0378 (sheet),#36 (tag); #167 (tag); #207 (tag),22-C01 Plumbing & Process Pumps — Influent pump station and flow splitter,2023-06-01,2023-10-25,2023-03-31,Not started (baseline: no progress entered),Verified-Visual,"E4.1 and E4.2 plan tag, motor marked 3 (plans_9 pp.6–7); E6.1 one-line and load calculations 3 HP (plans_10 p.2); E6.3 P-IP1 (plans_10 p.4); E8.1 full-voltage NEMA pump starters ""(INFLUENT PUMPS 1,2,3,4)"" and pump 1 hand-off-auto, run, fail, seal fail, overtemperature and reset on the IPS door (plans_11 p.5); E8.2 ""PUMP NO. 1, XP 4.8 FLA"", starter and overload (plans_11 p.6); E8.3 pump 1 inputs (plans_11 p.7); E8.4 output 0 ""INFLUENT PUMP #1 CALL TO RUN"" (plans_11 p.8)","Cross-lane: Process & Mechanical. Governing pump spec is in that lane. Fed from IPS 15/3 with contactor and overload (E6.1); E6.3 lists P-IP1 ""from MCC"" — see Issues. Generator factor 1. Local disconnect on the building wall within sight of the wet well (E4.1 key note 9).; Seal-fail and overtemperature relays (Mini-CAS or equal) furnished by the pump manufacturer, installed in the IPS panel (E8.1 key note 3).; Starter location is in conflict (IPS panel on E6.1/E8.1/E8.2/E9.1; MCC on E6.3 and in the E8.3 labels) — tracked at the IPS row and in Issues. || [Merge] Exceptions: #36, #167, #207."
L-0288,IP-2,"Influent Pump No.2, 3 HP, explosion-proof (XP), 4.8 FLA",Process-Mechanical,Electrical & Controls,Influent Pump Station,Not stated,E4.1; E4.2; E6.1; E6.3; E8.1; E8.2; E8.3; E8.4,"E4.1 p.70 [358.20,76.20,367.42,81.23] text-layer (tag); E4.2 p.71 [291.24,612.78,300.46,617.81] text-layer (+1 read) (tag); E6.1 p.74 [875.34,729.24,884.56,734.27] text-layer (+2 reads) (tag)",CWP 22,Plumbing & Process Pumps,"1 (equipment, Inferred per 04); 6 (power and control)",1,EA,MTO-0081 (tag),Verified — 1 line totaled,None found (no spec section cited in rev0),E4.1 (tag); E4.2 (tag); E6.1 (tag); E8.1 (tag); E8.2 (tag); E8.3 (tag); E8.4 (tag); E6.3 (sheet),3,SUB E4.1-01 (sheet); SUB E4.2-01 (sheet); SUB E6.1-01 (sheet),tag 0; spec 0; sheet 3,Not stated,3,ITP E4.1-01 (sheet); ITP E8.1-01 (sheet); ITP E8.3-01 (sheet),tag 0; spec 0; sheet 3,Not stated,None found (Add. 4 checked; Addenda 1-3 not staged),OI-0371 (sheet),1,OI-0378 (sheet),#36 (tag),22-C01 Plumbing & Process Pumps — Influent pump station and flow splitter,2023-06-01,2023-10-25,2023-03-31,Not started (baseline: no progress entered),Verified-Visual,"E4.1 and E4.2 plan tag, motor marked 3 (plans_9 pp.6–7); E6.1 one-line and load calculations 3 HP (plans_10 p.2); E6.3 P-IP2 (plans_10 p.4); E8.1 full-voltage NEMA pump starters ""(INFLUENT PUMPS 1,2,3,4)"" and pump 2 hand-off-auto, run, fail, seal fail, overtemperature and reset on the IPS door (plans_11 p.5); E8.2 ""PUMP NO. 2, XP 4.8 FLA"", starter and overload (plans_11 p.6); E8.3 pump 2 inputs (plans_11 p.7); E8.4 output 1 ""INFLUENT PUMP #2 CALL TO RUN"" (plans_11 p.8)","Cross-lane: Process & Mechanical. Governing pump spec is in that lane. Fed from IPS 15/3 with contactor and overload (E6.1); E6.3 lists P-IP2 ""from MCC"" — see Issues. Generator factor 0. Local disconnect on the building wall within sight of the wet well (E4.1 key note 9).; Seal-fail and overtemperature relays (Mini-CAS or equal) furnished by the pump manufacturer, installed in the IPS panel (E8.1 key note 3).; Starter location is in conflict (IPS panel on E6.1/E8.1/E8.2/E9.1; MCC on E6.3 and in the E8.3 labels) — tracked at the IPS row and in Issues. E8.3 lists a ""VFD FAULT"" input and no ""auto selected"" input for pump 2 — see Issues. || [Merge] Exceptions: #36."
L-0289,IP-3,"Influent Pump No.3, 5 HP, explosion-proof (XP), 7.6 FLA",Process-Mechanical,Electrical & Controls,Influent Pump Station,Not stated,E4.1; E4.2; E6.1; E6.3; E8.1; E8.2; E8.3; E8.4,"E4.1 p.70 [436.50,62.70,445.72,67.73] text-layer (tag); E4.2 p.71 [514.98,83.76,524.20,88.79] text-layer (+1 read) (tag); E6.1 p.74 [920.16,729.06,929.38,734.09] text-layer (+2 reads) (tag)",CWP 22,Plumbing & Process Pumps,"1 (equipment, Inferred per 04); 6 (power and control)",1,EA,MTO-0082 (tag),Verified — 1 line totaled,None found (no spec section cited in rev0),E4.1 (tag); E4.2 (tag); E6.1 (tag); E8.1 (tag); E8.2 (tag); E8.3 (tag); E8.4 (tag); E6.3 (sheet),3,SUB E4.1-01 (sheet); SUB E4.2-01 (sheet); SUB E6.1-01 (sheet),tag 0; spec 0; sheet 3,Not stated,3,ITP E4.1-01 (sheet); ITP E8.1-01 (sheet); ITP E8.3-01 (sheet),tag 0; spec 0; sheet 3,Not stated,None found (Add. 4 checked; Addenda 1-3 not staged),OI-0371 (sheet),1,OI-0378 (sheet),#36 (tag),22-C01 Plumbing & Process Pumps — Influent pump station and flow splitter,2023-06-01,2023-10-25,2023-03-31,Not started (baseline: no progress entered),Verified-Visual,"E4.1 and E4.2 plan tag, motor marked 5 (plans_9 pp.6–7); E6.1 one-line and load calculations 5 HP (plans_10 p.2); E6.3 P-IP3 (plans_10 p.4); E8.1 full-voltage NEMA pump starters ""(INFLUENT PUMPS 1,2,3,4)"" and pump 3 hand-off-auto, run, fail, seal fail, overtemperature and reset on the IPS door (plans_11 p.5); E8.2 ""PUMP NO. 3, XP 7.6 FLA"", starter and overload (plans_11 p.6); E8.3 pump 3 inputs (plans_11 p.7); E8.4 output 2 ""INFLUENT PUMP #3 CALL TO RUN"" (plans_11 p.8)","Cross-lane: Process & Mechanical. Governing pump spec is in that lane. Fed from IPS 20/3 with contactor and overload (E6.1); E6.3 lists P-IP3 ""from MCC"" — see Issues. Generator factor 0. Local disconnect on the building wall within sight of the wet well (E4.1 key note 9).; Seal-fail and overtemperature relays (Mini-CAS or equal) furnished by the pump manufacturer, installed in the IPS panel (E8.1 key note 3).; Starter location is in conflict (IPS panel on E6.1/E8.1/E8.2/E9.1; MCC on E6.3 and in the E8.3 labels) — tracked at the IPS row and in Issues. || [Merge] Exceptions: #36."
L-0290,IP-4,"Influent Pump No.4, 5 HP, explosion-proof (XP), 7.6 FLA",Process-Mechanical,Electrical & Controls,Influent Pump Station,Not stated,E4.1; E4.2; E6.1; E6.3; E8.1; E8.2; E8.3; E8.4,"E4.1 p.70 [436.50,76.20,445.72,81.23] text-layer (tag); E4.2 p.71 [508.14,181.32,517.36,186.35] text-layer (+1 read) (tag); E6.1 p.74 [965.34,729.06,974.56,734.09] text-layer (+2 reads) (tag)",CWP 22,Plumbing & Process Pumps,"1 (equipment, Inferred per 04); 6 (power and control)",1,EA,MTO-0083 (tag),Verified — 1 line totaled,None found (no spec section cited in rev0),E4.1 (tag); E4.2 (tag); E6.1 (tag); E8.1 (tag); E8.2 (tag); E8.3 (tag); E8.4 (tag); E6.3 (sheet),3,SUB E4.1-01 (sheet); SUB E4.2-01 (sheet); SUB E6.1-01 (sheet),tag 0; spec 0; sheet 3,Not stated,3,ITP E4.1-01 (sheet); ITP E8.1-01 (sheet); ITP E8.3-01 (sheet),tag 0; spec 0; sheet 3,Not stated,None found (Add. 4 checked; Addenda 1-3 not staged),OI-0371 (sheet),2,OI-0289 (tag); OI-0378 (sheet),#36 (tag); #167 (tag); #207 (tag),22-C01 Plumbing & Process Pumps — Influent pump station and flow splitter,2023-06-01,2023-10-25,2023-03-31,Not started (baseline: no progress entered),Verified-Visual,"E4.1 and E4.2 plan tag, motor marked 5 (plans_9 pp.6–7); E6.1 one-line and load calculations 5 HP (plans_10 p.2); E6.3 P-IP4 (plans_10 p.4); E8.1 full-voltage NEMA pump starters ""(INFLUENT PUMPS 1,2,3,4)"" and pump 4 hand-off-auto, run, fail, seal fail, overtemperature and reset on the IPS door (plans_11 p.5); E8.2 ""PUMP NO. 4, XP 7.6 FLA"", starter and overload (plans_11 p.6); E8.3 pump 4 inputs (plans_11 p.7); E8.4 output 3 ""INFLUENT PUMP #4 CALL TO RUN"" (plans_11 p.8)","Cross-lane: Process & Mechanical. Governing pump spec is in that lane. Fed from IPS 20/3 with contactor and overload (E6.1); E6.3 lists P-IP4 ""from MCC"" — see Issues. Generator factor 0. Local disconnect on the building wall within sight of the wet well (E4.1 key note 9).; Seal-fail and overtemperature relays (Mini-CAS or equal) furnished by the pump manufacturer, installed in the IPS panel (E8.1 key note 3).; Starter location is in conflict (IPS panel on E6.1/E8.1/E8.2/E9.1; MCC on E6.3 and in the E8.3 labels) — tracked at the IPS row and in Issues. || [Merge] Exceptions: #36, #167, #207."
L-0291,F1 (Influent Pump Station),"Float switch F1, Eco-Float GP60NONC, non-mercury NO/NC — redundant large lag on at 19.00 (with timer)",Controls,Electrical & Controls,Influent Pump Station,New,E4.1; E4.2; E6.3; E8.1; E8.3; E10.1,"E4.2 p.71 [376.74,109.86,382.61,114.89] text-layer (+2 reads) (tag); E8.3 p.87 [257.72,528.36,263.59,533.39] text-layer (tag)",CWP 26,"Electrical, Instrumentation & Controls",6,1,EA,MTO-0084 (tag),Verified — 1 line totaled,26 80 00,E4.2 (tag); E8.3 (tag); 26 80 00 (spec); E4.1 (sheet); E6.3 (sheet); E8.1 (sheet); E10.1 (sheet),3,SUB 26 80 00-00 (spec); SUB E4.1-01 (sheet); SUB E4.2-01 (sheet),tag 0; spec 1; sheet 2,Y,5,ITP 26 80 00-01 (spec); ITP 26 80 00-02 (spec); ITP E4.1-01 (sheet); ITP E8.1-01 (sheet); ITP E8.3-01 (sheet),tag 0; spec 2; sheet 3,Y,None found (Add. 4 checked; Addenda 1-3 not staged),OI-0361 (spec); OI-0364 (sheet),4,OI-0475 (tag); OI-0258 (spec); OI-0374 (spec); OI-0378 (sheet),#40 (tag),"26-C08 Electrical, Instrumentation & Controls — Influent pump station and flow splitter",2023-06-01,2023-10-25,2023-03-14,Not started (baseline: no progress entered),Inferred,"E4.2 key note 2 and level control table (plans_9 p.7); E4.1 S-FLT1 (plans_9 p.6); E6.3 S-FLT1 1"" 2 #14, wet well handhole to influent control panel (plans_10 p.4); E8.1 intrinsic safety barriers for floats; float-activated light and float test on the IPS door (plans_11 p.5); E8.3 input ""FLOAT F1"" through ISR-F1B and high-level float control circuit: CRH1 ""HIGH FLOAT STARTS PUMP 1"", TDR1 0–60 s time-off delay (plans_11 p.7); E10.1 wet well instrumentation detail and intrinsically safe relay connection detail (plans_12 p.6); Submittal: 26 80 00 ¶1.06 p.356 (hardware submittals before fabrication; control system documentation); Testing/startup: 26 80 00 ¶3.03–3.04 and ¶3.08 pp.371–372 (witnessed factory simulation; field acceptance test; programming, start-up, commissioning)",Redundant backup to the level transducer (E4.2 table). Own conduit per cable (E4.1 key note 1). Status New inferred: specified by make and model and wired on new conduit.; E8.3 wires this float to start pump 1; E4.2 names its duty by pump size — float-to-pump conflict tracked at the IPS row and in Issues. || [Merge] Exceptions: #40.
L-0292,F2 (Influent Pump Station),"Float switch F2, Eco-Float GP60NONC, non-mercury NO/NC — redundant large lead on at 18.50",Controls,Electrical & Controls,Influent Pump Station,New,E4.1; E4.2; E6.3; E8.1; E8.3; E10.1,"E4.2 p.71 [443.70,137.94,449.57,142.97] text-layer (+4 reads) (tag); E8.3 p.87 [257.72,549.96,263.59,554.99] text-layer (tag)",CWP 26,"Electrical, Instrumentation & Controls",6,1,EA,MTO-0085 (tag),Verified — 1 line totaled,26 80 00,E4.2 (tag); E8.3 (tag); 26 80 00 (spec); E4.1 (sheet); E6.3 (sheet); E8.1 (sheet); E10.1 (sheet),3,SUB 26 80 00-00 (spec); SUB E4.1-01 (sheet); SUB E4.2-01 (sheet),tag 0; spec 1; sheet 2,Y,5,ITP 26 80 00-01 (spec); ITP 26 80 00-02 (spec); ITP E4.1-01 (sheet); ITP E8.1-01 (sheet); ITP E8.3-01 (sheet),tag 0; spec 2; sheet 3,Y,None found (Add. 4 checked; Addenda 1-3 not staged),OI-0361 (spec); OI-0364 (sheet),3,OI-0258 (spec); OI-0374 (spec); OI-0378 (sheet),#40 (tag),"26-C08 Electrical, Instrumentation & Controls — Influent pump station and flow splitter",2023-06-01,2023-10-25,2023-03-14,Not started (baseline: no progress entered),Inferred,"E4.2 key note 2 and level control table (plans_9 p.7); E4.1 S-FLT2 (plans_9 p.6); E6.3 S-FLT2 1"" 2 #14, wet well handhole to influent control panel (plans_10 p.4); E8.1 intrinsic safety barriers for floats; float-activated light and float test on the IPS door (plans_11 p.5); E8.3 input ""FLOAT F2"" through ISR-F2B and high-level float control circuit: CRH2 ""HIGH FLOAT STARTS PUMP 2"", TDR2 0–60 s time-off delay (plans_11 p.7); E10.1 wet well instrumentation detail and intrinsically safe relay connection detail (plans_12 p.6); Submittal: 26 80 00 ¶1.06 p.356 (hardware submittals before fabrication; control system documentation); Testing/startup: 26 80 00 ¶3.03–3.04 and ¶3.08 pp.371–372 (witnessed factory simulation; field acceptance test; programming, start-up, commissioning)",Redundant backup to the level transducer (E4.2 table). Own conduit per cable (E4.1 key note 1). Status New inferred: specified by make and model and wired on new conduit.; E8.3 wires this float to start pump 2; E4.2 names its duty by pump size — float-to-pump conflict tracked at the IPS row and in Issues. || [Merge] Exceptions: #40.
L-0293,F3 (Influent Pump Station),"Float switch F3, Eco-Float GP60NONC, non-mercury NO/NC — redundant small lag on at 18.00",Controls,Electrical & Controls,Influent Pump Station,New,E4.1; E4.2; E6.3; E8.1; E8.3; E10.1,"E4.2 p.71 [443.70,166.56,449.57,171.59] text-layer (+4 reads) (tag); E8.3 p.87 [257.72,571.38,263.59,576.41] text-layer (tag)",CWP 26,"Electrical, Instrumentation & Controls",6,1,EA,MTO-0086 (tag),Verified — 1 line totaled,26 80 00,E4.2 (tag); E8.3 (tag); 26 80 00 (spec); E4.1 (sheet); E6.3 (sheet); E8.1 (sheet); E10.1 (sheet),3,SUB 26 80 00-00 (spec); SUB E4.1-01 (sheet); SUB E4.2-01 (sheet),tag 0; spec 1; sheet 2,Y,5,ITP 26 80 00-01 (spec); ITP 26 80 00-02 (spec); ITP E4.1-01 (sheet); ITP E8.1-01 (sheet); ITP E8.3-01 (sheet),tag 0; spec 2; sheet 3,Y,None found (Add. 4 checked; Addenda 1-3 not staged),OI-0361 (spec); OI-0364 (sheet),3,OI-0258 (spec); OI-0374 (spec); OI-0378 (sheet),#40 (tag),"26-C08 Electrical, Instrumentation & Controls — Influent pump station and flow splitter",2023-06-01,2023-10-25,2023-03-14,Not started (baseline: no progress entered),Inferred,"E4.2 key note 2 and level control table (plans_9 p.7); E4.1 S-FLT3 (plans_9 p.6); E6.3 S-FLT3 1"" 2 #14, wet well handhole to influent control panel (plans_10 p.4); E8.1 intrinsic safety barriers for floats; float-activated light and float test on the IPS door (plans_11 p.5); E8.3 input ""FLOAT F3"" through ISR-F3B and high-level float control circuit: CRH3 ""HIGH FLOAT STARTS PUMP 3"", TDR3 0–60 s time-off delay (plans_11 p.7); E10.1 wet well instrumentation detail and intrinsically safe relay connection detail (plans_12 p.6); Submittal: 26 80 00 ¶1.06 p.356 (hardware submittals before fabrication; control system documentation); Testing/startup: 26 80 00 ¶3.03–3.04 and ¶3.08 pp.371–372 (witnessed factory simulation; field acceptance test; programming, start-up, commissioning)",Redundant backup to the level transducer (E4.2 table). Own conduit per cable (E4.1 key note 1). Status New inferred: specified by make and model and wired on new conduit.; E8.3 wires this float to start pump 3; E4.2 names its duty by pump size — float-to-pump conflict tracked at the IPS row and in Issues. || [Merge] Exceptions: #40.
L-0294,F4 (Influent Pump Station),"Float switch F4, Eco-Float GP60NONC, non-mercury NO/NC — redundant small lead on at 17.50",Controls,Electrical & Controls,Influent Pump Station,New,E4.1; E4.2; E6.3; E8.1; E8.3; E10.1,"E4.2 p.71 [376.74,166.38,382.61,171.41] text-layer (+3 reads) (tag); E8.3 p.87 [257.72,592.98,263.59,598.01] text-layer (tag)",CWP 26,"Electrical, Instrumentation & Controls",6,1,EA,MTO-0087 (tag),Verified — 1 line totaled,26 80 00,E4.2 (tag); 26 80 00 (spec); E4.1 (sheet); E6.3 (sheet); E8.1 (sheet); E8.3 (sheet); E10.1 (sheet),3,SUB 26 80 00-00 (spec); SUB E4.1-01 (sheet); SUB E4.2-01 (sheet),tag 0; spec 1; sheet 2,Y,5,ITP 26 80 00-01 (spec); ITP 26 80 00-02 (spec); ITP E4.1-01 (sheet); ITP E8.1-01 (sheet); ITP E8.3-01 (sheet),tag 0; spec 2; sheet 3,Y,None found (Add. 4 checked; Addenda 1-3 not staged),OI-0361 (spec); OI-0364 (sheet),4,OI-0475 (tag); OI-0258 (spec); OI-0374 (spec); OI-0378 (sheet),#40 (tag),"26-C08 Electrical, Instrumentation & Controls — Influent pump station and flow splitter",2023-06-01,2023-10-25,2023-03-14,Not started (baseline: no progress entered),Inferred,"E4.2 key note 2 and level control table (plans_9 p.7); E4.1 S-FLT4 (plans_9 p.6); E6.3 S-FLT4 1"" 2 #14, wet well handhole to influent control panel (plans_10 p.4); E8.1 intrinsic safety barriers for floats; float-activated light and float test on the IPS door (plans_11 p.5); E8.3 input ""FLOAT F4"" through ISR-F4B and high-level float control circuit: CRH4 ""HIGH FLOAT STARTS PUMP 4"", TDR4 0–60 s time-off delay (plans_11 p.7); E10.1 wet well instrumentation detail and intrinsically safe relay connection detail (plans_12 p.6); Submittal: 26 80 00 ¶1.06 p.356 (hardware submittals before fabrication; control system documentation); Testing/startup: 26 80 00 ¶3.03–3.04 and ¶3.08 pp.371–372 (witnessed factory simulation; field acceptance test; programming, start-up, commissioning)",Redundant backup to the level transducer (E4.2 table). Own conduit per cable (E4.1 key note 1). Status New inferred: specified by make and model and wired on new conduit.; E8.3 wires this float to start pump 4; E4.2 names its duty by pump size — float-to-pump conflict tracked at the IPS row and in Issues. || [Merge] Exceptions: #40.
L-0295,LT (Influent Pump Station),"Submersible level transducer: WIKA pressure transmitter, 316 SS, 0–15 psi, LevelGuard, 4–20 mA loop powered, vented, NEMA 4X termination enclosure",Controls,Electrical & Controls,Influent Pump Station,New,E4.1; E4.2; E6.3; E8.1; E8.5; E10.1,"E4.1 p.70 [453.60,123.90,470.92,128.93] text-layer (tag); E4.2 p.71 [376.74,137.58,382.61,142.61] text-layer (+1 read) (tag); E6.3 p.76 [629.46,566.10,642.60,574.38] ocr (+5 reads) (tag); E8.5 p.89 [181.08,225.06,186.95,230.09] text-layer (tag)",CWP 26,"Electrical, Instrumentation & Controls",6,1,EA,MTO-0088 (tag),Verified — 1 line totaled,26 80 00,E4.2 (tag); E8.1 (tag); E8.5 (tag); 26 80 00 (spec); E4.1 (sheet); E6.3 (sheet); E10.1 (sheet),3,SUB 26 80 00-00 (spec); SUB E4.1-01 (sheet); SUB E4.2-01 (sheet),tag 0; spec 1; sheet 2,Y,4,ITP 26 80 00-01 (spec); ITP 26 80 00-02 (spec); ITP E4.1-01 (sheet); ITP E8.1-01 (sheet),tag 0; spec 2; sheet 2,Y,None found (Add. 4 checked; Addenda 1-3 not staged),OI-0361 (spec); OI-0364 (sheet),3,OI-0258 (spec); OI-0374 (spec); OI-0378 (sheet),#39 (tag),"26-C08 Electrical, Instrumentation & Controls — Influent pump station and flow splitter",2023-06-01,2023-10-25,2023-03-14,Not started (baseline: no progress entered),Unresolved,"E4.2 key note 1, elevation and level control table (plans_9 p.7); E4.1 S-LT-IP (plans_9 p.6); E6.3 S-LT-IP 1"" 1 #18TSP (plans_10 p.4); E8.1 intrinsic safety barrier for the level transducer; ""INFLUENT WET WELL LEVEL"" display on the IPS door (plans_11 p.5); E8.5 analog input 0 ""WET WELL LEVEL 0-15 FT"" through an intrinsic safety barrier and panel level indicator (plans_12 p.1); E10.1 wet well instrumentation detail and intrinsically safe relay connection detail (plans_12 p.6); Submittal: 26 80 00 ¶1.06 p.356 (hardware submittals before fabrication; control system documentation); Testing/startup: 26 80 00 ¶3.03–3.04 and ¶3.08 pp.371–372 (witnessed factory simulation; field acceptance test; programming, start-up, commissioning)",Normal pump sequence and high/low alarms run on the transducer (E4.2 table). Status New inferred: specified by make and model and wired on new conduit.; Range conflict: 0–15 psi on E4.2 vs 0–15 ft at the PLC on E8.5 — see Issues. || [Merge] Exceptions: #39.
L-0296,IPS,"Influent Pump Station control panel, 480 V 3-ph 3-W, NEMA 4X SS: 60 A main, starters for IP-1 to IP-4, T3 and LP2, Allen-Bradley CompactLogix PLC (1768-ENBT), network switch, flow-meter transmitters",Controls,Electrical & Controls,Influent Pump Station,New,E4.1; E6.1; E6.3; E7.0; E7.2; E8.1; E8.2; E8.3; E8.4; E8.5; E8.6; E9.1,"E6.1 p.74 [802.62,546.72,810.73,551.75] text-layer (tag)",CWP 26,"Electrical, Instrumentation & Controls",6,1,EA,MTO-0089 (tag),Verified — 1 line totaled,26 80 00,05 52 00 (tag); 26 22 13 (tag); 26 80 00 (tag); 33 31 00 (tag); 33 33 00 (tag); E4.1 (tag); E4.2 (tag); E6.1 (tag); E6.3 (tag); E7.0 (tag); E7.2 (tag); E8.1 (tag); E8.2 (tag); E8.5 (tag); E9.1 (tag); E9.3 (tag); E8.3 (sheet); E8.4 (sheet); E8.6 (sheet),4,SUB 26 80 00-00 (spec); SUB E4.1-01 (sheet); SUB E6.1-01 (sheet); SUB E7.2-01 (sheet),tag 0; spec 1; sheet 3,Y,5,ITP 26 80 00-01 (spec); ITP 26 80 00-02 (spec); ITP E4.1-01 (sheet); ITP E8.1-01 (sheet); ITP E8.3-01 (sheet),tag 0; spec 2; sheet 3,Y,None found (Add. 4 checked; Addenda 1-3 not staged),OI-0361 (spec); OI-0371 (sheet),3,OI-0258 (spec); OI-0374 (spec); OI-0378 (sheet),None found,"26-C08 Electrical, Instrumentation & Controls — Influent pump station and flow splitter",2023-06-01,2023-10-25,2023-03-14,Not started (baseline: no progress entered),Unresolved,"E6.1 one-line label ""IPS INFLUENT PUMP STATION CONTROL PANEL - 480V, THREE PHASE, 3 WIRE, NEMA 4X SS"" (plans_10 p.2); E4.1 plan label (plans_9 p.6); E6.3 P-ICP 2"" 3 #4 + #10 G and S-ICP (plans_10 p.4); E7.0 (plans_10 p.5); E8.1 elevations, swing-out door detail, backpanel and key notes 1–4 (plans_11 p.5); E7.2 typical power wiring (plans_10 p.7); E8.2 power and pump control wiring (plans_11 p.6); E8.3–E8.6 I/O (plans_11 pp.7–8; plans_12 pp.1–2); E9.1 MCC feeder NP-2E (plans_12 p.3); 26 80 00 ¶2.02 A.3.b ""Influent Control Panel"" (p.357); Submittal: 26 80 00 ¶1.06 p.356 (hardware submittals before fabrication; control system documentation); Testing/startup: 26 80 00 ¶3.03–3.04 and ¶3.08 pp.371–372 (witnessed factory simulation; field acceptance test; programming, start-up, commissioning)","Fed from MCC 60/3 via P-ICP. Starters: 15/3 IP-1, IP-2; 20/3 IP-3, IP-4, each contactor and overload (full-voltage by symbol — Inferred); 30/2 to T3. Takes floats/transducer, five flow meters, influent sampler and polymer flow pace, dewatering skid Cat 6; drives the WAS solenoids (P-WSV). E6.3 calls it ""influent control panel"". Network switch per E0.3 key note 1 and E7.0. System integrator designs the panel (E7.0 gen. note 1). Status New inferred: new one-line equipment.; E8.1: NEMA 4X Type 316 SS with drip shield on a concrete equipment pad per civil; lockable outer door, swing-out inner door with per-pump HOA, run, fail, seal fail, overtemperature and reset, four float-activated lights with test buttons, wet well level display; main 480 V disconnect, LP2 and its transformer, phase monitor, pump breakers and full-voltage NEMA starters for influent pumps 1–4 (confirms the E6.1 symbols), seal-fail relays from the pump manufacturer, intrinsic safety barriers for floats and transducer, flow transmitters for influent, Cell 1 (future space), Cell 2, Cell 3 and plant drain, panel heater (800 W per E7.2) and thermostat, area light HOA, GFCI receptacle.; E8.2: surge suppressor, phase-fail relay, CPT1, starter and overload per pump, high-float bypass of the PLC contact. I/O: two 16-point input cards (32 of 32 used; general note 2 wants 20% spare, so a third card — Inferred), one 16-point output card (11 used), one 8-channel analog input card (3 used), one 8-channel analog output card (2 used). Hardwired high-float circuit with TDR1–4 (0–60 s) and CRH1–4. Unresolved: starter location (E6.3/E8.3 say MCC), pump 2 input list, float-to-pump mapping — see Issues."
L-0297,T3,"Transformer T3, 10 kVA, 480–120/240V (inside IPS panel; feeds LP2)",Electrical,Electrical & Controls,Influent Pump Station,New,E6.1; E8.1,"E6.1 p.74 [1045.08,612.60,1050.95,617.63] text-layer (tag)",CWP 26,"Electrical, Instrumentation & Controls",6,1,EA,MTO-0090 (tag),Verified — 1 line totaled,26 22 13,26 22 13 (tag); C4.1 (tag); E6.1 (tag); E8.1 (tag),2,SUB 26 22 13-01 (spec); SUB E6.1-01 (sheet),tag 0; spec 1; sheet 1,Y,1,ITP E8.1-01 (sheet),tag 0; spec 0; sheet 1,N,None found (Add. 4 checked; Addenda 1-3 not staged),OI-0371 (sheet),0,None found,None found,"26-C08 Electrical, Instrumentation & Controls — Influent pump station and flow splitter",2023-06-01,2023-10-25,2023-03-14,Not started (baseline: no progress entered),Inferred,"E6.1 one-line and load calculations ""LP-2 influent pump station load center 10 kVA"" (plans_10 p.2); E8.1 LP2 ""with transformer"" inside the IPS panel (plans_11 p.5); Submittal: 26 22 13 ¶1.05 p.297 (catalog data per 26 05 00)",Fed from IPS 30/2. Status New inferred: part of the new IPS panel.; Mounted inside the IPS panel (E8.1).
L-0298,LP2,"Panel LP2 (Influent Pump Station panel), 120/240 V 1-ph 3-W, 100 A bus, 60 A main breaker, 10,000 AIC, surface mounted",Electrical,Electrical & Controls,Influent Pump Station,New,E4.1; E6.1; E6.2; E8.1,"E4.1 p.70 [313.56,261.60,326.98,266.63] text-layer (+11 reads) (tag); E6.2 p.75 [754.33,627.23,772.22,637.29] text-layer (+2 reads) (tag); E8.1 p.85 [887.17,488.40,896.12,493.43] text-layer (tag)",CWP 26,"Electrical, Instrumentation & Controls",6,1,EA,MTO-0091 (tag),Verified — 1 line totaled,26 24 16,26 24 16 (tag); E4.1 (tag); E6.1 (tag); E6.2 (tag); E7.2 (tag); E8.1 (tag); E9.3 (tag),4,SUB E6.2-01 (tag); SUB 26 24 16-01 (spec); SUB E4.1-01 (sheet); SUB E6.1-01 (sheet),tag 1; spec 1; sheet 2,Y,3,ITP 26 24 16-01 (spec); ITP E4.1-01 (sheet); ITP E8.1-01 (sheet),tag 0; spec 1; sheet 2,Y,None found (Add. 4 checked; Addenda 1-3 not staged),OI-0371 (sheet),1,OI-0378 (sheet),None found,"26-C08 Electrical, Instrumentation & Controls — Influent pump station and flow splitter",2023-06-01,2023-10-25,2023-03-14,Not started (baseline: no progress entered),Inferred,"E6.2 Panel LP2 schedule dated September 15, 2022 (plans_10 p.3); E6.1 load center via T3 and load calcs (plans_10 p.2); E4.1 circuit callouts LP2-2 to LP2-11 (plans_9 p.6); E8.1 ""120/240V PANEL LP2 WITH TRANSFORMER AND OVERCURRENT PROTECTION (NOT SHOWN)"" inside the IPS panel (plans_11 p.5); Submittal: 26 24 16 ¶1.02 p.300 (catalog data per 26 05 00); Testing/startup: 26 24 16 ¶3.03 pp.303–304 (inspection, phase load balancing within 20%, torque check)","Loads: pump station control circuits, wall pack lighting, ventilation control panel, EF-3/EF-4/EF-5, H2S and methane sensors, polymer feed pump and influent sampler receptacles; demand 7.8 kVA, 32.3 A. Printed LP2 (E4.1, E6.2) and LP-2 (E6.1 load calcs). Status New inferred.; 26 24 16 ¶2.02 H: surge arrester with indicator required on every panel — not shown on the E6.2 schedule; complementary per 26 05 00 ¶1.011 B."
L-0299,PROPOSED-Influent-Pump-Local-Disconnects,Influent pump motor local disconnects (4) on the building wall within sight of the wet well; outdoor enclosures lockable Type 316 SS with drip shields,Electrical,Electrical & Controls,Influent Pump Station,New,E4.1; E6.1,Not linked (PROPOSED tag is not printed; no boxed anchor matched),CWP 26,"Electrical, Instrumentation & Controls",6,None found,None found,None found,None found (no MTO line: no tied callout and no tag found on a cited sheet),26 28 16,26 28 16 (spec); E4.1 (sheet); E6.1 (sheet),3,SUB 26 28 16-01 (spec); SUB E4.1-01 (sheet); SUB E6.1-01 (sheet),tag 0; spec 1; sheet 2,Y,1,ITP E4.1-01 (sheet),tag 0; spec 0; sheet 1,N,None found (Add. 4 checked; Addenda 1-3 not staged),OI-0371 (sheet),1,OI-0378 (sheet),None found,"26-C08 Electrical, Instrumentation & Controls — Influent pump station and flow splitter",2023-06-01,2023-10-25,2023-03-14,Not started (baseline: no progress entered),Verified-Visual,"E4.1 key note 9, plan label ""INFLUENT PUMP MOTOR DISCONNECTS - TYP OF 4"" and gen. note 4 (plans_9 p.6); E6.1 key note 4 (plans_10 p.2); Submittal: 26 28 16 ¶1.03 p.314 (catalog data per 26 05 00 ¶1.012)",Final location coordinated during construction (key note 9).
L-0300,PROPOSED-Influent-Wet-Well-Power-Handhole,"Influent wet well pump power handhole, precast, traffic rated, solid bottom with sump and drain",Electrical,Electrical & Controls,Influent Pump Station,New,E4.1; E4.2; E10.1,Not linked (PROPOSED tag is not printed; no boxed anchor matched),CWP 26,"Electrical, Instrumentation & Controls",6,None found,None found,None found,None found (no MTO line: no tied callout and no tag found on a cited sheet),26 05 33,26 05 33 (spec); E4.1 (sheet); E4.2 (sheet); E10.1 (sheet),4,SUB 26 05 33-01 (spec); SUB 26 05 33-02 (spec); SUB E4.1-01 (sheet); SUB E4.2-01 (sheet),tag 0; spec 2; sheet 2,N,2,ITP 26 05 33-01 (spec); ITP E4.1-01 (sheet),tag 0; spec 1; sheet 1,N,None found (Add. 4 checked; Addenda 1-3 not staged),OI-0364 (sheet),1,OI-0378 (sheet),None found,"26-C08 Electrical, Instrumentation & Controls — Influent pump station and flow splitter",2023-06-01,2023-10-25,2023-03-14,Not started (baseline: no progress entered),Verified-Visual,"E4.1 key note 1 and plan label ""POWER AND INSTRUMENT HANDHOLES"" (plans_9 p.6); E4.2 hazardous area connection detail 1 (plans_9 p.7); E10.1 electrical handhole detail: Oldcastle Precast #233-LA (vault #233-BL, cover #23-2436P) or equal, galvanized diamond-plate traffic cover with locking latch, 6 in sump and drainage rock, 18 x 18 in knockouts, 8 ft copper-clad ground rod, ""ELECTRIC""/""SIGNAL"" label (plans_12 p.6); 26 05 33 ¶2.07 (p.294): precast 3,000 psi, H-20 traffic covers, solid bottoms with sumps",Cable connection point with explosion-proof junction boxes and conduit seals per NEC 500; sized per NEC 314.28(A)/314.30(A) (E4.2). Locations schematic (E4.1 gen. note 5).
L-0301,PROPOSED-Influent-Wet-Well-Instrument-Handhole,"Influent wet well instrumentation handhole, precast, traffic rated, solid bottom with sump and drain",Electrical,Electrical & Controls,Influent Pump Station,New,E4.1; E4.2; E6.3; E10.1,Not linked (PROPOSED tag is not printed; no boxed anchor matched),CWP 26,"Electrical, Instrumentation & Controls",6,None found,None found,None found,None found (no MTO line: no tied callout and no tag found on a cited sheet),26 05 33,26 05 33 (spec); E4.1 (sheet); E4.2 (sheet); E6.3 (sheet); E10.1 (sheet),4,SUB 26 05 33-01 (spec); SUB 26 05 33-02 (spec); SUB E4.1-01 (sheet); SUB E4.2-01 (sheet),tag 0; spec 2; sheet 2,N,2,ITP 26 05 33-01 (spec); ITP E4.1-01 (sheet),tag 0; spec 1; sheet 1,N,None found (Add. 4 checked; Addenda 1-3 not staged),OI-0364 (sheet),1,OI-0378 (sheet),None found,"26-C08 Electrical, Instrumentation & Controls — Influent pump station and flow splitter",2023-06-01,2023-10-25,2023-03-14,Not started (baseline: no progress entered),Verified-Visual,"E4.1 key note 1 and plan label (plans_9 p.6); E4.2 detail 1 ""INSTRUMENTATION HANDHOLE"" (plans_9 p.7); E6.3 ""influent wet well handhole"" for S-FLT1–4 and S-LT-IP (plans_10 p.4); E10.1 electrical handhole detail: Oldcastle Precast #233-LA (vault #233-BL, cover #23-2436P) or equal, galvanized diamond-plate traffic cover with locking latch, 6 in sump and drainage rock, 18 x 18 in knockouts, 8 ft copper-clad ground rod, ""ELECTRIC""/""SIGNAL"" label (plans_12 p.6); 26 05 33 ¶2.07 (p.294): precast 3,000 psi, H-20 traffic covers, solid bottoms with sumps",Explosion-proof junction boxes and conduit seals per NEC 500 (E4.2).
L-0302,PROPOSED-Treatment-Building-Power-Handhole,Electric power handhole at the Treatment Building / IPS panel location,Electrical,Electrical & Controls,"Treatment Building (existing; E4.1 key note 3 calls it ""Dewatering Building"" — see Issues)",New,E4.1; E10.1,Not linked (PROPOSED tag is not printed; no boxed anchor matched),CWP 26,"Electrical, Instrumentation & Controls",6,None found,None found,None found,None found (no MTO line: no tied callout and no tag found on a cited sheet),26 05 33,26 05 33 (spec); E4.1 (sheet); E10.1 (sheet),3,SUB 26 05 33-01 (spec); SUB 26 05 33-02 (spec); SUB E4.1-01 (sheet),tag 0; spec 2; sheet 1,N,2,ITP 26 05 33-01 (spec); ITP E4.1-01 (sheet),tag 0; spec 1; sheet 1,N,None found (Add. 4 checked; Addenda 1-3 not staged),OI-0364 (sheet),1,OI-0378 (sheet),None found,"26-C15 Electrical, Instrumentation & Controls — Existing dewatering / treatment building",2023-04-01,2024-02-09,2023-03-14,Not started (baseline: no progress entered),Verified,"E4.1 plan label ""POWER HANDHOLE"" and key note 8 (plans_9 p.6); E10.1 electrical handhole detail: Oldcastle Precast #233-LA (vault #233-BL, cover #23-2436P) or equal, galvanized diamond-plate traffic cover with locking latch, 6 in sump and drainage rock, 18 x 18 in knockouts, 8 ft copper-clad ground rod, ""ELECTRIC""/""SIGNAL"" label (plans_12 p.6); 26 05 33 ¶2.07 (p.294): precast 3,000 psi, H-20 traffic covers, solid bottoms with sumps","Minimum two 1-in spares from the handhole to the side of the building, stubbed and capped (key note 8). Home runs P-ICP, P-DW-1, P-SD1, P-WP1, P-WP2 and spares to the Blower Building."
L-0303,PROPOSED-Treatment-Building-Control-Signal-Handhole,Electric control and signal handhole at the Treatment Building / IPS panel location,Electrical,Electrical & Controls,"Treatment Building (existing; E4.1 key note 3 calls it ""Dewatering Building"" — see Issues)",New,E4.1; E7.0; E10.1,Not linked (PROPOSED tag is not printed; no boxed anchor matched),CWP 26,"Electrical, Instrumentation & Controls",6,None found,None found,None found,None found (no MTO line: no tied callout and no tag found on a cited sheet),26 05 33,26 05 33 (spec); E4.1 (sheet); E7.0 (sheet); E10.1 (sheet),3,SUB 26 05 33-01 (spec); SUB 26 05 33-02 (spec); SUB E4.1-01 (sheet),tag 0; spec 2; sheet 1,N,2,ITP 26 05 33-01 (spec); ITP E4.1-01 (sheet),tag 0; spec 1; sheet 1,N,None found (Add. 4 checked; Addenda 1-3 not staged),OI-0364 (sheet),1,OI-0378 (sheet),None found,"26-C15 Electrical, Instrumentation & Controls — Existing dewatering / treatment building",2023-04-01,2024-02-09,2023-03-14,Not started (baseline: no progress entered),Verified,"E4.1 plan label ""CONTROL AND SIGNAL HANDHOLE"" and key note 8 (plans_9 p.6); E7.0 ""control handhole(s)"" on the S-ICP route (plans_10 p.5); E10.1 electrical handhole detail: Oldcastle Precast #233-LA (vault #233-BL, cover #23-2436P) or equal, galvanized diamond-plate traffic cover with locking latch, 6 in sump and drainage rock, 18 x 18 in knockouts, 8 ft copper-clad ground rod, ""ELECTRIC""/""SIGNAL"" label (plans_12 p.6); 26 05 33 ¶2.07 (p.294): precast 3,000 psi, H-20 traffic covers, solid bottoms with sumps","Minimum two 1-in spares (key note 8). Home runs S-FP3, S-FP4, S-ICP and spares to the Blower Building."
L-0304,PROPOSED-Influent-Flow-Meter,"Influent magnetic flow meter, Endress+Hauser Promag W400, Class I Div 2, EtherNet/IP, remote transmitter at the IPS panel, two 316L grounding rings",Controls,Electrical & Controls,Influent Pump Station,New,E4.1; E6.3; E7.0; E8.1; E10.2,Not linked (PROPOSED tag is not printed; no boxed anchor matched),CWP 26,"Electrical, Instrumentation & Controls",6,None found,None found,None found,None found (no MTO line: no tied callout and no tag found on a cited sheet),26 80 00,26 80 00 (spec); E4.1 (sheet); E6.3 (sheet); E7.0 (sheet); E8.1 (sheet); E10.2 (sheet),2,SUB 26 80 00-00 (spec); SUB E4.1-01 (sheet),tag 0; spec 1; sheet 1,Y,4,ITP 26 80 00-01 (spec); ITP 26 80 00-02 (spec); ITP E4.1-01 (sheet); ITP E8.1-01 (sheet),tag 0; spec 2; sheet 2,Y,"Add. 4 p.2, 26 80 00 ¶2.04 D (Promag L400 replaced by W400) — Add. 4 governs; drawing already shows W400",OI-0361 (spec),4,OI-0258 (spec); OI-0374 (spec); OI-0297 (sheet); OI-0378 (sheet),#9 (tag),"26-C08 Electrical, Instrumentation & Controls — Influent pump station and flow splitter",2023-06-01,2023-10-25,2023-03-14,Not started (baseline: no progress entered),Inferred,"E4.1 key note 2 and plan label ""INFLUENT FLOW METER"" (plans_9 p.6); E6.3 S-FMIN factory coil and electrode cables (plans_10 p.4); E7.0 (plans_10 p.5); E8.1 key note 2 transmitter ""INFLUENT"" in the IPS panel (plans_11 p.5); E10.2 flow meter summary item 1 ""INFLUENT FLOW METER. SIZE: 6"""" (plans_12 p.7); Submittal: 26 80 00 ¶1.06 p.356 (hardware submittals before fabrication; control system documentation); Testing/startup: 26 80 00 ¶3.03–3.04 and ¶3.08 pp.371–372 (witnessed factory simulation; field acceptance test; programming, start-up, commissioning)","Size per civil drawings (key note 2). Status New inferred: specified by make and model and wired on new conduit.; Size 6 in, in a vault with submersible kit, transmitter in the IPS panel (E10.2). Key note 1 says ""size per civil drawings"" — cross-check listed in Issues. || [Merge] Exceptions: #9."
L-0305,PROPOSED-Plant-2-Flow-Meter,"Plant 2 magnetic flow meter (""Train #2 flow meter"" on E7.0), Promag W400, remote transmitter at the IPS panel",Controls,Electrical & Controls,Influent Pump Station,New,E4.1; E6.3; E7.0; E8.1; E10.2,Not linked (PROPOSED tag is not printed; no boxed anchor matched),CWP 26,"Electrical, Instrumentation & Controls",6,None found,None found,None found,None found (no MTO line: no tied callout and no tag found on a cited sheet),26 80 00,26 80 00 (spec); E4.1 (sheet); E6.3 (sheet); E7.0 (sheet); E8.1 (sheet); E10.2 (sheet),2,SUB 26 80 00-00 (spec); SUB E4.1-01 (sheet),tag 0; spec 1; sheet 1,Y,4,ITP 26 80 00-01 (spec); ITP 26 80 00-02 (spec); ITP E4.1-01 (sheet); ITP E8.1-01 (sheet),tag 0; spec 2; sheet 2,Y,"Add. 4 p.2, 26 80 00 ¶2.04 D (Promag L400 replaced by W400) — Add. 4 governs; drawing already shows W400",OI-0361 (spec),4,OI-0258 (spec); OI-0374 (spec); OI-0297 (sheet); OI-0378 (sheet),#7 (tag),"26-C08 Electrical, Instrumentation & Controls — Influent pump station and flow splitter",2023-06-01,2023-10-25,2023-03-14,Not started (baseline: no progress entered),Inferred,"E4.1 key note 2 and plan label ""PLANT 2 FLOW METER"" (plans_9 p.6); E6.3 S-FMP2 (plans_10 p.4); E7.0 ""TRAIN #2 FLOW METER"" (plans_10 p.5); E8.1 key note 2 transmitter ""CELL 2"" / ""TRAIN #2"" in the IPS panel (plans_11 p.5); E10.2 flow meter summary item 3 ""TRAIN #2 FLOW METER. SIZE: 8"""" (plans_12 p.7); Submittal: 26 80 00 ¶1.06 p.356 (hardware submittals before fabrication; control system documentation); Testing/startup: 26 80 00 ¶3.03–3.04 and ¶3.08 pp.371–372 (witnessed factory simulation; field acceptance test; programming, start-up, commissioning)","Plant 2 = Train #2 by count and panel (Inferred). Size per civil. Status New inferred: specified by make and model and wired on new conduit.; Size 8 in, in a vault with submersible kit, transmitter in the IPS panel (E10.2). Key note 1 says ""size per civil drawings"" — cross-check listed in Issues. || [Merge] Exceptions: #7."
L-0306,PROPOSED-Plant-3-Flow-Meter,"Plant 3 magnetic flow meter (""Train #3 flow meter"" on E7.0), Promag W400, remote transmitter at the IPS panel",Controls,Electrical & Controls,Influent Pump Station,New,E4.1; E6.3; E7.0; E8.1; E10.2,Not linked (PROPOSED tag is not printed; no boxed anchor matched),CWP 26,"Electrical, Instrumentation & Controls",6,None found,None found,None found,None found (no MTO line: no tied callout and no tag found on a cited sheet),26 80 00,26 80 00 (spec); E4.1 (sheet); E6.3 (sheet); E7.0 (sheet); E8.1 (sheet); E10.2 (sheet),2,SUB 26 80 00-00 (spec); SUB E4.1-01 (sheet),tag 0; spec 1; sheet 1,Y,4,ITP 26 80 00-01 (spec); ITP 26 80 00-02 (spec); ITP E4.1-01 (sheet); ITP E8.1-01 (sheet),tag 0; spec 2; sheet 2,Y,"Add. 4 p.2, 26 80 00 ¶2.04 D (Promag L400 replaced by W400) — Add. 4 governs; drawing already shows W400",OI-0361 (spec),4,OI-0258 (spec); OI-0374 (spec); OI-0297 (sheet); OI-0378 (sheet),#8 (tag),"26-C08 Electrical, Instrumentation & Controls — Influent pump station and flow splitter",2023-06-01,2023-10-25,2023-03-14,Not started (baseline: no progress entered),Inferred,"E4.1 key note 2 and plan label ""PLANT 3 FLOW METER"" (plans_9 p.6); E6.3 S-FMP3 (plans_10 p.4); E7.0 ""TRAIN #3 FLOW METER"" (plans_10 p.5); E8.1 key note 2 transmitter ""CELL 3"" / ""TRAIN #3"" in the IPS panel (plans_11 p.5); E10.2 flow meter summary item 4 ""TRAIN #3 FLOW METER. SIZE: 8"""" (plans_12 p.7); Submittal: 26 80 00 ¶1.06 p.356 (hardware submittals before fabrication; control system documentation); Testing/startup: 26 80 00 ¶3.03–3.04 and ¶3.08 pp.371–372 (witnessed factory simulation; field acceptance test; programming, start-up, commissioning)","Plant 3 = Train #3 by count and panel (Inferred). Status New inferred: specified by make and model and wired on new conduit.; Size 8 in, in a vault with submersible kit, transmitter in the IPS panel (E10.2). Key note 1 says ""size per civil drawings"" — cross-check listed in Issues. || [Merge] Exceptions: #8."
L-0307,PROPOSED-WAS-Dewatering-Flow-Meter,"Dewatering flow meter (""WAS flow meter"" on E7.0), Promag W400 with local display, Cat 6 to the IPS panel",Controls,Electrical & Controls,"Treatment Building (existing; E4.1 key note 3 calls it ""Dewatering Building"" — see Issues)",New,E4.1; E6.3; E7.0; E10.2,Not linked (PROPOSED tag is not printed; no boxed anchor matched),CWP 26,"Electrical, Instrumentation & Controls",6,None found,None found,None found,None found (no MTO line: no tied callout and no tag found on a cited sheet),26 80 00,26 80 00 (spec); E4.1 (sheet); E6.3 (sheet); E7.0 (sheet); E10.2 (sheet),2,SUB 26 80 00-00 (spec); SUB E4.1-01 (sheet),tag 0; spec 1; sheet 1,Y,3,ITP 26 80 00-01 (spec); ITP 26 80 00-02 (spec); ITP E4.1-01 (sheet),tag 0; spec 2; sheet 1,Y,"Add. 4 p.2, 26 80 00 ¶2.04 D (Promag L400 replaced by W400) — Add. 4 governs; drawing already shows W400",OI-0361 (spec),5,OI-0421 (tag); OI-0258 (spec); OI-0374 (spec); OI-0297 (sheet); OI-0378 (sheet),#43 (tag); #184 (tag),"26-C15 Electrical, Instrumentation & Controls — Existing dewatering / treatment building",2023-04-01,2024-02-09,2023-03-14,Not started (baseline: no progress entered),Inferred,"E4.1 key note 2 (""local display on flowmeter (WAS)"") and plan label ""DEWATERING FLOW METER"", conduits P-WSV and S-FMDW (plans_9 p.6); E6.3 S-FMDW 2 #14 + Cat 6 (plans_10 p.4); E7.0 ""WAS FLOW METER"" (plans_10 p.5); E10.2 flow meter summary item 7 ""WAS FLOW METER. SIZE: 2"""" (plans_12 p.7); Submittal: 26 80 00 ¶1.06 p.356 (hardware submittals before fabrication; control system documentation); Testing/startup: 26 80 00 ¶3.03–3.04 and ¶3.08 pp.371–372 (witnessed factory simulation; field acceptance test; programming, start-up, commissioning)","Dewatering = WAS meter by panel and key note 2 wording (Inferred). Status New inferred: specified by make and model and wired on new conduit.; Size 2 in, on piping near the WAS pumps, transmitter on the tube (E10.2). Key note 1 says ""size per civil drawings"" — cross-check listed in Issues. || [Merge] Exceptions: #43, #184."
L-0308,PROPOSED-Effluent-Flow-Meter,"Effluent magnetic flow meter in vault, Promag W400, remote housing, IP68 Type 6 potted submersible sensor, two 316L grounding rings",Controls,Electrical & Controls,UV Disinfection Chamber,New,E5.1; E6.3; E7.0; E10.2,Not linked (PROPOSED tag is not printed; no boxed anchor matched),CWP 26,"Electrical, Instrumentation & Controls",6,None found,None found,None found,None found (no MTO line: no tied callout and no tag found on a cited sheet),26 80 00,26 80 00 (spec); E5.1 (sheet); E6.3 (sheet); E7.0 (sheet); E10.2 (sheet),1,SUB 26 80 00-00 (spec),tag 0; spec 1; sheet 0,Y,3,ITP 26 80 00-01 (spec); ITP 26 80 00-02 (spec); ITP E5.1-01 (sheet),tag 0; spec 2; sheet 1,Y,"Add. 4 p.2, 26 80 00 ¶2.04 D (Promag L400 replaced by W400) — Add. 4 governs; drawing already shows W400",OI-0361 (spec),4,OI-0258 (spec); OI-0374 (spec); OI-0297 (sheet); OI-0326 (sheet),#10 (tag),"26-C16 Electrical, Instrumentation & Controls — UV chamber",2023-04-01,2023-10-11,2023-03-14,Not started (baseline: no progress entered),Inferred,"E5.1 key note 2 and plan label ""EFFLUENT FLOW METER"" (plans_10 p.1); E6.3 S-FME factory cables (plans_10 p.4); E7.0 main PLC network (plans_10 p.5); E10.2 flow meter summary item 6 ""EFFLUENT FLOW METER. SIZE: 8"""" (plans_12 p.7); Submittal: 26 80 00 ¶1.06 p.356 (hardware submittals before fabrication; control system documentation); Testing/startup: 26 80 00 ¶3.03–3.04 and ¶3.08 pp.371–372 (witnessed factory simulation; field acceptance test; programming, start-up, commissioning)","Transmitter in its own local panel (next row). Size per civil. Status New inferred: specified by make and model and wired on new conduit.; Size 8 in, in a vault with submersible kit, transmitter in a panel near the UV chamber (E10.2). Key note 1 says ""size per civil drawings"" — cross-check listed in Issues. E10.2 standard vault detail says Class I Div 2; E0.4 lists the effluent vault unclassified — see Issues. || [Merge] Exceptions: #10."
L-0309,PROPOSED-Effluent-Flow-Meter-Transmitter-Panel,"Effluent flow meter transmitter panel: stainless local control panel with the transmitter and instrument terminals, on handrail or rack with SS hardware",Controls,Electrical & Controls,UV Disinfection Chamber,New,E5.1; E6.3,Not linked (PROPOSED tag is not printed; no boxed anchor matched),CWP 26,"Electrical, Instrumentation & Controls",6,None found,None found,None found,None found (no MTO line: no tied callout and no tag found on a cited sheet),26 80 00,E5.1 (tag); 26 80 00 (spec); E6.3 (sheet),1,SUB 26 80 00-00 (spec),tag 0; spec 1; sheet 0,Y,3,ITP 26 80 00-01 (spec); ITP 26 80 00-02 (spec); ITP E5.1-01 (sheet),tag 0; spec 2; sheet 1,Y,None found (Add. 4 checked; Addenda 1-3 not staged),OI-0361 (spec),3,OI-0258 (spec); OI-0374 (spec); OI-0326 (sheet),None found,"26-C16 Electrical, Instrumentation & Controls — UV chamber",2023-04-01,2023-10-11,2023-03-14,Not started (baseline: no progress entered),Verified,"E5.1 key note 4 and plan label ""EFFLUENT FLOW METER TRANSMITTER PANEL"" (plans_10 p.1); E6.3 C-FME 4 #14 + Cat 6 to the PLC control panel (plans_10 p.4); 26 80 00 ¶2.02 A.3.c ""Effluent Flow Meter Panel"" (p.357); Submittal: 26 80 00 ¶1.06 p.356 (hardware submittals before fabrication; control system documentation); Testing/startup: 26 80 00 ¶3.03–3.04 and ¶3.08 pp.371–372 (witnessed factory simulation; field acceptance test; programming, start-up, commissioning)",None found (no notes in rev0)
L-0310,PROPOSED-2W-Flow-Meter,"2W flow meter, 1-in Promag W400, 24 VAC/DC, EtherNet/IP, local display, NEMA 4X, in Hot Box #1",Controls,Electrical & Controls,2W Pump Station,New,E4.3; E6.3; E7.0; E10.2,Not linked (PROPOSED tag is not printed; no boxed anchor matched),CWP 26,"Electrical, Instrumentation & Controls",6,None found,None found,None found,None found (no MTO line: no tied callout and no tag found on a cited sheet),26 80 00,26 80 00 (spec); E4.3 (sheet); E6.3 (sheet); E7.0 (sheet); E10.2 (sheet),1,SUB 26 80 00-00 (spec),tag 0; spec 1; sheet 0,Y,2,ITP 26 80 00-01 (spec); ITP 26 80 00-02 (spec),tag 0; spec 2; sheet 0,Y,"Add. 4 p.2, 26 80 00 ¶2.04 D (Promag L400 replaced by W400) — Add. 4 governs; drawing already shows W400",OI-0361 (spec),3,OI-0258 (spec); OI-0374 (spec); OI-0297 (sheet),#11 (tag),"26-C01 Electrical, Instrumentation & Controls — 2W air gap water system",2023-05-01,2023-10-18,2023-03-14,Not started (baseline: no progress entered),Inferred,"E4.3 key note 4 and Hot Box #1 detail (plans_9 p.8); E6.3 S-FM2W 2 #14 + Cat 6 to the main PLC panel (plans_10 p.4); E7.0 (plans_10 p.5); E10.2 flow meter summary item 8 ""2W FLOW METER. SIZE: 1"""" (plans_12 p.7); Submittal: 26 80 00 ¶1.06 p.356 (hardware submittals before fabrication; control system documentation); Testing/startup: 26 80 00 ¶3.03–3.04 and ¶3.08 pp.371–372 (witnessed factory simulation; field acceptance test; programming, start-up, commissioning)","Signal run printed S-FM2W (E6.3, E4.3 at the box) and S-2WFM (E4.3 home run). Status New inferred: specified by make and model and wired on new conduit.; Size 1 in, on piping in Hot Box #1, transmitter on the tube (E10.2). Key note 1 says ""size per civil drawings"" — cross-check listed in Issues. || [Merge] Exceptions: #11."
L-0311,PROPOSED-Train-1-Flow-Meter,"Train #1 flow meter, 8 in — future project, not in this project; Phase I provides transmitter space in the IPS panel only",Controls,Electrical & Controls,Train No.1 (future),Not stated,E7.0; E8.1; E10.2,Not linked (PROPOSED tag is not printed; no boxed anchor matched),CWP 26,"Electrical, Instrumentation & Controls",6 (transmitter space in the IPS panel only),None found,None found,None found,None found (no MTO line: no tied callout and no tag found on a cited sheet),None found (no spec section cited in rev0),E7.0 (sheet); E8.1 (sheet); E10.2 (sheet),0,None found,tag 0; spec 0; sheet 0,Not stated,1,ITP E8.1-01 (sheet),tag 0; spec 0; sheet 1,Not stated,None found (Add. 4 checked; Addenda 1-3 not staged),None found,2,OI-0227 (tag); OI-0297 (sheet),#120 (tag),"26-C06 Electrical, Instrumentation & Controls — Future provisions — not scheduled",Not scheduled (Marked FUTURE on the drawings; not Phase I work),Not scheduled (Marked FUTURE on the drawings; not Phase I work),Not scheduled (Marked FUTURE on the drawings; not Phase I work),Not tracked (Marked FUTURE on the drawings; not Phase I work),Verified-Visual,"E7.0 label ""TRAIN #1 FLOW METER (FUTURE)"" (plans_10 p.5); E8.1 key note 2 ""CELL 1 (FUTURE SPACE)"", transmitter drawn greyed (plans_11 p.5); E10.2 flow meter summary item 2 ""TRAIN #1 FLOW METER. SIZE: 8"". (FUTURE PROJECT - NOT IN THIS PROJECT) PROVIDE SPACE FOR FUTURE TRANSMITTER IN INFLUENT CONTROL PANEL."" (plans_12 p.7)","Settled by E10.2: the meter is not in this project; Phase I provides transmitter space only (E8.1 greyed ""future space"", E7.0 network port). Status Not stated: nothing is built for the meter itself. || [Merge] Exceptions: #120."
L-0312,DW-1,"Dewatering skid with skid control panel DW-1: pre-wired and factory tested, UL/ETL labeled per WA L&I, 15 HP, 480 V 3-ph; skid PLC, operator interface and network switch",Process-Mechanical,Electrical & Controls,"Treatment Building (existing; E4.1 key note 3 calls it ""Dewatering Building"" — see Issues)",New,E4.1; E6.1; E6.3; E7.0; E9.1,"E2.1 p.67 [981.54,371.58,999.42,376.61] text-layer — sheet not cited (tag); E4.1 p.70 [146.16,241.80,159.01,246.83] text-layer (+3 reads) (tag); E6.1 p.74 [412.56,453.66,430.44,458.69] text-layer (+3 reads) (tag); E6.3 p.76 [626.76,508.50,645.30,512.46] ocr (+1 read) (tag)",CWP 46,Treatment Equipment,"1 (equipment, Inferred per 04); 6 (power and control)",1,EA,MTO-0092 (tag),Verified — 1 line totaled,None found (no spec section cited in rev0),E4.1 (tag); E6.1 (tag); E9.1 (tag); E6.3 (sheet); E7.0 (sheet),2,SUB E6.1-01 (tag); SUB E4.1-01 (sheet),tag 1; spec 0; sheet 1,Not stated,1,ITP E4.1-01 (sheet),tag 0; spec 0; sheet 1,Not stated,None found (Add. 4 checked; Addenda 1-3 not staged),OI-0371 (sheet),2,OI-0289 (tag); OI-0378 (sheet),#63 (tag); #207 (tag),46-C05 Treatment Equipment — Existing dewatering / treatment building,2023-04-01,2024-02-09,2023-03-31,Not started (baseline: no progress entered),Verified-Visual,"E4.1 key note 4 and plan tag DW-1 ""DEWATERING SKID CONTROL PANEL"" (plans_9 p.6); E6.1 MCC 60/3 and load calcs 15 HP (plans_10 p.2); E6.3 P-DW-1 1"" 3 #4 + #10 G, S-DW1 Cat 6 (plans_10 p.4); E7.0 (plans_10 p.5); E9.1 NP-2D ""DEWATERING SKID / FEEDER"" (plans_12 p.3)","Cross-lane: Process & Mechanical. Dewatering equipment spec is in that lane. E&C: 480 V feeder from the MCC and Cat 6 to the IPS panel. Generator factor 0 (E6.1). || [Merge] Exceptions: #63, #207."
L-0313,WP-1,"WAS Pump No.1, 3 HP, VFD in MCC",Process-Mechanical,Electrical & Controls,"Treatment Building (existing; E4.1 key note 3 calls it ""Dewatering Building"" — see Issues)",Not stated,E4.1; E6.1; E6.3; E7.3; E7.4; E9.1,"E4.1 p.70 [199.98,363.84,212.55,368.87] text-layer (tag); E6.1 p.74 [590.76,501.54,603.33,506.57] text-layer (+2 reads) (tag)",CWP 22,Plumbing & Process Pumps,"1 (equipment, Inferred per 04); 6 (power and control)",1,EA,MTO-0093 (tag),Verified — 1 line totaled,None found (no spec section cited in rev0),E4.1 (tag); E6.1 (tag); E7.3 (tag); E7.4 (tag); E9.1 (tag); E6.3 (sheet),2,SUB E6.1-01 (tag); SUB E4.1-01 (sheet),tag 1; spec 0; sheet 1,Not stated,1,ITP E4.1-01 (sheet),tag 0; spec 0; sheet 1,Not stated,"Add. 4 p.2, 22 13 36 ¶2.01 A (VFDs in MCC, PLC control, no local speed dial) — Add. 4 governs",OI-0371 (sheet),3,OI-0289 (tag); OI-0370 (sheet); OI-0378 (sheet),#59 (tag); #207 (tag),22-C03 Plumbing & Process Pumps — Existing dewatering / treatment building,2023-04-01,2024-02-09,2023-03-31,Not started (baseline: no progress entered),Verified-Visual,"E4.1 plan tag, motor marked 3 (plans_9 p.6); E6.1 MCC 15/3 VFD with line and dV/dt reactors, load calcs 3 HP (plans_10 p.2); E6.3 P-WP1 (plans_10 p.4); Add. 4 p.2; E7.3 ""WAS PUMP 1: MCC"" hand, auto, VFD running, VFD fault on card 4 (numbering conflict, see Issues) (plans_10 p.8); E7.4 output 5 ""WAS PUMP 1 #1 CALL TO RUN"" (plans_11 p.1); E9.1 NP-4D ""WAS PUMP NO.1 / 3 HP"" (plans_12 p.3)","Cross-lane: Process & Mechanical. 22 13 36 Packaged Sludge Pumps by title (Inferred). Local disconnect at the pump. Generator factor 1. || [Merge] Exceptions: #59, #207."
L-0314,WP-2,"WAS Pump No.2 / swing pump, 3 HP, VFD in MCC",Process-Mechanical,Electrical & Controls,"Treatment Building (existing; E4.1 key note 3 calls it ""Dewatering Building"" — see Issues)",Not stated,E4.1; E6.1; E6.3; E7.3; E7.4; E9.1,"E4.1 p.70 [239.22,363.84,251.79,368.87] text-layer (tag); E6.1 p.74 [635.76,501.54,648.33,506.57] text-layer (+2 reads) (tag)",CWP 22,Plumbing & Process Pumps,"1 (equipment, Inferred per 04); 6 (power and control)",1,EA,MTO-0094 (tag),Verified — 1 line totaled,None found (no spec section cited in rev0),E4.1 (tag); E6.1 (tag); E7.3 (tag); E7.4 (tag); E9.1 (tag); E6.3 (sheet),2,SUB E4.1-01 (sheet); SUB E6.1-01 (sheet),tag 0; spec 0; sheet 2,Not stated,1,ITP E4.1-01 (sheet),tag 0; spec 0; sheet 1,Not stated,"Add. 4 p.2, 22 13 36 ¶2.01 A (VFDs in MCC, PLC control, no local speed dial) — Add. 4 governs",OI-0371 (sheet),3,OI-0289 (tag); OI-0370 (sheet); OI-0378 (sheet),#60 (tag); #207 (tag),22-C03 Plumbing & Process Pumps — Existing dewatering / treatment building,2023-04-01,2024-02-09,2023-03-31,Not started (baseline: no progress entered),Verified-Visual,"E4.1 plan tag (plans_9 p.6); E6.1 MCC 15/3 VFD, load calcs ""WAS pump 2 - swing pump"" 3 HP (plans_10 p.2); E6.3 P-WP2 (plans_10 p.4); Add. 4 p.2; E7.3 ""WAS PUMP 2: MCC"" inputs on card 5 (plans_10 p.8); E7.4 output 6 ""WAS PUMP #2 CALL TO RUN"" (plans_11 p.1); E9.1 NP-4G ""WAS PUMP NO.2 / 3 HP"" (plans_12 p.3)","Cross-lane: Process & Mechanical. 22 13 36 by title (Inferred). Generator factor 0. || [Merge] Exceptions: #60, #207."
L-0315,SD-1,"Sludge pump, 3 HP, VFD in MCC",Process-Mechanical,Electrical & Controls,"Treatment Building (existing; E4.1 key note 3 calls it ""Dewatering Building"" — see Issues)",Not stated,E4.1; E6.1; E6.3; E7.3; E7.4; E9.1,"E4.1 p.70 [280.44,363.84,291.89,368.87] text-layer (tag); E6.1 p.74 [681.48,501.36,692.93,506.39] text-layer (+2 reads) (tag); E6.3 p.76 [627.48,471.06,644.22,475.02] ocr (+1 read) (tag)",CWP 22,Plumbing & Process Pumps,"1 (equipment, Inferred per 04); 6 (power and control)",1,EA,MTO-0095 (tag),Verified — 1 line totaled,None found (no spec section cited in rev0),E4.1 (tag); E6.1 (tag); E7.3 (tag); E7.4 (tag); E9.1 (tag); E6.3 (sheet),2,SUB E4.1-01 (sheet); SUB E6.1-01 (sheet),tag 0; spec 0; sheet 2,Not stated,1,ITP E4.1-01 (sheet),tag 0; spec 0; sheet 1,Not stated,"Add. 4 p.2, 22 13 36 ¶2.01 A (VFDs in MCC, PLC control, no local speed dial) — Add. 4 governs",OI-0371 (sheet),3,OI-0289 (tag); OI-0370 (sheet); OI-0378 (sheet),#3 (tag); #61 (tag); #207 (tag),22-C03 Plumbing & Process Pumps — Existing dewatering / treatment building,2023-04-01,2024-02-09,2023-03-31,Not started (baseline: no progress entered),Verified-Visual,"E4.1 plan tag (plans_9 p.6); E6.1 MCC 15/3 VFD, load calcs 3 HP (plans_10 p.2); E6.3 P-SD-1 (plans_10 p.4); Add. 4 p.2; E7.3 ""SLUDGE PUMP: MCC"" inputs on card 5 (plans_10 p.8); E7.4 output 7 ""SLUDGE PUMP CALL TO RUN"" (plans_11 p.1); E9.1 NP-4A ""SLUDGE PUMP / 3 HP"" (plans_12 p.3)","Cross-lane: Process & Mechanical. 22 13 36 by title (Inferred). Generator factor 0. || [Merge] Exceptions: #3, #61, #207."
L-0316,PROPOSED-WAS-and-Sludge-Pump-Local-Disconnects,"Local motor disconnects for WP-1, WP-2 and SD-1 (3)",Electrical,Electrical & Controls,"Treatment Building (existing; E4.1 key note 3 calls it ""Dewatering Building"" — see Issues)",New,E4.1; E6.1,Not linked (PROPOSED tag is not printed; no boxed anchor matched),CWP 26,"Electrical, Instrumentation & Controls",6,None found,None found,None found,None found (no MTO line: no tied callout and no tag found on a cited sheet),26 28 16,26 28 16 (spec); E4.1 (sheet); E6.1 (sheet),3,SUB 26 28 16-01 (spec); SUB E4.1-01 (sheet); SUB E6.1-01 (sheet),tag 0; spec 1; sheet 2,Y,1,ITP E4.1-01 (sheet),tag 0; spec 0; sheet 1,N,None found (Add. 4 checked; Addenda 1-3 not staged),OI-0371 (sheet),1,OI-0378 (sheet),#62 (tag),"26-C15 Electrical, Instrumentation & Controls — Existing dewatering / treatment building",2023-04-01,2024-02-09,2023-03-14,Not started (baseline: no progress entered),Inferred,"E4.1 plan disconnect symbols at WP-1, WP-2, SD-1 (plans_9 p.6); E6.1 disconnect at each motor, key note 4 (plans_10 p.2); Submittal: 26 28 16 ¶1.03 p.314 (catalog data per 26 05 00 ¶1.012)",Status New inferred: drawn on the new one-line. || [Merge] Exceptions: #62.
L-0317,PROPOSED-WAS-Solenoid-Valves,"WAS solenoid valves (3), WAS #1 to #3, 120 V from the IPS panel",Process-Mechanical,Electrical & Controls,"Treatment Building (existing; E4.1 key note 3 calls it ""Dewatering Building"" — see Issues)",Not stated,E4.1; E6.3; E8.4,Not linked (PROPOSED tag is not printed; no boxed anchor matched),CWP 46,Treatment Equipment,"1 (equipment, Inferred per 04); 6 (power and control)",None found,None found,None found,None found (no MTO line: no tied callout and no tag found on a cited sheet),None found (no spec section cited in rev0),E4.1 (sheet); E6.3 (sheet); E8.4 (sheet),1,SUB E4.1-01 (sheet),tag 0; spec 0; sheet 1,Not stated,1,ITP E4.1-01 (sheet),tag 0; spec 0; sheet 1,Not stated,None found (Add. 4 checked; Addenda 1-3 not staged),None found,2,OI-0214 (tag); OI-0378 (sheet),#12 (tag); #107 (tag),46-C05 Treatment Equipment — Existing dewatering / treatment building,2023-04-01,2024-02-09,2023-03-31,Not started (baseline: no progress entered),Verified-Visual,"E4.1 key note 5 and plan label ""(3) WAS SOLENOIDS"" (plans_9 p.6); E6.3 P-WSV 1"" 6 #12, influent control panel to WAS solenoid valves (plans_10 p.4); E8.4 outputs 4–6 ""WAS VALVE #1/#2/#3 SOLENOID"", 120 V (plans_11 p.8)","Cross-lane: Process & Mechanical. E&C: solenoid wiring to the IPS panel. || [Merge] Exceptions: #12, #107."
L-0318,PROPOSED-Polymer-Feed-Pump,Polymer feed pump at the dewatering skid; 120 V GFCI receptacle LP2-6 and 4–20 mA flow pace,Process-Mechanical,Electrical & Controls,"Treatment Building (existing; E4.1 key note 3 calls it ""Dewatering Building"" — see Issues)",Not stated,E4.1; E6.2; E6.3; E8.6; E10.2,Not linked (PROPOSED tag is not printed; no boxed anchor matched),CWP 46,Treatment Equipment,"1 (equipment, Inferred per 04); 6 (power and control)",None found,None found,None found,None found (no MTO line: no tied callout and no tag found on a cited sheet),None found (no spec section cited in rev0),E4.1 (tag); E6.2 (tag); E6.3 (sheet); E8.6 (sheet); E10.2 (sheet),2,SUB E4.1-01 (sheet); SUB E6.2-01 (sheet),tag 0; spec 0; sheet 2,Not stated,1,ITP E4.1-01 (sheet),tag 0; spec 0; sheet 1,Not stated,None found (Add. 4 checked; Addenda 1-3 not staged),None found,2,OI-0297 (sheet); OI-0378 (sheet),#64 (tag),46-C05 Treatment Equipment — Existing dewatering / treatment building,2023-04-01,2024-02-09,2023-03-31,Not started (baseline: no progress entered),Verified-Visual,"E4.1 key note 6 and plan label (plans_9 p.6); E6.2 LP2 circuit 6 (plans_10 p.3); E6.3 S-FP2 to the influent control panel (plans_10 p.4); E8.6 analog output 1 ""POLYMER FEED PUMP FLOW PACE"" (plans_12 p.2); E10.2 chemical feed equipment electrical detail, key notes 2–3: dedicated GFCI receptacle from the lighting panel; 4–20 mA PLC output scaled to the flow meter signal (plans_12 p.7)",Cross-lane: Process & Mechanical. || [Merge] Exceptions: #64.
L-0319,PROPOSED-Hypochlorite-Feed-Pump,Hypochlorite feed pump; 120 V GFCI receptacle on LP1-16 and 4–20 mA flow pace,Process-Mechanical,Electrical & Controls,Not stated (drawn on E4.1),Not stated,E2.2; E4.1; E6.2; E6.3; E7.7; E10.2,Not linked (PROPOSED tag is not printed; no boxed anchor matched),CWP 46,Treatment Equipment,"1 (equipment, Inferred per 04); 6 (power and control)",None found,None found,None found,None found (no MTO line: no tied callout and no tag found on a cited sheet),None found (no spec section cited in rev0),E2.2 (tag); E4.1 (tag); E6.2 (tag); E6.3 (sheet); E7.7 (sheet); E10.2 (sheet),2,SUB E4.1-01 (sheet); SUB E6.2-01 (sheet),tag 0; spec 0; sheet 2,Not stated,1,ITP E4.1-01 (sheet),tag 0; spec 0; sheet 1,Not stated,None found (Add. 4 checked; Addenda 1-3 not staged),None found,3,OI-0228 (tag); OI-0297 (sheet); OI-0378 (sheet),#121 (tag),46-C04 Treatment Equipment — Train 3,2023-08-01,2024-07-08,2023-03-31,Not started (baseline: no progress entered),Verified-Visual,"E4.1 key note 6 and plan label ""HYPOCHLORITE FEED PUMP"" (plans_9 p.6); E2.2 and E6.2 LP1 circuit 16 (plans_9 p.4; plans_10 p.3); E6.3 S-FP4 to the main PLC control panel (plans_10 p.4); E7.7 analog output 1 ""SODIUM HYPOCHLORITE FEED PUMP FLOW PACE"" (plans_11 p.4); E10.2 chemical feed equipment electrical detail, key notes 2–3: dedicated GFCI receptacle from the lighting panel; 4–20 mA PLC output scaled to the flow meter signal (plans_12 p.7)",Cross-lane: Process & Mechanical. || [Merge] Exceptions: #121.
L-0320,PROPOSED-Influent-Sampler,"Influent sampler (Owner-furnished, contractor-installed); 120 V GFCI receptacle LP2-8 and 4–20 mA flow pace",Process-Mechanical,Electrical & Controls,Influent Pump Station,Not stated,E4.1; E6.2; E6.3; E8.6,Not linked (PROPOSED tag is not printed; no boxed anchor matched),CWP 46,Treatment Equipment,"6 (installation, receptacle, flow-pace signal); sampler Owner-furnished",None found,None found,None found,None found (no MTO line: no tied callout and no tag found on a cited sheet),None found (no spec section cited in rev0),E4.1 (tag); E6.2 (tag); 26 80 00 (spec); E6.3 (sheet); E8.6 (sheet),2,SUB E4.1-01 (sheet); SUB E6.2-01 (sheet),tag 0; spec 0; sheet 2,Not stated,1,ITP E4.1-01 (sheet),tag 0; spec 0; sheet 1,Not stated,None found (Add. 4 checked; Addenda 1-3 not staged),None found,2,OI-0229 (tag); OI-0378 (sheet),#13 (tag); #122 (tag); #251 (tag),46-C02 Treatment Equipment — Influent pump station and flow splitter,2023-06-01,2023-10-25,2023-03-31,Not started (baseline: no progress entered),Verified-Visual,"E4.1 key note 6 and plan label (plans_9 p.6); E6.2 LP2 circuit 8 (plans_10 p.3); E6.3 S-FP1 (plans_10 p.4); E8.6 analog output 0 ""INFLUENT SAMPLER FLOW PACE"" (plans_12 p.2); 26 80 00 ¶3.09 D (p.374): Owner-provided samplers; 4–20 mA flow pace from the PLC matching the influent flow meter","Cross-lane: Process & Mechanical. Which lane installs the sampler itself is not stated — see Issues. || [Merge] Exceptions: #13, #122, #251."
L-0321,PROPOSED-Effluent-Sampler,"Effluent sampler (Owner-furnished, contractor-installed); 120 V GFCI receptacle on LP1-14 and 4–20 mA flow pace",Process-Mechanical,Electrical & Controls,Not stated (drawn on E4.1),Not stated,E2.2; E4.1; E6.2; E6.3; E7.7,Not linked (PROPOSED tag is not printed; no boxed anchor matched),CWP 46,Treatment Equipment,"6 (installation, receptacle, flow-pace signal); sampler Owner-furnished",None found,None found,None found,None found (no MTO line: no tied callout and no tag found on a cited sheet),None found (no spec section cited in rev0),E2.2 (tag); E4.1 (tag); E6.2 (tag); 26 80 00 (spec); E6.3 (sheet); E7.7 (sheet),2,SUB E4.1-01 (sheet); SUB E6.2-01 (sheet),tag 0; spec 0; sheet 2,Not stated,1,ITP E4.1-01 (sheet),tag 0; spec 0; sheet 1,Not stated,None found (Add. 4 checked; Addenda 1-3 not staged),None found,2,OI-0230 (tag); OI-0378 (sheet),#123 (tag),46-C04 Treatment Equipment — Train 3,2023-08-01,2024-07-08,2023-03-31,Not started (baseline: no progress entered),Verified-Visual,"E4.1 key note 6 (plans_9 p.6); E2.2 and E6.2 LP1 circuit 14 (plans_9 p.4; plans_10 p.3); E6.3 S-FP3 to the main PLC control panel (plans_10 p.4); E7.7 analog output 0 ""EFFLUENT SAMPLER FLOW PACE"" (plans_11 p.4); 26 80 00 ¶3.09 D (p.374): Owner-provided samplers; 4–20 mA flow pace from the PLC matching the effluent flow meter",Cross-lane: Process & Mechanical. Which lane installs the sampler itself is not stated — see Issues. || [Merge] Exceptions: #123.
L-0322,EF-3,"Exhaust Fan EF-3, Treatment Building, motor marked 1/2, circuit LP2-7 (1,127 VA)",Process-Mechanical,Electrical & Controls,"Treatment Building (existing; E4.1 key note 3 calls it ""Dewatering Building"" — see Issues)",New,E4.1; E6.2; E8.3; E9.3,"E4.1 p.70 [458.28,278.34,469.18,283.37] text-layer (tag); E6.2 p.75 [649.44,529.02,660.42,540.90] ocr (+1 read) (tag)",CWP 23,HVAC & Ventilation,"1 (equipment, Inferred per 04); 6 (power and control)",1,EA,MTO-0096 (tag),Verified — 1 line totaled,None found (no spec section cited in rev0),E4.1 (tag); E6.2 (tag); E9.3 (tag); E8.3 (sheet),2,SUB E4.1-01 (sheet); SUB E6.2-01 (sheet),tag 0; spec 0; sheet 2,Not stated,2,ITP E4.1-01 (sheet); ITP E8.3-01 (sheet),tag 0; spec 0; sheet 2,Not stated,None found (Add. 4 checked; Addenda 1-3 not staged),None found,3,OI-0284 (tag); OI-0376 (tag); OI-0378 (sheet),#26 (tag); #194 (tag); #205 (tag); #210 (tag),23-C02 HVAC & Ventilation — Existing dewatering / treatment building,2023-04-01,2024-02-09,2023-03-31,Not started (baseline: no progress entered),Inferred,"E4.1 plan label and circuit, key notes 3 and 7 (plans_9 p.6); E6.2 LP2 circuit 7 (plans_10 p.3); E9.3 ""VENTILATION FAN 1"" OFF/ON switch, run light, call-to-run relay (plans_12 p.5); E8.3 input ""VENTILATION FAN 1 CALLED TO RUN"" (plans_11 p.7)","Cross-lane: Process & Mechanical. Governing spec 23 34 00 is in that lane. Status New inferred: key note 3 says provide ventilation fans; key note 7 counts three fans in this building. Airflow not stated — 6 ACH required (see Issues). 120 VAC from LP2 and control per the PLC I/O sheets.; E9.3 and E8.3 call it ventilation fan 1; match to EF-3 Inferred from the three Treatment Building fans on LP2. || [Merge] Exceptions: #26, #194, #205, #210."
L-0323,EF-4,"Exhaust Fan EF-4, Treatment Building, motor marked 1/2, circuit LP2-9 (1,127 VA)",Process-Mechanical,Electrical & Controls,"Treatment Building (existing; E4.1 key note 3 calls it ""Dewatering Building"" — see Issues)",New,E4.1; E6.2; E8.3; E9.3,"E4.1 p.70 [455.58,453.48,466.48,458.51] text-layer (tag); E6.2 p.75 [651.25,540.22,662.15,545.22] bluebeam-ocr (tag)",CWP 23,HVAC & Ventilation,"1 (equipment, Inferred per 04); 6 (power and control)",1,EA,MTO-0097 (tag),Verified — 1 line totaled,None found (no spec section cited in rev0),E4.1 (tag); E6.2 (tag); E9.3 (tag); E8.3 (sheet),2,SUB E4.1-01 (sheet); SUB E6.2-01 (sheet),tag 0; spec 0; sheet 2,Not stated,2,ITP E4.1-01 (sheet); ITP E8.3-01 (sheet),tag 0; spec 0; sheet 2,Not stated,None found (Add. 4 checked; Addenda 1-3 not staged),None found,2,OI-0284 (tag); OI-0378 (sheet),#26 (tag); #194 (tag); #210 (tag),23-C02 HVAC & Ventilation — Existing dewatering / treatment building,2023-04-01,2024-02-09,2023-03-31,Not started (baseline: no progress entered),Inferred,"E4.1 plan label and circuit, key notes 3 and 7 (plans_9 p.6); E6.2 LP2 circuit 9 (plans_10 p.3); E9.3 ""VENTILATION FAN 2"" OFF/ON switch, run light, call-to-run relay (plans_12 p.5); E8.3 input ""VENTILATION FAN 2 CALLED TO RUN"" (plans_11 p.7)","Cross-lane: Process & Mechanical. Governing spec 23 34 00 is in that lane. Status New inferred: key note 3 says provide ventilation fans; key note 7 counts three fans in this building. Airflow not stated — 6 ACH required (see Issues). 120 VAC from LP2 and control per the PLC I/O sheets.; E9.3 and E8.3 call it ventilation fan 2; match to EF-4 Inferred from the three Treatment Building fans on LP2. || [Merge] Exceptions: #26, #194, #210."
L-0324,EF-5,"Exhaust Fan EF-5, Treatment Building, motor marked 1/2, circuit LP2-11 (1,127 VA)",Process-Mechanical,Electrical & Controls,"Treatment Building (existing; E4.1 key note 3 calls it ""Dewatering Building"" — see Issues)",New,E4.1; E6.2; E8.3; E9.3,"E4.1 p.70 [455.58,706.56,466.48,711.59] text-layer (tag); E6.2 p.75 [649.98,544.86,660.24,556.92] ocr (+1 read) (tag)",CWP 23,HVAC & Ventilation,"1 (equipment, Inferred per 04); 6 (power and control)",1,EA,MTO-0098 (tag),Verified — 1 line totaled,None found (no spec section cited in rev0),E4.1 (tag); E6.2 (tag); E9.3 (tag); E8.3 (sheet),2,SUB E4.1-01 (sheet); SUB E6.2-01 (sheet),tag 0; spec 0; sheet 2,Not stated,2,ITP E4.1-01 (sheet); ITP E8.3-01 (sheet),tag 0; spec 0; sheet 2,Not stated,None found (Add. 4 checked; Addenda 1-3 not staged),None found,3,OI-0284 (tag); OI-0376 (tag); OI-0378 (sheet),#26 (tag); #194 (tag); #205 (tag),23-C02 HVAC & Ventilation — Existing dewatering / treatment building,2023-04-01,2024-02-09,2023-03-31,Not started (baseline: no progress entered),Inferred,"E4.1 plan label and circuit, key notes 3 and 7 (plans_9 p.6); E6.2 LP2 circuit 11 (plans_10 p.3); E9.3 ""VENTILATION FAN 3"" OFF/ON switch, run light, call-to-run relay (plans_12 p.5); E8.3 input ""VENTILATION FAN 3 CALLED TO RUN"" (plans_11 p.7)","Cross-lane: Process & Mechanical. Governing spec 23 34 00 is in that lane. Status New inferred: key note 3 says provide ventilation fans; key note 7 counts three fans in this building. Airflow not stated — 6 ACH required (see Issues). 120 VAC from LP2 and control per the PLC I/O sheets.; E9.3 and E8.3 call it ventilation fan 3; match to EF-5 Inferred from the three Treatment Building fans on LP2. || [Merge] Exceptions: #26, #194, #205."
L-0325,PROPOSED-Treatment-Building-Ventilation-Control-Panel,"Ventilation control panel, Treatment Building, NEMA 4X stainless steel",Controls,Electrical & Controls,"Treatment Building (existing; E4.1 key note 3 calls it ""Dewatering Building"" — see Issues)",New,E4.1; E6.2; E8.3; E8.4; E9.3,Not linked (PROPOSED tag is not printed; no boxed anchor matched),CWP 26,"Electrical, Instrumentation & Controls",6,None found,None found,None found,None found (no MTO line: no tied callout and no tag found on a cited sheet),26 80 00,E9.3 (tag); 26 80 00 (spec); E4.1 (sheet); E6.2 (sheet); E8.3 (sheet); E8.4 (sheet),3,SUB 26 80 00-00 (spec); SUB E4.1-01 (sheet); SUB E6.2-01 (sheet),tag 0; spec 1; sheet 2,Y,4,ITP 26 80 00-01 (spec); ITP 26 80 00-02 (spec); ITP E4.1-01 (sheet); ITP E8.3-01 (sheet),tag 0; spec 2; sheet 2,Y,None found (Add. 4 checked; Addenda 1-3 not staged),OI-0361 (spec),3,OI-0258 (spec); OI-0374 (spec); OI-0378 (sheet),None found,"26-C15 Electrical, Instrumentation & Controls — Existing dewatering / treatment building",2023-04-01,2024-02-09,2023-03-14,Not started (baseline: no progress entered),Unresolved,"E4.1 plan label ""VENTILATION CONTROL PANEL LP2-5"", key notes 3 and 7 (plans_9 p.6); E6.2 LP2 circuit 5 (plans_10 p.3); E9.3 elevation and wiring diagram (plans_12 p.5); E8.3 inputs ""VENTILATION FAN 1–3 CALLED TO RUN"" (plans_11 p.7); E8.4 outputs 8–10 (plans_11 p.8); 26 80 00 ¶2.02 A.3.d (p.357) ""Ventilation Control Panel""; ¶3.09 J (p.376); Submittal: 26 80 00 ¶1.06 p.356 (hardware submittals before fabrication; control system documentation); Testing/startup: 26 80 00 ¶3.03–3.04 and ¶3.08 pp.371–372 (witnessed factory simulation; field acceptance test; programming, start-up, commissioning)","E9.3: door has H2S and methane alarm lights, fan 1–3 run lights and OFF/ON switches, alarm horn; relays CR1–CR3 report ""called to run"" to the IPS PLC (fan 2 coil printed CR3). Power source conflict: ""FROM LP1"" on E9.3 vs LP2 circuit 5 (500 VA) on E6.2 and E4.1 — see Issues. Fans 1–3 = EF-3 to EF-5 (Inferred). Status New inferred: new panel on the E sheets.; 26 80 00 ¶3.09 J wants HOA per fan with PLC auto start on dewatering operation and gas alarm; E9.3 shows OFF/ON switches and E8.4 has no fan outputs — see Issues."
L-0326,PROPOSED-Methane-Sensor,"Methane gas sensor, Treatment Building, circuit LP2-4 (500 VA)",Controls,Electrical & Controls,"Treatment Building (existing; E4.1 key note 3 calls it ""Dewatering Building"" — see Issues)",New,E4.1; E6.2; E8.4; E8.5; E9.3,Not linked (PROPOSED tag is not printed; no boxed anchor matched),CWP 26,"Electrical, Instrumentation & Controls",6,None found,None found,None found,None found (no MTO line: no tied callout and no tag found on a cited sheet),26 80 00,26 80 00 (tag); E4.1 (tag); E6.2 (tag); E8.5 (tag); E8.4 (sheet); E9.3 (sheet),3,SUB 26 80 00-00 (spec); SUB E4.1-01 (sheet); SUB E6.2-01 (sheet),tag 0; spec 1; sheet 2,Y,3,ITP 26 80 00-01 (spec); ITP 26 80 00-02 (spec); ITP E4.1-01 (sheet),tag 0; spec 2; sheet 1,Y,None found (Add. 4 checked; Addenda 1-3 not staged),OI-0361 (spec),3,OI-0258 (spec); OI-0374 (spec); OI-0378 (sheet),None found,"26-C15 Electrical, Instrumentation & Controls — Existing dewatering / treatment building",2023-04-01,2024-02-09,2023-03-14,Not started (baseline: no progress entered),Verified-Visual,"E4.1 key note 3 and plan label ""METHANE SENSOR LP2-4"" (plans_9 p.6); E6.2 LP2 circuit 4 (plans_10 p.3); E8.5 analog input 2 ""METHANE (PPM)"" (plans_12 p.1); E8.4 output 10 ""METHANE ALARM LIGHT"" (plans_11 p.8); E9.3 ""METHANE ALARM"" light (plans_12 p.5); 26 80 00 ¶2.04 G (p.364): combustible gas detector for methane; ¶3.09 J.5 (p.376): alarm light, horn and SCADA alarm at setpoint, fans on in AUTO; Submittal: 26 80 00 ¶1.06 p.356 (hardware submittals before fabrication; control system documentation); Testing/startup: 26 80 00 ¶3.03–3.04 and ¶3.08 pp.371–372 (witnessed factory simulation; field acceptance test; programming, start-up, commissioning)",NFPA 820 monitoring for the unclassified rating (E4.1 key note 3; E0.4).
L-0327,PROPOSED-H2S-Sensor,"Hydrogen sulfide (H2S) sensor, Treatment Building, circuit LP2-2 (500 VA)",Controls,Electrical & Controls,"Treatment Building (existing; E4.1 key note 3 calls it ""Dewatering Building"" — see Issues)",New,E4.1; E6.2; E8.4; E8.5; E9.3,Not linked (PROPOSED tag is not printed; no boxed anchor matched),CWP 26,"Electrical, Instrumentation & Controls",6,None found,None found,None found,None found (no MTO line: no tied callout and no tag found on a cited sheet),26 80 00,26 80 00 (tag); E4.1 (tag); E6.2 (tag); E8.5 (tag); E8.4 (sheet); E9.3 (sheet),3,SUB 26 80 00-00 (spec); SUB E4.1-01 (sheet); SUB E6.2-01 (sheet),tag 0; spec 1; sheet 2,Y,3,ITP 26 80 00-01 (spec); ITP 26 80 00-02 (spec); ITP E4.1-01 (sheet),tag 0; spec 2; sheet 1,Y,None found (Add. 4 checked; Addenda 1-3 not staged),OI-0361 (spec),3,OI-0258 (spec); OI-0374 (spec); OI-0378 (sheet),None found,"26-C15 Electrical, Instrumentation & Controls — Existing dewatering / treatment building",2023-04-01,2024-02-09,2023-03-14,Not started (baseline: no progress entered),Verified-Visual,"E4.1 key note 3 and plan label ""HYDROGEN SULFIDE H2S SENSOR LP2-2"" (plans_9 p.6); E6.2 LP2 circuit 2 (plans_10 p.3); E8.5 analog input 1 ""H2S (PPM)"" (plans_12 p.1); E8.4 output 9 ""HS2 ALARM LIGHT"" (plans_11 p.8); E9.3 ""H2S ALARM"" light (plans_12 p.5); 26 80 00 ¶2.04 F (p.364): electrochemical H2S sensor, Sierra Monitor Corporation Model 5100-05 series; ¶3.09 J.4 (p.376): alarm light, horn and SCADA alarm at setpoint, fans on in AUTO; Submittal: 26 80 00 ¶1.06 p.356 (hardware submittals before fabrication; control system documentation); Testing/startup: 26 80 00 ¶3.03–3.04 and ¶3.08 pp.371–372 (witnessed factory simulation; field acceptance test; programming, start-up, commissioning)",NFPA 820 monitoring (E4.1 key note 3).
L-0328,PROPOSED-Gas-Alarm-Light-and-Horn,"Local alarm light and horn for ventilation and gas monitoring, Treatment Building",Controls,Electrical & Controls,"Treatment Building (existing; E4.1 key note 3 calls it ""Dewatering Building"" — see Issues)",New,E4.1; E8.4,Not linked (PROPOSED tag is not printed; no boxed anchor matched),CWP 26,"Electrical, Instrumentation & Controls",6,None found,None found,None found,None found (no MTO line: no tied callout and no tag found on a cited sheet),26 80 00,26 80 00 (spec); E4.1 (sheet); E8.4 (sheet),2,SUB 26 80 00-00 (spec); SUB E4.1-01 (sheet),tag 0; spec 1; sheet 1,Y,3,ITP 26 80 00-01 (spec); ITP 26 80 00-02 (spec); ITP E4.1-01 (sheet),tag 0; spec 2; sheet 1,Y,None found (Add. 4 checked; Addenda 1-3 not staged),OI-0361 (spec),3,OI-0258 (spec); OI-0374 (spec); OI-0378 (sheet),None found,"26-C15 Electrical, Instrumentation & Controls — Existing dewatering / treatment building",2023-04-01,2024-02-09,2023-03-14,Not started (baseline: no progress entered),Verified-Visual,"E4.1 key note 3 (plans_9 p.6); E8.4 output 7 ""VENTILATION ALARM LIGHT AND HORN STATION"", 120 V (plans_11 p.8); 26 80 00 ¶3.09 J.2, J.4–5 (p.376): visual and audible alarm notification; H2S or combustible gas alarm activates the alarm light and horn; Submittal: 26 80 00 ¶1.06 p.356 (hardware submittals before fabrication; control system documentation); Testing/startup: 26 80 00 ¶3.03–3.04 and ¶3.08 pp.371–372 (witnessed factory simulation; field acceptance test; programming, start-up, commissioning)","Driven by IPS PLC output 7 (E8.4); separate from the alarm horn on the ventilation control panel (E8.4 output 8, E9.3). Location and circuit not shown (Not stated)."
L-0329,L2 (Treatment Building),"Light fixture type L2 wall packs on circuit LP2-3 (""wall pack lighting"", 500 VA)",Electrical,Electrical & Controls,"Treatment Building (existing; E4.1 key note 3 calls it ""Dewatering Building"" — see Issues)",New,E4.1; E6.2; E8.1,"E4.1 p.70 [383.76,171.24,389.35,176.27] text-layer (+1 read) (tag)",CWP 26,"Electrical, Instrumentation & Controls",6,1,EA,MTO-0099 (tag),Verified — 1 line totaled,26 51 19,E4.1 (tag); 26 51 19 (spec); E6.2 (sheet); E8.1 (sheet),4,SUB 26 51 19-01 (spec); SUB 26 51 19-02 (spec); SUB E4.1-01 (sheet); SUB E6.2-01 (sheet),tag 0; spec 2; sheet 2,Y,3,ITP 26 51 19-01 (spec); ITP E4.1-01 (sheet); ITP E8.1-01 (sheet),tag 0; spec 1; sheet 2,Y,None found (Add. 4 checked; Addenda 1-3 not staged),None found,1,OI-0378 (sheet),None found,"26-C15 Electrical, Instrumentation & Controls — Existing dewatering / treatment building",2023-04-01,2024-02-09,2023-03-14,Not started (baseline: no progress entered),Inferred,"E4.1 plan ""L2"" at LP2-3, 2 shown (plans_9 p.6); E6.2 LP2 circuit 3 (plans_10 p.3); Submittal: 26 51 19 ¶1.06 p.350 (product sheets, photometric reports where scheduled, WSEC control devices); Testing/startup: 26 51 19 ¶3.01 I p.351 (test and demonstrate lighting controls, as applicable)","Type L2 is defined only in the Blower Building fixture schedule (E2.2: Acuity ARC1 LED wall pack with photocell, 17 VA) — same type assumed (Inferred).; E8.1 shows an area light HOA in the IPS panel; taken as this LP2 circuit 3 wall pack (Inferred)."
L-0330,2W-P1,"2W Water Pump No.1, 5 HP, VFD in MCC (E4.3 tags it P-2W-1)",Process-Mechanical,Electrical & Controls,2W Pump Station,Not stated,E4.3; E6.1; E6.3; E7.3; E7.4; E9.1,"E6.1 p.74 [475.38,453.84,495.77,458.87] text-layer (+3 reads) (tag)",CWP 43,Blowers & 2W Plant Water System,"1 (equipment, Inferred per 04); 6 (power and control)",1,EA,MTO-0100 (tag),Verified — 1 line totaled,None found (no spec section cited in rev0),E4.3 (tag); E6.1 (tag); E7.3 (tag); E7.4 (tag); E9.1 (tag); E6.3 (sheet),1,SUB E6.1-01 (tag),tag 1; spec 0; sheet 0,Not stated,0,None found,tag 0; spec 0; sheet 0,Not stated,"Add. 4 p.2, 43 22 10 ¶2.01 A (VFDs in MCC, PLC control) — Add. 4 governs",OI-0368 (tag); OI-0371 (sheet),1,OI-0370 (sheet),#45 (tag); #193 (tag),43-C01 Blowers & 2W Plant Water System — 2W air gap water system,2023-05-01,2023-10-18,2023-03-31,Not started (baseline: no progress entered),Unresolved,"E6.1 one-line tag 2W-P1, 20/3 VFD with line and dV/dt reactors, load calcs 5 HP (plans_10 p.2); E4.3 plan tag box ""P-2W-1"", motor marked 5 (plans_9 p.8); E6.3 P-2W (plans_10 p.4); Add. 4 p.2; E7.3 ""2W PUMP 1: MCC"" inputs on card 5 (numbering conflict, see Issues) (plans_10 p.8); E7.4 output 8 ""2W PUMP #1 CALL TO RUN"" (plans_11 p.1); E9.1 NP-3A ""2W PUMP NO.1 / 5 HP"" (plans_12 p.3)","Cross-lane: Process & Mechanical. 43 22 10 2W Plant Water System Equipment. Tag conflict E4.3 vs E6.1 — Engineer to confirm. Factory junction boxes for motor cables and floats; power to MCC bucket, control to PLC (E4.3 key note 1). Generator factor 1. || [Merge] Exceptions: #45, #193."
L-0331,2W-P2,"2W Water Pump No.2, 5 HP, VFD in MCC (E4.3 tags it P-2W-2)",Process-Mechanical,Electrical & Controls,2W Pump Station,Not stated,E4.3; E6.1; E6.3; E7.3; E7.4; E9.1,"E6.1 p.74 [520.56,453.84,540.95,458.87] text-layer (+3 reads) (tag)",CWP 43,Blowers & 2W Plant Water System,"1 (equipment, Inferred per 04); 6 (power and control)",1,EA,MTO-0101 (tag),Verified — 1 line totaled,None found (no spec section cited in rev0),E4.3 (tag); E6.1 (tag); E7.3 (tag); E7.4 (tag); E9.1 (tag); E6.3 (sheet),1,SUB E6.1-01 (sheet),tag 0; spec 0; sheet 1,Not stated,0,None found,tag 0; spec 0; sheet 0,Not stated,"Add. 4 p.2, 43 22 10 ¶2.01 A (VFDs in MCC, PLC control) — Add. 4 governs",OI-0368 (tag); OI-0371 (sheet),1,OI-0370 (sheet),#45 (tag); #193 (tag),43-C01 Blowers & 2W Plant Water System — 2W air gap water system,2023-05-01,2023-10-18,2023-03-31,Not started (baseline: no progress entered),Unresolved,"E6.1 one-line tag 2W-P2 and load calcs 5 HP (plans_10 p.2); E4.3 plan tag box ""P-2W-2"", motor marked 5 (plans_9 p.8); E6.3 P-2W (plans_10 p.4); Add. 4 p.2; E7.3 ""2W PUMP 2: MCC"" inputs on card 5 (numbering conflict, see Issues) (plans_10 p.8); E7.4 output 9 ""2W PUMP #2 CALL TO RUN"" (plans_11 p.1); E9.1 NP-3D ""2W PUMP NO.2 / 5 HP"" (plans_12 p.3)","Cross-lane: Process & Mechanical. 43 22 10. Tag conflict E4.3 vs E6.1 — Engineer to confirm. Generator factor 0. || [Merge] Exceptions: #45, #193."
L-0332,LSH-111,2W float F1: high level alarm and redundant valve close at 22.00 (factory float tree),Controls,Electrical & Controls,2W Pump Station,New,E4.3; E7.3,"E4.3 p.72 [197.46,442.32,218.98,447.35] text-layer (tag)",CWP 26,"Electrical, Instrumentation & Controls",6,1,EA,MTO-0102 (tag),Verified — 1 line totaled,26 80 00,E4.3 (tag); E7.3 (tag); 26 80 00 (spec),1,SUB 26 80 00-00 (spec),tag 0; spec 1; sheet 0,Y,2,ITP 26 80 00-01 (spec); ITP 26 80 00-02 (spec),tag 0; spec 2; sheet 0,Y,None found (Add. 4 checked; Addenda 1-3 not staged),OI-0361 (spec),3,OI-0258 (spec); OI-0374 (spec); OI-0370 (sheet),#46 (tag),"26-C01 Electrical, Instrumentation & Controls — 2W air gap water system",2023-05-01,2023-10-18,2023-03-14,Not started (baseline: no progress entered),Verified-Visual,"E4.3 key note 2 and float table ""F1 (EQ# LSH-111)"" (plans_9 p.8); E7.3 input ""2W PUMP STATION FLOAT F1"", card 4 (plans_10 p.8); Submittal: 26 80 00 ¶1.06 p.356 (hardware submittals before fabrication; control system documentation); Testing/startup: 26 80 00 ¶3.03–3.04 and ¶3.08 pp.371–372 (witnessed factory simulation; field acceptance test; programming, start-up, commissioning)",Part of the factory float tree assembly (4 floats); float cables through a factory junction box to the PLC (key note 1). || [Merge] Exceptions: #46.
L-0333,F2 (2W Pump Station),2W float F2: valve close at 20.00 (factory float tree),Controls,Electrical & Controls,2W Pump Station,New,E4.3; E7.3,"E4.3 p.72 [250.92,472.20,256.79,477.23] text-layer (+2 reads) (tag); E7.3 p.80 [864.50,484.26,870.37,489.29] text-layer (tag)",CWP 26,"Electrical, Instrumentation & Controls",6,1,EA,MTO-0103 (tag),Verified — 1 line totaled,26 80 00,C4.2 (tag); E4.3 (tag); E7.3 (tag); 26 80 00 (spec),1,SUB 26 80 00-00 (spec),tag 0; spec 1; sheet 0,Y,2,ITP 26 80 00-01 (spec); ITP 26 80 00-02 (spec),tag 0; spec 2; sheet 0,Y,None found (Add. 4 checked; Addenda 1-3 not staged),OI-0361 (spec),3,OI-0258 (spec); OI-0374 (spec); OI-0370 (sheet),#46 (tag),"26-C01 Electrical, Instrumentation & Controls — 2W air gap water system",2023-05-01,2023-10-18,2023-03-14,Not started (baseline: no progress entered),Verified-Visual,"E4.3 key note 2 and float table (plans_9 p.8); E7.3 input ""FLOAT F2"", card 4 (plans_10 p.8); Submittal: 26 80 00 ¶1.06 p.356 (hardware submittals before fabrication; control system documentation); Testing/startup: 26 80 00 ¶3.03–3.04 and ¶3.08 pp.371–372 (witnessed factory simulation; field acceptance test; programming, start-up, commissioning)",No EQ# printed. || [Merge] Exceptions: #46.
L-0334,F3 (2W Pump Station),2W float F3: valve open at 19.00 (factory float tree),Controls,Electrical & Controls,2W Pump Station,New,E4.3; E7.3,"E4.3 p.72 [250.74,490.20,256.61,495.23] text-layer (+2 reads) (tag); E7.3 p.80 [864.50,505.68,870.37,510.71] text-layer (tag)",CWP 26,"Electrical, Instrumentation & Controls",6,1,EA,MTO-0104 (tag),Verified — 1 line totaled,26 80 00,C4.2 (tag); E4.3 (tag); E7.3 (tag); 26 80 00 (spec),1,SUB 26 80 00-00 (spec),tag 0; spec 1; sheet 0,Y,2,ITP 26 80 00-01 (spec); ITP 26 80 00-02 (spec),tag 0; spec 2; sheet 0,Y,None found (Add. 4 checked; Addenda 1-3 not staged),OI-0361 (spec),3,OI-0258 (spec); OI-0374 (spec); OI-0370 (sheet),#46 (tag),"26-C01 Electrical, Instrumentation & Controls — 2W air gap water system",2023-05-01,2023-10-18,2023-03-14,Not started (baseline: no progress entered),Verified-Visual,"E4.3 key note 2 and float table (plans_9 p.8); E7.3 input ""FLOAT F3"", card 4 (plans_10 p.8); Submittal: 26 80 00 ¶1.06 p.356 (hardware submittals before fabrication; control system documentation); Testing/startup: 26 80 00 ¶3.03–3.04 and ¶3.08 pp.371–372 (witnessed factory simulation; field acceptance test; programming, start-up, commissioning)",No EQ# printed. || [Merge] Exceptions: #46.
L-0335,LSL-111,2W float F4: low level alarm and pumps off at 15.00 (factory float tree),Controls,Electrical & Controls,2W Pump Station,New,E4.3; E7.3,"E4.3 p.72 [214.44,581.28,235.12,586.31] text-layer (tag)",CWP 26,"Electrical, Instrumentation & Controls",6,1,EA,MTO-0105 (tag),Verified — 1 line totaled,26 80 00,E4.3 (tag); E7.3 (tag); 26 80 00 (spec),1,SUB 26 80 00-00 (spec),tag 0; spec 1; sheet 0,Y,2,ITP 26 80 00-01 (spec); ITP 26 80 00-02 (spec),tag 0; spec 2; sheet 0,Y,None found (Add. 4 checked; Addenda 1-3 not staged),OI-0361 (spec),3,OI-0258 (spec); OI-0374 (spec); OI-0370 (sheet),#46 (tag),"26-C01 Electrical, Instrumentation & Controls — 2W air gap water system",2023-05-01,2023-10-18,2023-03-14,Not started (baseline: no progress entered),Verified-Visual,"E4.3 key note 2 and float table ""F4 (EQ# LSL-111)"" (plans_9 p.8); E7.3 input ""FLOAT F4"", card 4 (plans_10 p.8); Submittal: 26 80 00 ¶1.06 p.356 (hardware submittals before fabrication; control system documentation); Testing/startup: 26 80 00 ¶3.03–3.04 and ¶3.08 pp.371–372 (witnessed factory simulation; field acceptance test; programming, start-up, commissioning)",[Merge] Exceptions: #46.
L-0336,PROPOSED-2W-Pump-Local-Disconnects,Local motor disconnects for the two 2W pumps (2),Electrical,Electrical & Controls,2W Pump Station,New,E6.1,Not linked (PROPOSED tag is not printed; no boxed anchor matched),CWP 26,"Electrical, Instrumentation & Controls",6,None found,None found,None found,None found (no MTO line: no tied callout and no tag found on a cited sheet),26 28 16,26 28 16 (spec); E6.1 (sheet),2,SUB 26 28 16-01 (spec); SUB E6.1-01 (sheet),tag 0; spec 1; sheet 1,Y,0,None found,tag 0; spec 0; sheet 0,N,None found (Add. 4 checked; Addenda 1-3 not staged),OI-0371 (sheet),0,None found,None found,"26-C01 Electrical, Instrumentation & Controls — 2W air gap water system",2023-05-01,2023-10-18,2023-03-14,Not started (baseline: no progress entered),Inferred,"E6.1 disconnect symbol at 2W-P1 and 2W-P2, key note 4 (plans_10 p.2); Submittal: 26 28 16 ¶1.03 p.314 (catalog data per 26 05 00 ¶1.012)",Not drawn on E4.3. Status New inferred: new one-line.
L-0337,PROPOSED-Hot-Box-1,"Hot Box #1 (2W): houses the 1-in 2W flow meter, isolation valve solenoid, heat trace, GFEP and J-box",Civil,Electrical & Controls,2W Pump Station,Not stated,E4.3; E6.2; E6.3,Not linked (PROPOSED tag is not printed; no boxed anchor matched),CWP 43,Blowers & 2W Plant Water System,"1 (enclosure, Inferred per 04); 6 (electrical)",None found,None found,None found,None found (no MTO line: no tied callout and no tag found on a cited sheet),None found (no spec section cited in rev0),E2.2 (tag); E6.2 (tag); E4.3 (sheet); E6.3 (sheet),1,SUB E6.2-01 (sheet),tag 0; spec 0; sheet 1,Not stated,0,None found,tag 0; spec 0; sheet 0,Not stated,"Add. 4 p.3, C1.3 item (2W (Air Gap) Water Hot Box orientation adjusted) — Add. 4 governs",None found,1,OI-0202 (tag),#16 (tag); #95 (tag),43-C01 Blowers & 2W Plant Water System — 2W air gap water system,2023-05-01,2023-10-18,2023-03-31,Not started (baseline: no progress entered),Unresolved,"E4.3 Hot Box #1 electrical detail and key note 5 (plans_9 p.8); E6.2 LP1 circuit 10 GFEP (plans_10 p.3); E6.3 P-HB1 1"" 6 #12 from the MCC lighting panel GFEP circuit (plans_10 p.4); Add. 4 p.3","Cross-lane: Civil & Site (C1.3 reissued, Add. 4 p.7). Add. 4 re-orients ""the 2W (Air Gap) Water Hot Box"" — which hot box is meant is not stated (see Issues). P-2WSV from the MCC control panel to the solenoid. || [Merge] Exceptions: #16, #95."
L-0338,PROPOSED-Hot-Box-2,Hot Box #2 (2W): heat trace on exposed piping,Civil,Electrical & Controls,2W Pump Station,Not stated,E4.3; E6.2; E6.3,Not linked (PROPOSED tag is not printed; no boxed anchor matched),CWP 43,Blowers & 2W Plant Water System,"1 (enclosure, Inferred per 04); 6 (electrical)",None found,None found,None found,None found (no MTO line: no tied callout and no tag found on a cited sheet),None found (no spec section cited in rev0),E2.2 (tag); E6.2 (tag); E4.3 (sheet); E6.3 (sheet),1,SUB E6.2-01 (sheet),tag 0; spec 0; sheet 1,Not stated,0,None found,tag 0; spec 0; sheet 0,Not stated,"Add. 4 p.3, C1.3 item (2W (Air Gap) Water Hot Box orientation adjusted) — Add. 4 governs",None found,0,None found,#17 (tag),43-C01 Blowers & 2W Plant Water System — 2W air gap water system,2023-05-01,2023-10-18,2023-03-31,Not started (baseline: no progress entered),Unresolved,"E4.3 Hot Box #2 electrical detail and key note 5 (plans_9 p.8); E6.2 LP1 circuit 12 GFEP (plans_10 p.3); E6.3 P-HB2 1"" 2 #12 (plans_10 p.4); Add. 4 p.3",Cross-lane: Civil & Site. Heat-trace power extends from the J-box in Hot Box #1 (key note 5). Hot box orientation item applies to one of the two — not stated which (see Issues). || [Merge] Exceptions: #17.
L-0339,PROPOSED-Hot-Box-Heat-Trace,"Heat trace on all exposed 2W piping in Hot Boxes #1 and #2: Raychem BTV self-regulating or equal, dedicated 120 V 20 A GFEP circuits (LP1-10, LP1-12), NEMA 4X thermostat, end-of-line kit with indicator light",Electrical,Electrical & Controls,2W Pump Station,New,E4.3; E6.2; E6.3,Not linked (PROPOSED tag is not printed; no boxed anchor matched),CWP 26,"Electrical, Instrumentation & Controls",6,None found,None found,None found,None found (no MTO line: no tied callout and no tag found on a cited sheet),None found (no spec section cited in rev0),E4.3 (sheet); E6.2 (sheet); E6.3 (sheet),1,SUB E6.2-01 (sheet),tag 0; spec 0; sheet 1,Not stated,0,None found,tag 0; spec 0; sheet 0,Not stated,None found (Add. 4 checked; Addenda 1-3 not staged),None found,1,OI-0231 (tag),#124 (tag),"26-C01 Electrical, Instrumentation & Controls — 2W air gap water system",2023-05-01,2023-10-18,2023-03-14,Not started (baseline: no progress entered),Verified,"E4.3 key note 3 (plans_9 p.8); E6.2 LP1 circuits 10 and 12 (plans_10 p.3); E6.3 P-HB1, P-HB2 (plans_10 p.4)",No Division 26 section covers heat trace; E4.3 key note 3 is the only requirement in this stack. || [Merge] Exceptions: #124.
L-0340,PROPOSED-2W-Isolation-Valve-Solenoid,Isolation valve solenoid in Hot Box #1 (2W line),Process-Mechanical,Electrical & Controls,2W Pump Station,Not stated,E4.3; E6.3; E7.4,Not linked (PROPOSED tag is not printed; no boxed anchor matched),CWP 43,Blowers & 2W Plant Water System,"1 (equipment, Inferred per 04); 6 (power and control)",None found,None found,None found,None found (no MTO line: no tied callout and no tag found on a cited sheet),None found (no spec section cited in rev0),E4.3 (sheet); E6.3 (sheet); E7.4 (sheet),0,None found,tag 0; spec 0; sheet 0,Not stated,0,None found,tag 0; spec 0; sheet 0,Not stated,None found (Add. 4 checked; Addenda 1-3 not staged),None found,1,OI-0207 (tag),#49 (tag); #100 (tag),43-C01 Blowers & 2W Plant Water System — 2W air gap water system,2023-05-01,2023-10-18,2023-03-31,Not started (baseline: no progress entered),Verified-Visual,"E4.3 Hot Box #1 detail label ""ISOLATION VALVE SOLENOID"", conduit P-2WSV (plans_9 p.8); E6.3 P-2WSV 1"" 2 #12 from the MCC control panel (plans_10 p.4); E7.4 output 10 ""2W SOLENOID VALVE CALL TO OPEN: HOT BOX #1"", 120 V through relay CR10 (plans_11 p.1)","Cross-lane: Process & Mechanical. Valve close/open set points on the 2W float tree (F2 20.00, F3 19.00). || [Merge] Exceptions: #49, #100."
L-0341,UV1,"UV disinfection unit No.1 (UV modules on 10-ft cords, 2 per PDR)",Process-Mechanical,Electrical & Controls,UV Disinfection Chamber,New,E5.1; E6.2; E6.3; E7.3; E7.5,"E5.1 p.73 [118.44,356.10,133.25,361.13] text-layer (+5 reads) (tag); E6.2 p.75 [135.90,509.04,144.18,512.64] ocr (+3 reads) (tag); E6.3 p.76 [997.02,546.12,1005.48,550.08] ocr (+5 reads) (tag); E7.3 p.80 [85.68,400.92,95.46,405.95] text-layer (+1 read) (tag); E7.5 p.82 [107.82,456.18,117.60,461.21] text-layer (+1 read) (tag)",CWP 46,Treatment Equipment,"1 (equipment, Inferred per 04); 6 (power and control)",1,EA,MTO-0106 (tag),Verified — 1 line totaled,None found (no spec section cited in rev0),E2.2 (tag); E5.1 (tag); E6.2 (tag); E7.3 (tag); E7.5 (tag); 26 80 00 (spec); E6.3 (sheet),1,SUB E6.2-01 (sheet),tag 0; spec 0; sheet 1,Not stated,1,ITP E5.1-01 (tag),tag 1; spec 0; sheet 0,Not stated,None found (Add. 4 checked; Addenda 1-3 not staged),None found,2,OI-0326 (sheet); OI-0370 (sheet),#54 (tag),46-C06 Treatment Equipment — UV chamber,2023-04-01,2023-10-11,2023-03-31,Not started (baseline: no progress entered),Inferred,"E5.1 plan tag UV1, revision 1 ""ADD UV DISINFECTION"" 04/18/22, UV interconnection diagram (plans_10 p.1); E6.2 LP1 circuits 9 and 13 (plans_10 p.3); E6.3 P-UV1 (plans_10 p.4); E7.3 input ""UV1 STATUS"" (plans_10 p.8); E7.5 analog input 2 ""UV1 INTENSITY"" (plans_11 p.2); 26 80 00 ¶3.09 E (pp.374–375): manufacturer-furnished UV control panel; dry contact and analog output to the PLC; see 46 66 00","Cross-lane: Process & Mechanical. UV equipment spec is in that lane. Power: PDRs on LP1-9 (2,520 VA, 30 A) via P-UV1 1"" 2 #10; controller on LP1-13 (600 VA); control C-UV to the PLC. Status New inferred from the revision ""ADD UV DISINFECTION"". || [Merge] Exceptions: #54."
L-0342,UV2,"UV disinfection unit No.2 (UV modules on 10-ft cords, 2 per PDR)",Process-Mechanical,Electrical & Controls,UV Disinfection Chamber,New,E5.1; E6.2; E6.3; E7.3; E7.5,"E5.1 p.73 [118.44,363.30,133.25,368.33] text-layer (+5 reads) (tag); E6.2 p.75 [135.90,516.96,144.72,520.56] ocr (+3 reads) (tag); E6.3 p.76 [628.92,553.68,643.86,557.64] ocr (+5 reads) (tag); E7.3 p.80 [85.68,434.22,95.46,439.25] text-layer (+1 read) (tag); E7.5 p.82 [107.82,575.88,117.60,580.91] text-layer (+1 read) (tag)",CWP 46,Treatment Equipment,"1 (equipment, Inferred per 04); 6 (power and control)",1,EA,MTO-0107 (tag),Verified — 1 line totaled,None found (no spec section cited in rev0),E2.2 (tag); E5.1 (tag); E6.2 (tag); E7.3 (tag); E7.5 (tag); 26 80 00 (spec); E6.3 (sheet),1,SUB E6.2-01 (sheet),tag 0; spec 0; sheet 1,Not stated,1,ITP E5.1-01 (tag),tag 1; spec 0; sheet 0,Not stated,None found (Add. 4 checked; Addenda 1-3 not staged),None found,2,OI-0326 (sheet); OI-0370 (sheet),#54 (tag),46-C06 Treatment Equipment — UV chamber,2023-04-01,2023-10-11,2023-03-31,Not started (baseline: no progress entered),Inferred,"E5.1 plan tag UV2, revision 1 ""ADD UV DISINFECTION"" 04/18/22, UV interconnection diagram (plans_10 p.1); E6.2 LP1 circuits 11 and 15 (plans_10 p.3); E6.3 P-UV2 (plans_10 p.4); E7.3 input ""UV2 STATUS"" (plans_10 p.8); E7.5 analog input 3 ""UV2 INTENSITY"" (plans_11 p.2); 26 80 00 ¶3.09 E (pp.374–375): manufacturer-furnished UV control panel; dry contact and analog output to the PLC; see 46 66 00","Cross-lane: Process & Mechanical. UV equipment spec is in that lane. Power: PDRs on LP1-11 (2,520 VA, 30 A) via P-UV2 1"" 2 #10; controller on LP1-15 (600 VA); control C-UV to the PLC. Status New inferred from the revision ""ADD UV DISINFECTION"". || [Merge] Exceptions: #54."
L-0343,PROPOSED-UV-Control-Panel-1,"UV control panel 1 (UV system controller), furnished with the UV system, installed by the contractor",Controls,Electrical & Controls,UV Disinfection Chamber,New,E5.1; E6.3,Not linked (PROPOSED tag is not printed; no boxed anchor matched),CWP 26,"Electrical, Instrumentation & Controls","1 (equipment, Inferred per 04); 6 (power and control)",None found,None found,None found,None found (no MTO line: no tied callout and no tag found on a cited sheet),None found (no spec section cited in rev0),E5.1 (sheet); E6.3 (sheet),0,None found,tag 0; spec 0; sheet 0,Not stated,1,ITP E5.1-01 (sheet),tag 0; spec 0; sheet 1,Not stated,None found (Add. 4 checked; Addenda 1-3 not staged),None found,1,OI-0326 (sheet),#55 (tag),"26-C16 Electrical, Instrumentation & Controls — UV chamber",2023-04-01,2023-10-11,2023-03-14,Not started (baseline: no progress entered),Inferred,"E5.1 plan label ""UV CONTROL PANEL 1"", key note 3 (""install local UV control panels""), interconnection diagram ""UV SYSTEM CONTROLLER"" (plans_10 p.1); E6.3 C-UV (plans_10 p.4)","Cross-lane: Process & Mechanical. Furnished with the UV system (Inferred from key note 3 ""install""). Control C-UV 4 #14 + 2 #18TSP to the PLC. || [Merge] Exceptions: #55."
L-0344,PROPOSED-UV-Control-Panel-2,"UV control panel 2 (UV system controller), furnished with the UV system, installed by the contractor",Controls,Electrical & Controls,UV Disinfection Chamber,New,E5.1; E6.3,Not linked (PROPOSED tag is not printed; no boxed anchor matched),CWP 26,"Electrical, Instrumentation & Controls","1 (equipment, Inferred per 04); 6 (power and control)",None found,None found,None found,None found (no MTO line: no tied callout and no tag found on a cited sheet),None found (no spec section cited in rev0),E5.1 (sheet); E6.3 (sheet),0,None found,tag 0; spec 0; sheet 0,Not stated,1,ITP E5.1-01 (sheet),tag 0; spec 0; sheet 1,Not stated,None found (Add. 4 checked; Addenda 1-3 not staged),None found,1,OI-0326 (sheet),#55 (tag),"26-C16 Electrical, Instrumentation & Controls — UV chamber",2023-04-01,2023-10-11,2023-03-14,Not started (baseline: no progress entered),Inferred,"E5.1 plan label ""UV CONTROL PANEL 2"", key note 3 (""install local UV control panels""), interconnection diagram ""UV SYSTEM CONTROLLER"" (plans_10 p.1); E6.3 C-UV (plans_10 p.4)","Cross-lane: Process & Mechanical. Furnished with the UV system (Inferred from key note 3 ""install""). Control C-UV 4 #14 + 2 #18TSP to the PLC. || [Merge] Exceptions: #55."
L-0345,PROPOSED-UV-Power-Distribution-1,"UV power distribution 1: stainless splitter panel within 10 ft of the module power end, wiring gutter, J-boxes and (3) duplex GFCI power distribution receptacles (PDRs) with in-use wet-location covers on SS Unistrut; SS conduit and fittings",Electrical,Electrical & Controls,UV Disinfection Chamber,New,E5.1; E6.2; E6.3,Not linked (PROPOSED tag is not printed; no boxed anchor matched),CWP 26,"Electrical, Instrumentation & Controls",6,None found,None found,None found,None found (no MTO line: no tied callout and no tag found on a cited sheet),26 27 26,26 27 26 (spec); E5.1 (sheet); E6.2 (sheet); E6.3 (sheet),1,SUB E6.2-01 (sheet),tag 0; spec 0; sheet 1,N,2,ITP 26 27 26-01 (spec); ITP E5.1-01 (sheet),tag 0; spec 1; sheet 1,Y,None found (Add. 4 checked; Addenda 1-3 not staged),None found,1,OI-0326 (sheet),#55 (tag),"26-C16 Electrical, Instrumentation & Controls — UV chamber",2023-04-01,2023-10-11,2023-03-14,Not started (baseline: no progress entered),Verified-Visual,"E5.1 plan label ""UV POWER DISTRIBUTION 1"", key note 3 and interconnection diagram (plans_10 p.1); E6.3 P-UV1 to ""UV1 PDR'S"" (plans_10 p.4); Testing/startup: 26 27 26 ¶2.01 p.313 (devices tested for correct connections)",Contractor provides per key note 3. || [Merge] Exceptions: #55.
L-0346,PROPOSED-UV-Power-Distribution-2,"UV power distribution 2: stainless splitter panel within 10 ft of the module power end, wiring gutter, J-boxes and (3) duplex GFCI power distribution receptacles (PDRs) with in-use wet-location covers on SS Unistrut; SS conduit and fittings",Electrical,Electrical & Controls,UV Disinfection Chamber,New,E5.1; E6.2; E6.3,Not linked (PROPOSED tag is not printed; no boxed anchor matched),CWP 26,"Electrical, Instrumentation & Controls",6,None found,None found,None found,None found (no MTO line: no tied callout and no tag found on a cited sheet),26 27 26,26 27 26 (spec); E5.1 (sheet); E6.2 (sheet); E6.3 (sheet),1,SUB E6.2-01 (sheet),tag 0; spec 0; sheet 1,N,2,ITP 26 27 26-01 (spec); ITP E5.1-01 (sheet),tag 0; spec 1; sheet 1,Y,None found (Add. 4 checked; Addenda 1-3 not staged),None found,1,OI-0326 (sheet),#55 (tag),"26-C16 Electrical, Instrumentation & Controls — UV chamber",2023-04-01,2023-10-11,2023-03-14,Not started (baseline: no progress entered),Verified-Visual,"E5.1 plan label ""UV POWER DISTRIBUTION 2"", key note 3 and interconnection diagram (plans_10 p.1); E6.3 P-UV2 to ""UV2 PDR'S"" (plans_10 p.4); Testing/startup: 26 27 26 ¶2.01 p.313 (devices tested for correct connections)",Contractor provides per key note 3. || [Merge] Exceptions: #55.
L-0347,PROPOSED-Digester-Level-Transducer,"Digester level transducer: WIKA submersible, 316 SS, 0–15 psi, LevelGuard, 4–20 mA, vented, desiccant, NEMA 4X; J-box with terminals and desiccant on the handrail",Controls,Electrical & Controls,Digester,New,E5.1; E6.3; E7.1; E7.5,Not linked (PROPOSED tag is not printed; no boxed anchor matched),CWP 26,"Electrical, Instrumentation & Controls",6,None found,None found,None found,None found (no MTO line: no tied callout and no tag found on a cited sheet),26 80 00,26 80 00 (spec); E5.1 (sheet); E6.3 (sheet); E7.1 (sheet); E7.5 (sheet),1,SUB 26 80 00-00 (spec),tag 0; spec 1; sheet 0,Y,3,ITP 26 80 00-01 (spec); ITP 26 80 00-02 (spec); ITP E5.1-01 (sheet),tag 0; spec 2; sheet 1,Y,None found (Add. 4 checked; Addenda 1-3 not staged),OI-0361 (spec),3,OI-0258 (spec); OI-0374 (spec); OI-0326 (sheet),#58 (tag),"26-C05 Electrical, Instrumentation & Controls — Aerobic digester",2023-04-01,2023-11-01,2023-03-14,Not started (baseline: no progress entered),Unresolved,"E5.1 key note 1, plan and elevation labels (plans_10 p.1); E6.3 S-LT-D 1"" 1 #18TSP to the PLC control panel (plans_10 p.4); E7.5 analog input 1 ""DIGESTER LEVEL 0-15 FT"" through an intrinsic safety barrier (plans_11 p.2); E7.1 intrinsic safety area and barrier in the main PLC panel (plans_10 p.6); Submittal: 26 80 00 ¶1.06 p.356 (hardware submittals before fabrication; control system documentation); Testing/startup: 26 80 00 ¶3.03–3.04 and ¶3.08 pp.371–372 (witnessed factory simulation; field acceptance test; programming, start-up, commissioning)",Status New inferred: specified by make and model and wired on new conduit.; Range conflict: 0–15 psi on E5.1 vs 0–15 ft at the PLC on E7.5; barrier shown although E0.4 lists the open digester unclassified — see Issues. Engineer to confirm range and barrier. || [Merge] Exceptions: #58.
L-0348,PROPOSED-UV-Area-Pole-Light,"UV-area pole light: 4-in square aluminum pole 12 ft on a concrete base secured to the basin side, photocell, local on/off switch, WP/GFCI receptacle; Lithonia ""#DXS0-LED-P3-30K-T3M-MVOLT-SPA-DNAXD"" (as printed) or equal",Electrical,Electrical & Controls,UV Disinfection Chamber,New,E5.1; E6.3,Not linked (PROPOSED tag is not printed; no boxed anchor matched),CWP 26,"Electrical, Instrumentation & Controls",6,None found,None found,None found,None found (no MTO line: no tied callout and no tag found on a cited sheet),26 51 19,E5.1 (tag); 26 51 19 (spec); E6.3 (sheet),2,SUB 26 51 19-01 (spec); SUB 26 51 19-02 (spec),tag 0; spec 2; sheet 0,Y,2,ITP 26 51 19-01 (spec); ITP E5.1-01 (sheet),tag 0; spec 1; sheet 1,Y,None found (Add. 4 checked; Addenda 1-3 not staged),None found,1,OI-0326 (sheet),None found,"26-C16 Electrical, Instrumentation & Controls — UV chamber",2023-04-01,2023-10-11,2023-03-14,Not started (baseline: no progress entered),Unresolved,"E5.1 key note 5, plan label ""POLE LIGHT/WP/GFCI"" and elevation (plans_10 p.1); E6.3 P-LT 120 V 1"" 4 #12 from ""LIGHTING PANEL"" (plans_10 p.4); Submittal: 26 51 19 ¶1.06 p.350 (product sheets, photometric reports where scheduled, WSEC control devices); Testing/startup: 26 51 19 ¶3.01 I p.351 (test and demonstrate lighting controls, as applicable)",Source circuit not assigned: no pole-light circuit on LP1 or LP2 (E6.2) — see Issues. Concrete base coordinated with civil — Cross-lane: Civil & Site.
L-0349,T2,"Transformer T2, 20 kVA, 480–120/240V (MCC; feeds load center LP1)",Electrical,Electrical & Controls,Blower Building,New,E6.1; E9.1,"E6.1 p.74 [1067.58,384.90,1073.45,389.93] text-layer (tag)",CWP 26,"Electrical, Instrumentation & Controls",6,1,EA,MTO-0108 (tag),Verified — 1 line totaled,26 22 13,26 22 13 (tag); C4.1 (tag); E6.1 (tag); E8.2 (tag); E9.1 (tag),2,SUB 26 22 13-01 (spec); SUB E6.1-01 (sheet),tag 0; spec 1; sheet 1,Y,0,None found,tag 0; spec 0; sheet 0,N,None found (Add. 4 checked; Addenda 1-3 not staged),OI-0371 (sheet),0,None found,None found,"26-C02 Electrical, Instrumentation & Controls — Blower Building",2023-04-01,2023-07-31,2023-03-14,Not started (baseline: no progress entered),Inferred,"E6.1 one-line (MCC 60/2 to T2 and load center 120/240V) and load calcs ""LP-1 MCC load center 20 kVA"" (plans_10 p.2); E9.1 NP-7G transformer disconnect and NP-7J ""TRANSFORMER / 480-120/240V / 20 kVA"", MCC section 7 (plans_12 p.3); Submittal: 26 22 13 ¶1.05 p.297 (catalog data per 26 05 00)",Status New inferred: part of the new MCC line-up.
L-0350,PROPOSED-VFDs-in-MCC,"Variable frequency drives in the MCC (10), Allen-Bradley PowerFlex 753 with Ethernet module, each with a 3% line-side reactor; dV/dt filters on motor runs over 50 ft",Electrical,Electrical & Controls,Blower Building,New,E6.1; E7.0; E7.3; E7.4; E7.7; E9.1; E9.2,Not linked (PROPOSED tag is not printed; no boxed anchor matched),CWP 26,"Electrical, Instrumentation & Controls",6,None found,None found,None found,None found (no MTO line: no tied callout and no tag found on a cited sheet),26 29 23,26 29 23 (spec); E6.1 (sheet); E7.0 (sheet); E7.3 (sheet); E7.4 (sheet); E7.7 (sheet); E9.1 (sheet); E9.2 (sheet),5,SUB 26 29 23-01 (spec); SUB 26 29 23-02 (spec); SUB 26 29 23-03 (spec); SUB E6.1-01 (sheet); SUB E9.2-01 (sheet),tag 0; spec 3; sheet 2,Y,2,ITP 26 29 23-01 (spec); ITP E9.2-01 (sheet),tag 0; spec 1; sheet 1,Y,"Add. 4 p.2, 22 13 36 ¶2.01 A (VFDs in MCC, PLC control, no local speed dial) — Add. 4 governs; Add. 4 p.2, 43 22 10 ¶2.01 A (VFDs in MCC, PLC control) — Add. 4 governs",OI-0371 (sheet),2,OI-0279 (tag); OI-0370 (sheet),#176 (tag),"26-C02 Electrical, Instrumentation & Controls — Blower Building",2023-04-01,2023-07-31,2023-03-14,Not started (baseline: no progress entered),Inferred,"E6.1 one-line and key notes 1–3 (plans_10 p.2); E7.0 ""VFDS IN MCC (TYP OF 10)"" (plans_10 p.5); Add. 4 p.2; E7.3 VFD running and fault inputs and E7.4 call-to-run outputs for all ten drives (plans_10 p.8; plans_11 p.1); E9.1 VFD units NP-3A to NP-6G (plans_12 p.3); E9.2 VFD functional wiring diagram and key notes 1–3 (plans_12 p.4); Submittal: 26 29 23 ¶1.02 p.316 (dimensions, wiring diagrams with interface points, options, programming manual); Testing/startup: 26 29 23 ¶3.02–3.03 p.319 (factory load test; certified factory start-up per drive on utility and standby power)","Serve 2W-P1, 2W-P2 (20/3), WP-1, WP-2, SD-1 (15/3) — dV/dt drawn on these five — and BL-1 to BL-4 (35/3), DB (20/3). Manufacturer sets VFD overcurrent ratings (key note 1). All on the PLC Ethernet network (E7.0). Base specs had pump-mounted VFDs; Add. 4 moves them to the MCC under PLC control — the E sheets already match.; No analog speed outputs on E7.7; speed command and feedback over Ethernet (E9.2 key note 2).; E9.2: lockable breaker disconnect, 480/120 V 350 VA control transformer, door HIM, HOA with 10 kΩ hand speed potentiometer; motor thermal contact to each VFD where available (key note 3).; 26 29 23: provided by the system integrator; factory load test; certified factory start-up per drive, tested on utility and standby power; 1-year warranty. || [Merge] Exceptions: #176."
L-0351,TCP-1,Train No.1 control panel (FUTURE); MCC 30/3 unit and feeder P-TCP1,Controls,Electrical & Controls,Train No.1 (future),Not stated,E6.1; E6.3; E7.3; E7.6; E9.1,"E6.1 p.74 [300.06,501.36,314.59,506.39] text-layer (+2 reads) (tag)",CWP 26,"Electrical, Instrumentation & Controls","6 (MCC provision only, if in scope)",1,EA,MTO-0109 (tag),Verified — 1 line totaled,None found (no spec section cited in rev0),E6.1 (tag); E7.3 (tag); E7.6 (tag); E9.1 (tag); E6.3 (sheet),1,SUB E6.1-01 (tag),tag 1; spec 0; sheet 0,Not stated,0,None found,tag 0; spec 0; sheet 0,Not stated,None found (Add. 4 checked; Addenda 1-3 not staged),OI-0372 (tag); OI-0371 (sheet),2,OI-0232 (tag); OI-0370 (sheet),#125 (tag); #197 (tag),"26-C06 Electrical, Instrumentation & Controls — Future provisions — not scheduled",Not scheduled (Marked FUTURE on the drawings; not Phase I work),Not scheduled (Marked FUTURE on the drawings; not Phase I work),Not scheduled (Marked FUTURE on the drawings; not Phase I work),Not tracked (Marked FUTURE on the drawings; not Phase I work),Unresolved,"E6.1 one-line (greyed) ""CELL 1 CONTROL PANEL TCP-1 TRAIN NO.1 (FUTURE)"" and load calcs 10 HP, generator factor 1 (plans_10 p.2); E6.3 P-TCP1 1"" 3 #10 from ""MCC (FUTURE)"" (plans_10 p.4); E7.3 ""TREATMENT CELL 1 CONTROL PANEL (FUTURE)"" running, alarm, shutdown drawn greyed (plans_10 p.8); E7.6 Cell #1 DO zones 1 and 2 (FUTURE) (plans_11 p.3); E9.1 NP-2A ""TRAIN NO.1 / PANEL FEEDER (FUTURE)"" (plans_12 p.3)","Whether Phase I furnishes the MCC unit and conduit is not stated — see Issues. Load calcs and generator sizing include it. || [Merge] Exceptions: #125, #197."
L-0352,TCP-2,Train No.2 control panel (FUTURE); MCC 30/3 unit and feeder P-TCP2,Controls,Electrical & Controls,Train No.2 (future),Not stated,E6.1; E6.3; E7.3; E7.6; E9.1,"E6.1 p.74 [344.88,501.36,359.41,506.39] text-layer (+2 reads) (tag)",CWP 26,"Electrical, Instrumentation & Controls","6 (MCC provision only, if in scope)",1,EA,MTO-0110 (tag),Verified — 1 line totaled,None found (no spec section cited in rev0),E6.1 (tag); E7.3 (tag); E7.6 (tag); E9.1 (tag); E6.3 (sheet),1,SUB E6.1-01 (sheet),tag 0; spec 0; sheet 1,Not stated,0,None found,tag 0; spec 0; sheet 0,Not stated,None found (Add. 4 checked; Addenda 1-3 not staged),OI-0372 (tag); OI-0371 (sheet),2,OI-0233 (tag); OI-0370 (sheet),#126 (tag); #197 (tag),"26-C06 Electrical, Instrumentation & Controls — Future provisions — not scheduled",Not scheduled (Marked FUTURE on the drawings; not Phase I work),Not scheduled (Marked FUTURE on the drawings; not Phase I work),Not scheduled (Marked FUTURE on the drawings; not Phase I work),Not tracked (Marked FUTURE on the drawings; not Phase I work),Unresolved,"E6.1 one-line (greyed) ""CELL 2 CONTROL PANEL TCP-2 TRAIN NO.2 (FUTURE)"" and load calcs 10 HP, generator factor 1 (plans_10 p.2); E6.3 P-TCP2 from ""MCC (FUTURE)"" (plans_10 p.4); E7.3 ""TREATMENT CELL 2 CONTROL PANEL (FUTURE)"" running, alarm, shutdown drawn greyed (plans_10 p.8); E7.6 Cell #2 DO zones 1 and 2 (FUTURE) (plans_11 p.3); E9.1 NP-2B ""TRAIN NO.2 / PANEL FEEDER (FUTURE)"" (plans_12 p.3)","Same open scope question as TCP-1. || [Merge] Exceptions: #126, #197."
L-0353,PROPOSED-Conduit-and-Conductor-Runs,"Conduit and conductor runs per the E6.3 schedules: 40 named power runs (+2 unnamed UV controller circuits, AC spare) and 38 named 24 VDC control/signal runs (+DC spare)",Electrical,Electrical & Controls,Site-wide,New,E6.3; E10.1; E10.2,Not linked (PROPOSED tag is not printed; no boxed anchor matched),CWP 26,"Electrical, Instrumentation & Controls",6,None found,None found,None found,None found (no MTO line: no tied callout and no tag found on a cited sheet),26 05 19; 26 05 33,26 05 19 (spec); 26 05 33 (spec); E6.3 (sheet); E10.1 (sheet); E10.2 (sheet),3,SUB 26 05 19-01 (spec); SUB 26 05 33-01 (spec); SUB 26 05 33-02 (spec),tag 0; spec 3; sheet 0,N,2,ITP 26 05 19-01 (spec); ITP 26 05 33-01 (spec),tag 0; spec 2; sheet 0,Y,None found (Add. 4 checked; Addenda 1-3 not staged),OI-0364 (sheet),1,OI-0297 (sheet),None found,"26-C10 Electrical, Instrumentation & Controls — 480V service, MCC and PLC panel",2023-04-01,2023-10-04,2023-03-14,Not started (baseline: no progress entered),Inferred,"E6.3 power schedule and control and signal schedule (plans_10 p.4); E10.1 secondary and feeder raceway detail and trenching notes (plans_12 p.6); 26 05 19 (pp.282–288); 26 05 33 (pp.290–296); Testing/startup: 26 05 19 ¶3.07 pp.286–288 (insulation resistance 1,000 VDC, 1 megohm min; continuity; thermal imaging; ground rods 25 ohms max, composite 15 ohms)","Roll-up row; individual runs are not carried (workflow log). P-SEC and P-TPS have their own rows. Branch circuits not on the schedule are sized per NEC (E2.2 gen. note 2). Status New inferred: all scheduled runs are new work.; Burial 24 in feeders, 36 in secondary and primary; detectable red marking tape (26 05 33 ¶2.08); feeder insulation-resistance tests per 26 05 19 ¶3.07."
L-0354,PROPOSED-Blower-PTC-Relay-Modules,"Blower motor PTC relay modules (5), furnished by the blower supplier, installed in the main PLC control panel",Controls,Electrical & Controls,Blower Building,New,E7.1; E7.2; E7.3,Not linked (PROPOSED tag is not printed; no boxed anchor matched),CWP 26,"Electrical, Instrumentation & Controls","1 (equipment, Inferred per 04); 6 (power and control)",None found,None found,None found,None found (no MTO line: no tied callout and no tag found on a cited sheet),None found (no spec section cited in rev0),E7.1 (sheet); E7.2 (sheet); E7.3 (sheet),1,SUB E7.2-01 (sheet),tag 0; spec 0; sheet 1,Not stated,0,None found,tag 0; spec 0; sheet 0,Not stated,None found (Add. 4 checked; Addenda 1-3 not staged),None found,2,OI-0234 (tag); OI-0370 (sheet),#127 (tag); #214 (tag),"26-C02 Electrical, Instrumentation & Controls — Blower Building",2023-04-01,2023-07-31,2023-03-14,Not started (baseline: no progress entered),Inferred,"E7.1 backpanel ""BLOWER MOTOR PROTECTIVE RELAYS (5 SUPPLIED BY BLOWER MANUFACTURER)"" (plans_10 p.6); E7.2 key note 1 and 1 A branches CBA4–8 ""MOTOR PTC RELAY MODULE (TYP OF 5)"" (plans_10 p.7); E7.3 key note 1 at each ""HIGH MOTOR TEMP"" input (plans_10 p.8)","Cross-lane: Process & Mechanical. Blower supplier furnishes; system integrator installs, provides a 120 V circuit to each and wires the overtemperature trip to the PLC to shut the blower down (E7.2 key note 1). Five = BL-1 to BL-4 and DB (Inferred from count and the five blower enclosures on E7.3). Status New inferred: new blower package. || [Merge] Exceptions: #127, #214."
L-0355,PROPOSED-Influent-Pump-Seal-Fail-Overtemp-Relays,"Influent pump seal-fail and overtemperature relays (4), Mini-CAS or equal, furnished by the pump manufacturer, installed in the IPS panel",Controls,Electrical & Controls,Influent Pump Station,New,E8.1,Not linked (PROPOSED tag is not printed; no boxed anchor matched),CWP 22,Plumbing & Process Pumps,"1 (equipment, Inferred per 04); 6 (power and control)",None found,None found,None found,None found (no MTO line: no tied callout and no tag found on a cited sheet),None found (no spec section cited in rev0),E8.1 (sheet),0,None found,tag 0; spec 0; sheet 0,Not stated,1,ITP E8.1-01 (sheet),tag 0; spec 0; sheet 1,Not stated,None found (Add. 4 checked; Addenda 1-3 not staged),None found,0,None found,#42 (tag); #214 (tag),22-C01 Plumbing & Process Pumps — Influent pump station and flow splitter,2023-06-01,2023-10-25,2023-03-31,Not started (baseline: no progress entered),Inferred,"E8.1 key note 3 and backpanel ""SEAL FAIL RELAYS""; four ""Mini CAS"" relay faces with leakage/overtemp and reset (plans_11 p.5)","Cross-lane: Process & Mechanical. System integrator coordinates the relays with the pump supplier (E8.1 key note 3). Count 4 = relay faces drawn and pumps 1–4 (Verified). Door indicators per pump: seal fail, overtemperature, reset. Status New inferred: new pumps and panel. || [Merge] Exceptions: #42, #214."
L-0356,PROPOSED-Temporary-Backup-Generator,"Temporary back-up generator (rental), connected to the permanent ATS until the permanent generator arrives; example cut sheet MQ Power 120 kW prime diesel",Electrical,Electrical & Controls,Electric Service Area,Temporary,None (Add. 4 and 26 05 00 only),Not linked (PROPOSED tag is not printed; no boxed anchor matched),CWP 26,"Electrical, Instrumentation & Controls",18 — Unresolved (see 04),None found,None found,None found,None found (no MTO line: no tied callout and no tag found on a cited sheet),26 05 00,26 05 00 (spec); Add. 4 Generator Exhibit (spec),2,SUB 26 05 00-01 (spec); SUB 26 05 00-02 (spec),tag 0; spec 2; sheet 0,Y,1,ITP 26 05 00-01 (spec),tag 0; spec 1; sheet 0,Y,"Add. 4 p.1, Clarification 5; exhibit pp.11–13 — Add. 4 governs",None found,3,OI-0002 (tag); OI-0465 (tag); OI-0474 (tag),#14 (tag); #142 (tag); #255 (tag),"26-C13 Electrical, Instrumentation & Controls — Temporary back-up generator (rental)",2023-09-25,2024-04-30,2023-03-14,Not started (baseline: no progress entered),Unresolved,"Add. 4 p.1 Clarification 5 (permanent ATS, temporary connection, tests, 60 dBA or lower at full load, ""example cut sheet""); Add. 4 exhibit pp.11–13 (Sunbelt 120 kW, MQ Power, John Deere 180 HP, 269 gal, 9 GPH, 30 h, 202x83x89 in, 9,784 lb, $735/day, $1,975/week, $4,620/4 weeks); 26 05 00 ¶1.016 C (p.276) and ¶3.03 E.5 (p.279); Submittal: 26 05 00 ¶1.016 C p.276 (schedule and written plan for disruptions over 20 minutes, Owner and Engineer approval); Testing/startup: Add. 4 p.1 Clarification 5 (test generator connections; automatic load transfer test)","Rating not stated: 120 kW prime is about 150 kVA at 0.8 pf against the E6.1 generator load of 188.0 A (156 kVA at 480 V) (Inferred arithmetic) — see Issues. Division 26 also requires temporary generators for disruptions over 20 minutes with an Owner/Engineer-approved written plan (26 05 00 ¶1.016 C), so the item sits under Item 6 and Bid Item #18 — cited flag in Issues. || [Merge] Exceptions: #14, #142, #255."
L-0357,PROPOSED-Construction-Power-Service,"Dedicated construction power service (contractor-provided, contractor-paid energy)",Electrical,Electrical & Controls,Not stated,Temporary,Not shown,Not linked (PROPOSED tag is not printed; no boxed anchor matched),CWP 26,"Electrical, Instrumentation & Controls",6 (Division 26 per 04),None found,None found,None found,None found (no MTO line: no tied callout and no tag found on a cited sheet),26 05 00,26 05 00 (spec),2,SUB 26 05 00-01 (spec); SUB 26 05 00-02 (spec),tag 0; spec 2; sheet 0,N,1,ITP 26 05 00-01 (spec),tag 0; spec 1; sheet 0,N,None found (Add. 4 checked; Addenda 1-3 not staged),None found,1,OI-0474 (tag),#67 (tag),"26-C12 Electrical, Instrumentation & Controls — Temporary facilities and controls",2023-03-15,2024-10-16,2023-03-14,Not started (baseline: no progress entered),Verified,26 05 00 ¶1.015 A–C (main spec p.276),"Serves construction equipment, job trailer and other construction needs; the contractor coordinates with the Utility and pays equipment, installation and metered energy. Location and size not shown (Not stated). || [Merge] Exceptions: #67."
L-0358,PROPOSED-Electrical-Equipment-Housekeeping-Pads,"Concrete housekeeping pads under floor-mounted electrical equipment (MCC, main PLC panel, IPS panel)",Electrical,Electrical & Controls,"Blower Building (MCC, main PLC panel); Influent Pump Station (IPS panel)",New,E7.1; E8.1; E9.1,Not linked (PROPOSED tag is not printed; no boxed anchor matched),CWP 26,"Electrical, Instrumentation & Controls",6 (Division 26 per 04); concrete per civil specifications,None found,None found,None found,None found (no MTO line: no tied callout and no tag found on a cited sheet),26 05 00,26 05 00 (spec); E7.1 (sheet); E8.1 (sheet); E9.1 (sheet),2,SUB 26 05 00-01 (spec); SUB 26 05 00-02 (spec),tag 0; spec 2; sheet 0,N,2,ITP 26 05 00-01 (spec); ITP E8.1-01 (sheet),tag 0; spec 1; sheet 1,N,None found (Add. 4 checked; Addenda 1-3 not staged),None found,0,None found,#213 (tag),"26-C02 Electrical, Instrumentation & Controls — Blower Building",2023-04-01,2023-07-31,2023-03-14,Not started (baseline: no progress entered),Inferred,"26 05 00 ¶2.04 (main spec p.278): pad under each floor-mounted MCC and electrical equipment, 3 in wider than the base on both ends, 3 in minimum height; E9.1 4 in pad under the MCC (plans_12 p.3); E7.1 ""CONCRETE HOUSKEEPING PAD PER CIVIL SPECS"" (plans_10 p.6); E8.1 ""CONCRETE EQUIPMENT PAD PER CIVIL SPECIFICATIONS"" (plans_11 p.5)","Cross-lane: Civil & Site (concrete per civil specifications). The generator pad is a separate civil item (E1.1, E10.3; see Issues). Status New inferred: pads for new equipment. || [Merge] Exceptions: #213."
L-0359,PROPOSED-Blower-Building-Slab-and-Grade-Beams,Blower Building concrete slab-on-grade and grade beams,Structural,Structural & Building,Blower Building,New,A1.1; A1.2; S1.1; S2.3; S4.1,Not linked (PROPOSED tag is not printed; no boxed anchor matched),CWP 03,Concrete (Cast-in-Place & Precast),1 (Inferred per 04),None found,None found,None found,None found (no MTO line: no tied callout and no tag found on a cited sheet),03 30 00,03 30 00 (spec); A1.1 (sheet); A1.2 (sheet); S1.1 (sheet); S2.3 (sheet); S4.1 (sheet),6,SUB 03 30 00-01 (spec); SUB 03 30 00-02 (spec); SUB A1.1-01 (sheet); SUB S1.1-01 (sheet); SUB S2.3-01 (sheet); SUB S4.1-01 (sheet),tag 0; spec 2; sheet 4,Y,3,ITP 03 30 00-01 (spec); ITP S1.1-01 (sheet); ITP S2.3-01 (sheet),tag 0; spec 1; sheet 2,Y,Add. 4 p.3; p.4 (A1.1: extend slab 9 in north to abut existing Train 2 slab; match Train 2 finished floor); p.9 (S2.3 reissue) — Add. 4 governs,None found,7,OI-0455 (tag); OI-0240 (spec); OI-0241 (spec); OI-0451 (spec); OI-0456 (spec); OI-0006 (sheet); OI-0252 (sheet),None found,03-C02 Concrete (Cast-in-Place & Precast) — Blower Building,2023-04-01,2023-07-31,2023-03-31,Not started (baseline: no progress entered),Inferred,"plans_7 p.5, p.6, p.8; plans_8 p.3; Add. 4 p.3, p.4, p.9","6 in SOG, #4 @ 18 in each way mid-depth; 20 in W x 18 in D perimeter grade beam, (3) bars T&B, bar size illegible (Issues, Missing #6). Slab 10 ft-0 in wide (building 9 ft-3 in) x 44 ft-0 in per Add. 4 (base 42 ft-0 in x 9 ft-6 in, verify w/ civil). North grade beam widened 9 in to abut existing foundation, #4 x 30 in dowels @ 36 in drilled/epoxied 4 in (Add. 4 S2.3). Concrete 4,500 psi, 0.45, 3/4 in, 6% air, 30% fly ash/slag (S1.1). R-10 XPS at footing perimeter with EIFS cover (A1.2). Foundation design subject to change after metal building design (S2.3 note 2). Submittals 03 30 00 ¶1.06 (shop drawings, mix design, joint plan); testing 03 30 00 ¶1.07 B and ¶3.012 A (Owner testing/inspection). Building slab moist cure 7 days (03 30 00 ¶3.010 D.2.a); vapor retarder 15 mil Stego Wrap (¶2.05)."
L-0360,PROPOSED-Blower-Pad,Concrete blower equipment pad carrying 4 blowers,Structural,Structural & Building,Blower Building,New,A1.1; A1.3; S1.1; S2.3,Not linked (PROPOSED tag is not printed; no boxed anchor matched),CWP 03,Concrete (Cast-in-Place & Precast),1 (Inferred per 04),None found,None found,None found,None found (no MTO line: no tied callout and no tag found on a cited sheet),03 30 00,A1.1 (tag); 03 30 00 (spec); A1.3 (sheet); S1.1 (sheet); S2.3 (sheet),5,SUB 03 30 00-01 (spec); SUB 03 30 00-02 (spec); SUB A1.1-01 (sheet); SUB S1.1-01 (sheet); SUB S2.3-01 (sheet),tag 0; spec 2; sheet 3,Y,3,ITP 03 30 00-01 (spec); ITP S1.1-01 (sheet); ITP S2.3-01 (sheet),tag 0; spec 1; sheet 2,Y,"Add. 4 p.4 (A1.1: pad 6.00 ft to 7.00 ft from west wall); p.9 (S2.3: pad 4 in min. to 3-1/2 in, per civil) — Add. 4 governs",None found,6,OI-0240 (spec); OI-0241 (spec); OI-0451 (spec); OI-0456 (spec); OI-0006 (sheet); OI-0252 (sheet),#233 (tag),03-C02 Concrete (Cast-in-Place & Precast) — Blower Building,2023-04-01,2023-07-31,2023-03-31,Not started (baseline: no progress entered),Inferred,"plans_7 p.5 (A1.1: 22.60 ft x 4.50 ft pad; 3 in typ blower to pad edge); plans_7 p.8 (S1.1 schedule: misc equipment pads); plans_8 p.3; Add. 4 p.4, p.9","Pad 22.60 ft x 4.50 ft (A1.1). Thickness 3-1/2 in per Add. 4 S2.3, ""per civil"" (cross-lane check: civil blower sheets C6.4/C6.5 are Process & Mechanical lane per 01). Mix per S1.1 misc equipment pads. Submittals 03 30 00 ¶1.06 (shop drawings, mix design, joint plan); testing 03 30 00 ¶1.07 B and ¶3.012 A (Owner testing/inspection). || [Merge] Exceptions: #233."
L-0361,PROPOSED-Blowers-Blower-Building,Blowers (4) on the blower pad,Process-Mechanical,Structural & Building,Blower Building,New,A1.1; A1.3,Not linked (PROPOSED tag is not printed; no boxed anchor matched),CWP 43,Blowers & 2W Plant Water System,1 (Inferred per 04),None found,None found,None found,None found (no MTO line: no tied callout and no tag found on a cited sheet),None found (no spec section cited in rev0),A1.1 (sheet); A1.3 (sheet),1,SUB A1.1-01 (sheet),tag 0; spec 0; sheet 1,Not stated,0,None found,tag 0; spec 0; sheet 0,Not stated,None found (Add. 4 checked; Addenda 1-3 not staged),None found,1,OI-0252 (sheet),#18 (tag); #224 (tag),43-C02 Blowers & 2W Plant Water System — Blower Building,2023-04-01,2023-07-31,2023-03-31,Not started (baseline: no progress entered),Inferred,plans_7 p.5; plans_7 p.7,"Cross-lane: Process & Mechanical (43 11 00 Blower Equipment; C6.4/C6.5). No equipment tags shown on A sheets. || [Merge] Exceptions: #18, #224."
L-0362,PROPOSED-2W-Bladder-Tank-Assembly,"2W bladder tank assembly — 2 tanks, 24 in diameter",Process-Mechanical,Structural & Building,Blower Building,New,A1.1,Not linked (PROPOSED tag is not printed; no boxed anchor matched),CWP 43,Blowers & 2W Plant Water System,1 (Inferred per 04),None found,None found,None found,None found (no MTO line: no tied callout and no tag found on a cited sheet),None found (no spec section cited in rev0),A1.1 (sheet),1,SUB A1.1-01 (sheet),tag 0; spec 0; sheet 1,Not stated,0,None found,tag 0; spec 0; sheet 0,Not stated,"Add. 4 p.3; p.4 (A1.1: move to new location, see C6.4) — Add. 4 governs",None found,1,OI-0252 (sheet),#25 (tag); #227 (tag),43-C02 Blowers & 2W Plant Water System — Blower Building,2023-04-01,2023-07-31,2023-03-31,Not started (baseline: no progress entered),Inferred,plans_7 p.5 (BLADDER TANKS PER 1/C4.3); Add. 4 p.4,"Cross-lane: Process & Mechanical (C4.3, C6.4). || [Merge] Exceptions: #25, #227."
L-0363,PROPOSED-Louver-36x84-Motorized,"Louver, 36 in x 84 in, motorized — Blower Building west wall",Process-Mechanical,Structural & Building,Blower Building,New,A1.1; A1.2,Not linked (PROPOSED tag is not printed; no boxed anchor matched),CWP 23,HVAC & Ventilation,1 (Inferred per 04),None found,None found,None found,None found (no MTO line: no tied callout and no tag found on a cited sheet),None found (no spec section cited in rev0),A1.1 (sheet); A1.2 (sheet),1,SUB A1.1-01 (sheet),tag 0; spec 0; sheet 1,Not stated,0,None found,tag 0; spec 0; sheet 0,Not stated,None found (Add. 4 checked; Addenda 1-3 not staged),None found,1,OI-0252 (sheet),#21 (tag); #228 (tag),23-C01 HVAC & Ventilation — Blower Building,2023-04-01,2023-07-31,2023-03-31,Not started (baseline: no progress entered),Inferred,plans_7 p.5; plans_7 p.6,"Cross-lane: Process & Mechanical (23 34 00 per 02 judgment call; cross-check E9.3). || [Merge] Exceptions: #21, #228."
L-0364,PROPOSED-Louver-24x24-Manual,"Louver, 24 in x 24 in, manual — Blower Building west wall",Process-Mechanical,Structural & Building,Blower Building,New,A1.1; A1.2,Not linked (PROPOSED tag is not printed; no boxed anchor matched),CWP 23,HVAC & Ventilation,1 (Inferred per 04),None found,None found,None found,None found (no MTO line: no tied callout and no tag found on a cited sheet),None found (no spec section cited in rev0),A1.1 (sheet); A1.2 (sheet),1,SUB A1.1-01 (sheet),tag 0; spec 0; sheet 1,Not stated,0,None found,tag 0; spec 0; sheet 0,Not stated,None found (Add. 4 checked; Addenda 1-3 not staged),None found,1,OI-0252 (sheet),#22 (tag); #228 (tag),23-C01 HVAC & Ventilation — Blower Building,2023-04-01,2023-07-31,2023-03-31,Not started (baseline: no progress entered),Inferred,plans_7 p.5; plans_7 p.6,"Cross-lane: Process & Mechanical (23 34 00 per 02 judgment call). || [Merge] Exceptions: #22, #228."
L-0365,PROPOSED-Exhaust-Fans-Blower-Building,Exhaust fans (2) with 24 in x 24 in wall vents — Blower Building east wall,Process-Mechanical,Structural & Building,Blower Building,New,A1.1; A1.2,Not linked (PROPOSED tag is not printed; no boxed anchor matched),CWP 23,HVAC & Ventilation,1 (Inferred per 04),None found,None found,None found,None found (no MTO line: no tied callout and no tag found on a cited sheet),None found (no spec section cited in rev0),A1.1 (sheet); A1.2 (sheet),1,SUB A1.1-01 (sheet),tag 0; spec 0; sheet 1,Not stated,0,None found,tag 0; spec 0; sheet 0,Not stated,Add. 4 p.4 (A1.1 vent spacing 1.50 ft to 1.25 ft); p.5 (A1.2: raise building for both through-wall exhaust fans) — Add. 4 governs,None found,1,OI-0252 (sheet),#20 (tag); #228 (tag),23-C01 HVAC & Ventilation — Blower Building,2023-04-01,2023-07-31,2023-03-31,Not started (baseline: no progress entered),Inferred,"plans_7 p.5; plans_7 p.6; Add. 4 p.4, p.5","Cross-lane: Process & Mechanical (23 34 00); controls cross-check E9.3 (Electrical & Controls) per 02 judgment call. || [Merge] Exceptions: #20, #228."
L-0366,PROPOSED-Fire-Extinguishers-Blower-Building,"Fire extinguisher assemblies (2), wall-mounted — Blower Building",Architectural,Structural & Building,Blower Building,New,A1.1,Not linked (PROPOSED tag is not printed; no boxed anchor matched),CWP 10,Specialties,1 (Inferred per 04),None found,None found,None found,None found (no MTO line: no tied callout and no tag found on a cited sheet),10 52 00,10 52 00 (spec); A1.1 (sheet),2,SUB 10 52 00-01 (spec); SUB A1.1-01 (sheet),tag 0; spec 1; sheet 1,Y,1,ITP 10 52 00-01 (spec),tag 0; spec 1; sheet 0,Y,Add. 4 p.4 (A1.1: provide 2 assemblies; field-coordinate wall locations with Owner) — Add. 4 governs (base shows 1),None found,1,OI-0252 (sheet),None found,10-C01 Specialties — Blower Building,2023-04-01,2023-07-31,2023-03-31,Not started (baseline: no progress entered),Inferred,plans_7 p.5; Add. 4 p.4,"J.L. Industries Cosmic 5E, UL 2A-10BC, standard red, brackets (10 52 00 ¶2.01). Product data submittal (¶1.02 A); operation check and inspection tag at completion (¶3.01 C)."
L-0367,101A,"Door pair, 10 ft-0 in x 8 ft-0 in x 1-3/4 in, insulated hollow metal, painted, Type B — 2 openings tagged 101A",Architectural,Structural & Building,Blower Building,New,A1.1; A1.2,"A1.1 Add. 4 p.4 [629.28,108.18,639.00,111.24] ocr (+4 reads) (tag)",CWP 08,"Doors, Frames & Hardware",1 (Inferred per 04),Not totaled: no Verified line,EA,MTO-0111 (tag),Inferred — not totaled; lines: 1 Inferred (MTO Lines: Not Totaled Because),08 10 00; 08 70 00; 09 90 00,08 10 00 (tag); 08 70 00 (tag); A1.1 (tag); A1.2 (tag); 09 90 00 (spec),4,SUB A1.1-01 (tag); SUB 08 10 00-00 (spec); SUB 08 70 00-01 (spec); SUB 09 90 00-01 (spec),tag 1; spec 3; sheet 0,Y,3,ITP 08 10 00-00 (spec); ITP 08 70 00-00 (spec); ITP 09 90 00-00 (spec),tag 0; spec 3; sheet 0,Y,Add. 4 p.4 (A1.1 south-wall dimensions revised; door schedule unchanged) — Add. 4 governs,None found,1,OI-0252 (sheet),None found,"08-C01 Doors, Frames & Hardware — Blower Building",2023-04-01,2023-07-31,2023-03-31,Not started (baseline: no progress entered),Unresolved,plans_7 p.5 (door schedule); plans_7 p.6 (south elevation),"Hardware Group 2 (exterior double doors) by door type (Inferred; A1.1 shows no group). Lockset/keying conflict 08 70 00 ¶2.03 A vs Part 4 (Issues, Conflicts). Doors SDI 100 Grade II Model 1, 18 ga, G90; frames 16 ga welded galvanized (08 10 00 ¶2.02). Paint Service Condition C (09 90 00). Submittals 08 70 00 ¶1.03; startup: adjust/check, Owner instruction, 6-month re-adjustment (08 70 00 ¶3.04)."
L-0368,101B,"Door, 3 ft-0 in wide, insulated hollow metal, painted, Type A",Architectural,Structural & Building,Blower Building,New,A1.1; A1.2,"A1.1 p.53 [629.46,115.92,639.00,119.16] ocr (+2 reads) — base page superseded by Add. 4 p.4 (tag)",CWP 08,"Doors, Frames & Hardware",1 (Inferred per 04),Not totaled: no Verified line,EA,MTO-0112 (tag),Inferred — not totaled; lines: 1 Inferred (MTO Lines: Not Totaled Because),08 10 00; 08 70 00; 09 90 00,08 10 00 (tag); 08 70 00 (tag); A1.1 (tag); A1.2 (tag); 09 90 00 (spec),4,SUB A1.1-01 (tag); SUB 08 10 00-00 (spec); SUB 08 70 00-01 (spec); SUB 09 90 00-01 (spec),tag 1; spec 3; sheet 0,Y,3,ITP 08 10 00-00 (spec); ITP 08 70 00-00 (spec); ITP 09 90 00-00 (spec),tag 0; spec 3; sheet 0,Y,Add. 4 p.4 (door schedule unchanged) — Add. 4 governs,None found,2,OI-0450 (tag); OI-0252 (sheet),None found,"08-C01 Doors, Frames & Hardware — Blower Building",2023-04-01,2023-07-31,2023-03-31,Not started (baseline: no progress entered),Unresolved,plans_7 p.5 (door schedule); plans_7 p.6 (south elevation),"A1.2 south elevation dimensions 3.00 ft x 6 ft-8 in (Verified-Visual); A1.1 schedule height illegible at stored resolution — see Issues, Missing information #1. Hardware Group 1 (exterior single doors) by door type (Inferred; A1.1 shows no group). Lockset/keying conflict 08 70 00 ¶2.03 A vs Part 4 (Issues, Conflicts). Doors SDI 100 Grade II Model 1, 18 ga, G90; frames 16 ga welded galvanized (08 10 00 ¶2.02). Paint Service Condition C (09 90 00). Submittals 08 70 00 ¶1.03; startup: adjust/check, Owner instruction, 6-month re-adjustment (08 70 00 ¶3.04)."
L-0369,101C,"Door, 5 ft-0 in x 8 ft-0 in x 1-3/4 in, insulated hollow metal, painted, Type A",Architectural,Structural & Building,Blower Building,New,A1.1; A1.2,"A1.1 p.53 [629.46,123.84,639.00,126.90] ocr (+2 reads) — base page superseded by Add. 4 p.4 (tag)",CWP 08,"Doors, Frames & Hardware",1 (Inferred per 04),None found,None found,None found,None found (no MTO line: no tied callout and no tag found on a cited sheet),08 10 00; 08 70 00; 09 90 00,08 10 00 (tag); 08 70 00 (tag); A1.1 (tag); A1.2 (tag); 09 90 00 (spec),4,SUB A1.1-01 (tag); SUB 08 10 00-00 (spec); SUB 08 70 00-01 (spec); SUB 09 90 00-01 (spec),tag 1; spec 3; sheet 0,Y,3,ITP 08 10 00-00 (spec); ITP 08 70 00-00 (spec); ITP 09 90 00-00 (spec),tag 0; spec 3; sheet 0,Y,Add. 4 p.4 (door schedule unchanged) — Add. 4 governs,None found,1,OI-0252 (sheet),None found,"08-C01 Doors, Frames & Hardware — Blower Building",2023-04-01,2023-07-31,2023-03-31,Not started (baseline: no progress entered),Unresolved,plans_7 p.5 (door schedule); plans_7 p.6 (south elevation),"Hardware Group 1 (exterior single doors) by door type (Inferred; A1.1 shows no group). Lockset/keying conflict 08 70 00 ¶2.03 A vs Part 4 (Issues, Conflicts). Doors SDI 100 Grade II Model 1, 18 ga, G90; frames 16 ga welded galvanized (08 10 00 ¶2.02). Paint Service Condition C (09 90 00). Submittals 08 70 00 ¶1.03; startup: adjust/check, Owner instruction, 6-month re-adjustment (08 70 00 ¶3.04)."
L-0370,PROPOSED-Existing-Office-Louver-4x4,"Existing louvered vent, 4 ft x 4 ft — existing office building south wall; remove, re-side floor to eave",Architectural,Structural & Building,Existing Office Building,Demolished,A1.3,Not linked (PROPOSED tag is not printed; no boxed anchor matched),CWP 13,Pre-Engineered Metal Building,1 (Inferred per 04),None found,None found,None found,None found (no MTO line: no tied callout and no tag found on a cited sheet),13 12 20,13 12 20 (spec); A1.3 (sheet),3,SUB 13 12 20-01 (spec); SUB 13 12 20-02 (spec); SUB 13 12 20-03 (spec),tag 0; spec 3; sheet 0,N,1,ITP 13 12 20-00 (spec),tag 0; spec 1; sheet 0,N,None found (Add. 4 checked; Addenda 1-3 not staged),OI-0367 (spec),0,None found,#28 (tag),13-C03 Pre-Engineered Metal Building — Site demolition ahead of new work,2023-04-01,2023-05-31,2023-03-31,Not started (baseline: no progress entered),Inferred,plans_7 p.7,"Replace metal siding floor to eave with continuous siding to match, no horizontal seams. A1.3 existing building modifications are in 13 12 20 scope (¶1.01 B.2). || [Merge] Exceptions: #28."
L-0371,PROPOSED-Existing-Office-Louver-2x3,"Existing louvered vent, 2 ft x 3 ft — existing office building east wall; remove, re-side floor to eave",Architectural,Structural & Building,Existing Office Building,Demolished,A1.3,Not linked (PROPOSED tag is not printed; no boxed anchor matched),CWP 13,Pre-Engineered Metal Building,1 (Inferred per 04),None found,None found,None found,None found (no MTO line: no tied callout and no tag found on a cited sheet),13 12 20,13 12 20 (spec); A1.3 (sheet),3,SUB 13 12 20-01 (spec); SUB 13 12 20-02 (spec); SUB 13 12 20-03 (spec),tag 0; spec 3; sheet 0,N,1,ITP 13 12 20-00 (spec),tag 0; spec 1; sheet 0,N,None found (Add. 4 checked; Addenda 1-3 not staged),OI-0367 (spec),0,None found,#28 (tag),13-C03 Pre-Engineered Metal Building — Site demolition ahead of new work,2023-04-01,2023-05-31,2023-03-31,Not started (baseline: no progress entered),Inferred,plans_7 p.7,"Replace metal siding floor to eave with continuous siding to match, no horizontal seams. A1.3 existing building modifications are in 13 12 20 scope (¶1.01 B.2). || [Merge] Exceptions: #28."
L-0372,PROPOSED-Existing-Generator-Exhaust-Assembly,Existing generator exhaust assembly — existing office building east wall; remove,Electrical,Structural & Building,Existing Office Building,Demolished,A1.3,Not linked (PROPOSED tag is not printed; no boxed anchor matched),CWP 13,Pre-Engineered Metal Building,1 (Inferred per 04),None found,None found,None found,None found (no MTO line: no tied callout and no tag found on a cited sheet),13 12 20,13 12 20 (spec); A1.3 (sheet),3,SUB 13 12 20-01 (spec); SUB 13 12 20-02 (spec); SUB 13 12 20-03 (spec),tag 0; spec 3; sheet 0,Not stated,1,ITP 13 12 20-00 (spec),tag 0; spec 1; sheet 0,Not stated,None found (Add. 4 checked; Addenda 1-3 not staged),OI-0367 (spec),0,None found,#28 (tag); #230 (tag),"13-C02 Pre-Engineered Metal Building — Existing generator, switchgear and fuel tank removal",2024-05-01,2024-05-31,2023-03-31,Not started (baseline: no progress entered),Inferred,plans_7 p.7,"Cross-lane: Electrical & Controls (Inferred: part of the existing generator system). Framing, trim and siding under 13 12 20 ¶1.01 B.2 (A1.3 modifications); the equipment itself is specified outside this stack, so Y/N not stated. || [Merge] Exceptions: #28, #230."
L-0373,PROPOSED-WWTP-Building-Louver-3x7,"Louvered vent, 3 ft x 7 ft — existing WWTP building, 3 locations",Process-Mechanical,Structural & Building,Existing WWTP Building,New,A1.3,Not linked (PROPOSED tag is not printed; no boxed anchor matched),CWP 13,Pre-Engineered Metal Building,1 (Inferred per 04),None found,None found,None found,None found (no MTO line: no tied callout and no tag found on a cited sheet),13 12 20,13 12 20 (spec); A1.3 (sheet),3,SUB 13 12 20-01 (spec); SUB 13 12 20-02 (spec); SUB 13 12 20-03 (spec),tag 0; spec 3; sheet 0,Not stated,1,ITP 13 12 20-00 (spec),tag 0; spec 1; sheet 0,Not stated,None found (Add. 4 checked; Addenda 1-3 not staged),OI-0367 (spec),0,None found,#27 (tag); #229 (tag),13-C04 Pre-Engineered Metal Building — Existing dewatering / treatment building,2023-04-01,2024-02-09,2023-03-31,Not started (baseline: no progress entered),Inferred,plans_7 p.7,"Cross-lane: Process & Mechanical (23 34 00 per 02 judgment call). Frame in, trim to match existing louvers, caulk; final location with Owner. Framing, trim and siding under 13 12 20 ¶1.01 B.2 (A1.3 modifications); the equipment itself is specified outside this stack, so Y/N not stated. || [Merge] Exceptions: #27, #229."
L-0374,PROPOSED-WWTP-Building-Exhaust-Fan-24x24,"Exhaust fan, 24 in x 24 in — existing WWTP building, 3 locations, 6 ft above slab",Process-Mechanical,Structural & Building,Existing WWTP Building,New,A1.3,Not linked (PROPOSED tag is not printed; no boxed anchor matched),CWP 13,Pre-Engineered Metal Building,1 (Inferred per 04),None found,None found,None found,None found (no MTO line: no tied callout and no tag found on a cited sheet),13 12 20,13 12 20 (spec); A1.3 (sheet),3,SUB 13 12 20-01 (spec); SUB 13 12 20-02 (spec); SUB 13 12 20-03 (spec),tag 0; spec 3; sheet 0,Not stated,1,ITP 13 12 20-00 (spec),tag 0; spec 1; sheet 0,Not stated,None found (Add. 4 checked; Addenda 1-3 not staged),OI-0367 (spec),0,None found,#26 (tag); #229 (tag),13-C04 Pre-Engineered Metal Building — Existing dewatering / treatment building,2023-04-01,2024-02-09,2023-03-31,Not started (baseline: no progress entered),Inferred,plans_7 p.7,"Cross-lane: Process & Mechanical (23 34 00); power by Electrical & Controls (Inferred). Frame in, trim to match, caulk; final location with Owner. Framing, trim and siding under 13 12 20 ¶1.01 B.2 (A1.3 modifications); the equipment itself is specified outside this stack, so Y/N not stated. || [Merge] Exceptions: #26, #229."
L-0375,PROPOSED-Train-3-Concrete-Tank,Train 3 cast-in-place concrete tank — 12 in circular wall on 12 in mat slab with raised center pedestal,Structural,Structural & Building,Train 3,New,S2.1; S1.1; S4.1,Not linked (PROPOSED tag is not printed; no boxed anchor matched),CWP 03,Concrete (Cast-in-Place & Precast),1 (Inferred per 04),None found,None found,None found,None found (no MTO line: no tied callout and no tag found on a cited sheet),03 30 00,03 30 00 (spec); S2.1 (sheet); S1.1 (sheet); S4.1 (sheet),5,SUB 03 30 00-01 (spec); SUB 03 30 00-02 (spec); SUB S1.1-01 (sheet); SUB S2.1-01 (sheet); SUB S4.1-01 (sheet),tag 0; spec 2; sheet 3,Y,2,ITP 03 30 00-01 (spec); ITP S1.1-01 (sheet),tag 0; spec 1; sheet 1,Y,None found (Add. 4 checked; Addenda 1-3 not staged),None found,7,OI-0443 (tag); OI-0452 (tag); OI-0240 (spec); OI-0241 (spec); OI-0451 (spec); OI-0456 (spec); OI-0006 (sheet),#29 (tag); #158 (tag),03-C06 Concrete (Cast-in-Place & Precast) — Train 3,2023-08-01,2024-07-08,2023-03-31,Not started (baseline: no progress entered),Unresolved,plans_8 p.1 (S2.1 Details 1-5); plans_7 p.8 (S1.1),"Hydrophilic waterstop, submit for approval (S2.1 Detail 4); S1.1 Submittals 4. Horizontal wall bars Grade 75; lap length per 3/S4.1 whose table covers Grade 60 only (Issues, Conflicts #2). Hydraulic-structure mix per S1.1 by inference (Issues, Missing #3). Train 3 stainless fabrication is Bid Items 18/19 (04), not this row. Submittals 03 30 00 ¶1.06 (shop drawings, mix design, joint plan); testing 03 30 00 ¶1.07 B and ¶3.012 A (Owner testing/inspection). Whether the 03 30 00 ¶1.06 F formwork submittal applies is not stated (Issues, Missing information). Cure duration conflict 90 vs 7 days (Issues, Conflicts). || [Merge] Exceptions: #29, #158."
L-0376,PROPOSED-Train-3-Guardrail-and-Ladders,"Train 3 guardrail and ladders — shown ""per civil""",Structural,Structural & Building,Train 3,New,S2.1,Not linked (PROPOSED tag is not printed; no boxed anchor matched),CWP 05,"Metals (Grating, Railings, Ladders, Stairs)",18 — Unresolved (see 04),None found,None found,None found,None found (no MTO line: no tied callout and no tag found on a cited sheet),05 52 00; 05 51 10,05 52 00 (spec); 05 51 10 (spec); S2.1 (sheet),4,SUB 05 51 10-01 (spec); SUB 05 51 10-02 (spec); SUB 05 52 00-01 (spec); SUB S2.1-01 (sheet),tag 0; spec 3; sheet 1,Y,0,None found,tag 0; spec 0; sheet 0,N,None found (Add. 4 checked; Addenda 1-3 not staged),None found,3,OI-0002 (tag); OI-0465 (tag); OI-0446 (spec),#34 (tag); #232 (tag); #255 (tag),"05-C01 Metals (Grating, Railings, Ladders, Stairs) — Train 3",2023-08-01,2024-07-08,2023-03-31,Not started (baseline: no progress entered),Unresolved,plans_8 p.1 (S2.1 Detail 4),"Cross-lane: Process & Mechanical (S2.1 refers to civil; Train 3 civil sheets C3.3-C3.5 are Process & Mechanical lane per 01 — Inferred). Touches Bid Alternates 1/2 (Items 18/19, Train 3 stainless fabrication) per 04. Submittals: WA SE-sealed railing calcs and shop drawings (05 52 00 ¶1.02 A); PE-sealed ladder shop drawings (05 51 10 ¶1.03). Railing material conflict steel vs aluminum (Issues, Conflicts). || [Merge] Exceptions: #34, #232, #255."
L-0377,PROPOSED-Blower-Building-Foundation-Drains,"Perimeter foundation drains, 4 in rigid ABS perforated pipe or drain tile in drain rock — Blower Building slab edge",Civil,Structural & Building,Blower Building,New,S2.3,Not linked (PROPOSED tag is not printed; no boxed anchor matched),CWP 33,Yard Piping & Utilities,1 (Inferred per 04),None found,None found,None found,None found (no MTO line: no tied callout and no tag found on a cited sheet),None found (no spec section cited in rev0),S2.3 (sheet),1,SUB S2.3-01 (sheet),tag 0; spec 0; sheet 1,Y,1,ITP S2.3-01 (sheet),tag 0; spec 0; sheet 1,N,"Add. 4 p.9 (S2.3 reissue, detail unchanged) — Add. 4 governs",None found,3,OI-0235 (tag); OI-0006 (sheet); OI-0252 (sheet),#128 (tag); #239 (tag),33-C01 Yard Piping & Utilities — Blower Building,2023-04-01,2023-07-31,2023-03-31,Not started (baseline: no progress entered),Inferred,plans_8 p.3 (S2.3 Detail 7); Add. 4 p.9,"Submit a foundation drainage plan to civil for review (S2.3 Detail 7 note 6). Discharge by gravity or mechanical means to an approved system (note 1). Cross-lane: Civil & Site (discharge point and drainage plan review). || [Merge] Exceptions: #128, #239."
L-0378,PROPOSED-UV-Disinfection-Chamber-Basin,"UV Disinfection Chamber basin — 8 in CIP concrete walls on 12 in mat slab, with 8 in equipment support walls (4)",Structural,Structural & Building,UV Disinfection Chamber & Digester,New,S2.2; S1.1; S4.1,Not linked (PROPOSED tag is not printed; no boxed anchor matched),CWP 03,Concrete (Cast-in-Place & Precast),1 (Inferred per 04),None found,None found,None found,None found (no MTO line: no tied callout and no tag found on a cited sheet),03 30 00,03 30 00 (spec); S2.2 (sheet); S1.1 (sheet); S4.1 (sheet),6,SUB 03 30 00-01 (spec); SUB 03 30 00-02 (spec); SUB S1.1-01 (sheet); SUB S2.2-01 (sheet); SUB S2.2-02 (sheet); SUB S4.1-01 (sheet),tag 0; spec 2; sheet 4,Y,2,ITP 03 30 00-01 (spec); ITP S1.1-01 (sheet),tag 0; spec 1; sheet 1,Y,None found (Add. 4 checked; Addenda 1-3 not staged),None found,7,OI-0442 (tag); OI-0452 (tag); OI-0240 (spec); OI-0241 (spec); OI-0451 (spec); OI-0456 (spec); OI-0006 (sheet),#56 (tag); #234 (tag),03-C07 Concrete (Cast-in-Place & Precast) — UV chamber and digester,2023-04-01,2023-11-01,2023-03-31,Not started (baseline: no progress entered),Unresolved,"plans_8 p.2 (S2.2 Details 1, 3, 4); plans_7 p.8","Hydrophilic waterstop at all construction joints, submit for approval (S2.2). Mat slab bar spacing conflict 10 in vs 12 in (Issues, Conflicts #1). 3 in mechanical equipment pads per civil at each end of equipment (cross-lane check: Process & Mechanical). UV equipment drawn in the basin, unlabeled (46 66 00, Process & Mechanical). Hydraulic mix by inference (Issues, Missing #3). Submittals 03 30 00 ¶1.06 (shop drawings, mix design, joint plan); testing 03 30 00 ¶1.07 B and ¶3.012 A (Owner testing/inspection). Whether the 03 30 00 ¶1.06 F formwork submittal applies is not stated (Issues, Missing information). || [Merge] Exceptions: #56, #234."
L-0379,PROPOSED-Digester-Concrete-Tank,Digester — 12 in CIP concrete walls on 12 in mat slab with sloped unreinforced topping,Structural,Structural & Building,UV Disinfection Chamber & Digester,New,S2.2; S1.1; S4.1,Not linked (PROPOSED tag is not printed; no boxed anchor matched),CWP 03,Concrete (Cast-in-Place & Precast),1 (Inferred per 04),None found,None found,None found,None found (no MTO line: no tied callout and no tag found on a cited sheet),03 30 00,03 30 00 (spec); S2.2 (sheet); S1.1 (sheet); S4.1 (sheet),6,SUB 03 30 00-01 (spec); SUB 03 30 00-02 (spec); SUB S1.1-01 (sheet); SUB S2.2-01 (sheet); SUB S2.2-02 (sheet); SUB S4.1-01 (sheet),tag 0; spec 2; sheet 4,Y,2,ITP 03 30 00-01 (spec); ITP S1.1-01 (sheet),tag 0; spec 1; sheet 1,Y,None found (Add. 4 checked; Addenda 1-3 not staged),None found,7,OI-0442 (tag); OI-0452 (tag); OI-0240 (spec); OI-0241 (spec); OI-0451 (spec); OI-0456 (spec); OI-0006 (sheet),#56 (tag),03-C07 Concrete (Cast-in-Place & Precast) — UV chamber and digester,2023-04-01,2023-11-01,2023-03-31,Not started (baseline: no progress entered),Unresolved,plans_8 p.2 (S2.2 Details 1-3),"Hydrophilic waterstop, submit for approval. Topping slope per civil. Mat slab bar spacing conflict (Issues, Conflicts #1). Hydraulic mix by inference (Issues, Missing #3). Submittals 03 30 00 ¶1.06 (shop drawings, mix design, joint plan); testing 03 30 00 ¶1.07 B and ¶3.012 A (Owner testing/inspection). Formwork plans and calcs sealed by a WA SE required — 03 30 00 ¶1.06 F names the digester. || [Merge] Exceptions: #56."
L-0380,PROPOSED-Digester-Grating-Beam,"Steel beam, HDG W8x18, spanning the digester for grating support",Structural,Structural & Building,UV Disinfection Chamber & Digester,New,S2.2; S1.1,Not linked (PROPOSED tag is not printed; no boxed anchor matched),CWP 05,"Metals (Grating, Railings, Ladders, Stairs)",1 (Inferred per 04),None found,None found,None found,None found (no MTO line: no tied callout and no tag found on a cited sheet),05 50 00,05 50 00 (spec); S2.2 (sheet); S1.1 (sheet),4,SUB 05 50 00-01 (spec); SUB S1.1-01 (sheet); SUB S2.2-01 (sheet); SUB S2.2-02 (sheet),tag 0; spec 1; sheet 3,Y,2,ITP 05 50 00-00 (spec); ITP S1.1-01 (sheet),tag 0; spec 1; sheet 1,Y,None found (Add. 4 checked; Addenda 1-3 not staged),None found,1,OI-0446 (spec),None found,"05-C02 Metals (Grating, Railings, Ladders, Stairs) — UV chamber and digester",2023-04-01,2023-11-01,2023-03-31,Not started (baseline: no progress entered),Inferred,"plans_8 p.2 (S2.2 Details 1, 2, 7)","Connection each end per 7/S2.2: HDG L4x4x3/8 each side, (2) 3/4 in A307 bolts, 5/8 in epoxy anchors; short slotted holes one end. Submittals 05 50 00 ¶1.04 and S1.1 Submittals 4 (structural steel). Testing: S1.1 special inspection schedule (steel; post-installed anchors) — none in 05 50 00. Chemical anchors required on water-bearing structures (05 50 00 ¶2.03 B.2)."
L-0381,PROPOSED-UV-Digester-Grating,Aluminum solid plank grating with continuous HDG edge angles — UV basin and digester,Structural,Structural & Building,UV Disinfection Chamber & Digester,New,S2.2,Not linked (PROPOSED tag is not printed; no boxed anchor matched),CWP 05,"Metals (Grating, Railings, Ladders, Stairs)",1 (Inferred per 04),None found,None found,None found,None found (no MTO line: no tied callout and no tag found on a cited sheet),05 53 00,05 53 00 (spec); S2.2 (sheet),3,SUB 05 53 00-01 (spec); SUB S2.2-01 (sheet); SUB S2.2-02 (sheet),tag 0; spec 1; sheet 2,Y,0,None found,tag 0; spec 0; sheet 0,N,None found (Add. 4 checked; Addenda 1-3 not staged),None found,1,OI-0447 (spec),#57 (tag),"05-C02 Metals (Grating, Railings, Ladders, Stairs) — UV chamber and digester",2023-04-01,2023-11-01,2023-03-31,Not started (baseline: no progress entered),Unresolved,"plans_8 p.2 (S2.2 Details 2, 3, 5, 6)","Submittals 05 53 00 ¶1.03 A and S2.2 ""submit for approval"". Grating type and support angles conflict: S2.2 solid plank on HDG steel angles vs 05 53 00 solid plank for UV channels only and bar grating on FRP embedment angles (Issues, Conflicts). Attachment by manufacturer; 316 SS bolts, aluminum clips (¶3.01 B). || [Merge] Exceptions: #57."
L-0382,PROPOSED-UV-Digester-Guardrail-and-Ladders,"Guardrail and ladders at the UV basin and digester — shown ""per civil""",Structural,Structural & Building,UV Disinfection Chamber & Digester,New,S2.2,Not linked (PROPOSED tag is not printed; no boxed anchor matched),CWP 05,"Metals (Grating, Railings, Ladders, Stairs)",1 (Inferred per 04),None found,None found,None found,None found (no MTO line: no tied callout and no tag found on a cited sheet),05 52 00; 05 51 10,05 52 00 (spec); 05 51 10 (spec); S2.2 (sheet),5,SUB 05 51 10-01 (spec); SUB 05 51 10-02 (spec); SUB 05 52 00-01 (spec); SUB S2.2-01 (sheet); SUB S2.2-02 (sheet),tag 0; spec 3; sheet 2,Y,0,None found,tag 0; spec 0; sheet 0,N,None found (Add. 4 checked; Addenda 1-3 not staged),None found,1,OI-0446 (spec),#57 (tag); #234 (tag),"05-C02 Metals (Grating, Railings, Ladders, Stairs) — UV chamber and digester",2023-04-01,2023-11-01,2023-03-31,Not started (baseline: no progress entered),Unresolved,plans_8 p.2 (S2.2 Detail 3),"Cross-lane: Process & Mechanical (S2.2 refers to civil; UV/digester civil sheets C5.1-C5.4 are Process & Mechanical lane per 01 — Inferred). Submittals: WA SE-sealed railing calcs and shop drawings (05 52 00 ¶1.02 A); PE-sealed ladder shop drawings (05 51 10 ¶1.03). Railing material conflict steel vs aluminum (Issues, Conflicts). || [Merge] Exceptions: #57, #234."
L-0383,PROPOSED-Drain-Pump-Station-Lid,"Drain pump station lid — 16 in CIP concrete, H-20 loading, two hatch openings and center beam",Structural,Structural & Building,Drain Pump Station,New,S2.4; S1.1,Not linked (PROPOSED tag is not printed; no boxed anchor matched),CWP 03,Concrete (Cast-in-Place & Precast),1 (Inferred per 04),None found,None found,None found,None found (no MTO line: no tied callout and no tag found on a cited sheet),03 30 00,03 30 00 (tag); S2.4 (sheet); S1.1 (sheet),4,SUB 03 30 00-01 (spec); SUB 03 30 00-02 (spec); SUB S1.1-01 (sheet); SUB S2.4-01 (sheet),tag 0; spec 2; sheet 2,Y,2,ITP 03 30 00-01 (spec); ITP S1.1-01 (sheet),tag 0; spec 1; sheet 1,Y,None found (Add. 4 checked; Addenda 1-3 not staged),None found,5,OI-0453 (tag); OI-0240 (spec); OI-0241 (spec); OI-0451 (spec); OI-0456 (spec),None found,03-C04 Concrete (Cast-in-Place & Precast) — Influent pump station and flow splitter,2023-06-01,2023-10-25,2023-03-31,Not started (baseline: no progress entered),Unresolved,"plans_8 p.4 (S2.4 Details 1-3, Notes 1-6); plans_7 p.8 (S1.1 schedule)","Mix per S1.1 ""Drain Pump Station Lid"": 4,500 psi, 0.45, 3/4 in, 5% air, 20% fly ash/slag. Center beam (2) #8 T&B, #4 closed ties @ 3 in max. Lid keyed to precast wall. Which pump station this is — Issues, Missing #4. Submittals per S1.1 Submittals 4. Submittals 03 30 00 ¶1.06 (shop drawings, mix design, joint plan); testing 03 30 00 ¶1.07 B and ¶3.012 A (Owner testing/inspection)."
L-0384,PROPOSED-Drain-Pump-Station-Precast-Wet-Well,"Precast concrete wet well, 8 ft min., 96 in I.D. — per civil",Structural,Structural & Building,Drain Pump Station,New,S2.4,Not linked (PROPOSED tag is not printed; no boxed anchor matched),CWP 03,Concrete (Cast-in-Place & Precast),1 (Inferred per 04),None found,None found,None found,None found (no MTO line: no tied callout and no tag found on a cited sheet),03 40 00,03 40 00 (spec); S2.4 (sheet),2,SUB 03 40 00-01 (spec); SUB S2.4-01 (sheet),tag 0; spec 1; sheet 1,Y,1,ITP 03 40 00-01 (spec),tag 0; spec 1; sheet 0,N,"Add. 4 p.1, Clarification 2 (exterior of precast joints sealed with CANUSA-CPS WrapidSeal or approved equal) — Add. 4 governs",None found,3,OI-0453 (tag); OI-0241 (spec); OI-0445 (spec),#235 (tag),03-C04 Concrete (Cast-in-Place & Precast) — Influent pump station and flow splitter,2023-06-01,2023-10-25,2023-03-31,Not started (baseline: no progress entered),Unresolved,"plans_8 p.4 (S2.4 Details 1-3); main spec pp.182-185 (03 40 00 ¶1.06, ¶2.02 E, ¶2.02 I); Add. 4 p.1","Cross-lane: Process & Mechanical (wet well, per 03 Add. 4 map for Clarification 2). S2.4 base: ""seal AA at joints per civil""; 03 40 00 ¶2.02 I: WrapidSeal joint sleeves; Add. 4 extends to all precast wet well and vault joints. WA-engineer-sealed shop drawings and calcs (¶1.06 A). No testing stated (¶1.07: NPCA certificates, plant inspection rights). Station identity — Issues, Missing #4. || [Merge] Exceptions: #235."
L-0385,PROPOSED-Drain-Pump-Station-Hatches,"Access hatches (2), 2 ft-6 in x 4 ft-0 in rough openings, in the drain pump station lid — per civil",Structural,Structural & Building,Drain Pump Station,New,S2.4,Not linked (PROPOSED tag is not printed; no boxed anchor matched),CWP 03,Concrete (Cast-in-Place & Precast),1 (Inferred per 04),None found,None found,None found,None found (no MTO line: no tied callout and no tag found on a cited sheet),None found (no spec section cited in rev0),S2.4 (sheet),1,SUB S2.4-01 (sheet),tag 0; spec 0; sheet 1,Not stated,0,None found,tag 0; spec 0; sheet 0,Not stated,None found (Add. 4 checked; Addenda 1-3 not staged),None found,0,None found,#38 (tag); #235 (tag),03-C04 Concrete (Cast-in-Place & Precast) — Influent pump station and flow splitter,2023-06-01,2023-10-25,2023-03-31,Not started (baseline: no progress entered),Inferred,plans_8 p.4 (S2.4 Details 1-3),"Hatches ""per civil"", inset into the concrete. Cross-lane: Process & Mechanical / Civil & Site (defining civil sheet not named on S2.4). || [Merge] Exceptions: #38, #235."
L-0386,PROPOSED-Generator-Slab,"Generator slab-on-grade, 6 in with thickened edge (about 1 ft-6 in min. deep)",Structural,Structural & Building,Generator Pad,New,S2.4,Not linked (PROPOSED tag is not printed; no boxed anchor matched),CWP 03,Concrete (Cast-in-Place & Precast),1 (Inferred per 04),None found,None found,None found,None found (no MTO line: no tied callout and no tag found on a cited sheet),03 30 00,03 30 00 (tag); S2.4 (sheet),3,SUB 03 30 00-01 (spec); SUB 03 30 00-02 (spec); SUB S2.4-01 (sheet),tag 0; spec 2; sheet 1,Y,1,ITP 03 30 00-01 (spec),tag 0; spec 1; sheet 0,Y,None found (Add. 4 checked; Addenda 1-3 not staged),None found,6,OI-0375 (tag); OI-0454 (tag); OI-0240 (spec); OI-0241 (spec); OI-0451 (spec); OI-0456 (spec),#201 (tag),03-C03 Concrete (Cast-in-Place & Precast) — Permanent standby generator,2024-03-01,2024-04-30,2023-03-31,Not started (baseline: no progress entered),Unresolved,plans_8 p.4 (S2.4 Detail 4),"#4 @ 18 in each way mid-depth; (2) #4 continuous in thickened edge; subgrade prep per structural notes; max. slope 2V:1H. Generator ""per civil, attachment by others""; permanent vs. temporary not stated (Issues, Missing #5). Submittals 03 30 00 ¶1.06 (shop drawings, mix design, joint plan); testing 03 30 00 ¶1.07 B and ¶3.012 A (Owner testing/inspection). || [Merge] Exceptions: #201."
L-0387,PROPOSED-Generator-on-S2.4,"Generator shown on the generator slab — ""per civil, attachment by others""",Electrical,Structural & Building,Generator Pad,Not stated,S2.4,Not linked (PROPOSED tag is not printed; no boxed anchor matched),CWP 26,"Electrical, Instrumentation & Controls",1 or 6 — Unresolved (see 04),None found,None found,None found,None found (no MTO line: no tied callout and no tag found on a cited sheet),None found (no spec section cited in rev0),S2.4 (sheet),1,SUB S2.4-01 (sheet),tag 0; spec 0; sheet 1,Not stated,0,None found,tag 0; spec 0; sheet 0,Not stated,None found (Add. 4 checked; Addenda 1-3 not staged),None found,1,OI-0325 (tag),#65 (tag); #236 (tag); #257 (tag),"26-C07 Electrical, Instrumentation & Controls — Permanent standby generator",2024-03-01,2024-04-30,2023-03-14,Not started (baseline: no progress entered),Unresolved,plans_8 p.4 (S2.4 Detail 4),"Cross-lane: Electrical & Controls (26 32 13; E10.3 by title — Inferred). Permanent-generator bid item already flagged (04 Other bid-item conflicts #1, candidate). If this is the temporary back-up generator, Bid Item 18 applies — 18 — Unresolved (see 04). S2.4 does not say which. || [Merge] Exceptions: #65, #236, #257."
L-0388,PROPOSED-Flow-Splitter-Pad,"Concrete equipment pad for the flow splitter, on the existing equipment slab-on-grade",Structural,Structural & Building,Flow Splitter,New,S2.4,Not linked (PROPOSED tag is not printed; no boxed anchor matched),CWP 03,Concrete (Cast-in-Place & Precast),1 (Inferred per 04),None found,None found,None found,None found (no MTO line: no tied callout and no tag found on a cited sheet),03 30 00,03 30 00 (tag); S2.4 (sheet),3,SUB 03 30 00-01 (spec); SUB 03 30 00-02 (spec); SUB S2.4-01 (sheet),tag 0; spec 2; sheet 1,Y,1,ITP 03 30 00-01 (spec),tag 0; spec 1; sheet 0,Y,None found (Add. 4 checked; Addenda 1-3 not staged),None found,4,OI-0240 (spec); OI-0241 (spec); OI-0451 (spec); OI-0456 (spec),#76 (tag); #157 (tag),03-C04 Concrete (Cast-in-Place & Precast) — Influent pump station and flow splitter,2023-06-01,2023-10-25,2023-03-31,Not started (baseline: no progress entered),Inferred,plans_8 p.4 (S2.4 Detail 5),"#4 @ 12 in each way top and bottom; #4 hooked dowels @ 24 in around perimeter, drilled and epoxied; roughened joint; pad per mech and civil. Existing slab: overall thickness to field verify. Submittals 03 30 00 ¶1.06 (shop drawings, mix design, joint plan); testing 03 30 00 ¶1.07 B and ¶3.012 A (Owner testing/inspection). || [Merge] Exceptions: #76, #157."
L-0389,PROPOSED-Flow-Splitter,"Flow splitter — per civil, attachment by others",Process-Mechanical,Structural & Building,Flow Splitter,Not stated,S2.4,Not linked (PROPOSED tag is not printed; no boxed anchor matched),CWP 46,Treatment Equipment,1 (Inferred per 04),None found,None found,None found,None found (no MTO line: no tied callout and no tag found on a cited sheet),None found (no spec section cited in rev0),G0.5 (tag); S2.4 (sheet),1,SUB S2.4-01 (sheet),tag 0; spec 0; sheet 1,Not stated,0,None found,tag 0; spec 0; sheet 0,Not stated,None found (Add. 4 checked; Addenda 1-3 not staged),None found,1,OI-0210 (tag),#75 (tag); #103 (tag); #237 (tag),46-C02 Treatment Equipment — Influent pump station and flow splitter,2023-06-01,2023-10-25,2023-03-31,Not started (baseline: no progress entered),Inferred,plans_8 p.4 (S2.4 Detail 5),"Cross-lane: Process & Mechanical (C3.1/C3.2 Influent Flow Splitter per 01 — Inferred by title). || [Merge] Exceptions: #75, #103, #237."
L-0390,PROPOSED-Existing-Slab-Trench-Infill,Trench cut and concrete infill in existing slab for sub-floor sludge piping (Detail 8),Structural,Structural & Building,Not stated (existing building per C1.6A),New,S4.1,Not linked (PROPOSED tag is not printed; no boxed anchor matched),CWP 03,Concrete (Cast-in-Place & Precast),1 (Inferred per 04),None found,None found,None found,None found (no MTO line: no tied callout and no tag found on a cited sheet),03 30 00,03 30 00 (spec); S4.1 (sheet),3,SUB 03 30 00-01 (spec); SUB 03 30 00-02 (spec); SUB S4.1-01 (sheet),tag 0; spec 2; sheet 1,Y,1,ITP 03 30 00-01 (spec),tag 0; spec 1; sheet 0,Y,"Add. 4 p.3 (C1.6A item cites S4.1 Detail 8); p.10 (S4.1 reissue, new Detail 8) — Add. 4 governs",None found,5,OI-0240 (spec); OI-0241 (spec); OI-0451 (spec); OI-0456 (spec); OI-0006 (sheet),#78 (tag); #238 (tag),03-C05 Concrete (Cast-in-Place & Precast) — Sludge pumps and valving,2023-04-01,2023-11-01,2023-03-31,Not started (baseline: no progress entered),Inferred,Add. 4 p.10 (S4.1 Detail 8); Add. 4 p.3,"Saw-cut 24 in max.; pipe encased in CDF 1,000 psi min.; infill to match existing slab; #4 dowels @ 18 in alternating, 4 in min. embed, epoxy. Cross-lane: Civil & Site (C1.6A defines locations; 03 map: C1.6A primary Civil & Site). Submittals 03 30 00 ¶1.06 (shop drawings, mix design, joint plan); testing 03 30 00 ¶1.07 B and ¶3.012 A (Owner testing/inspection). || [Merge] Exceptions: #78, #238."
L-0391,PROPOSED-2W-Pump-Station-Precast-Wet-Well,"Precast wet well, 8 ft ID (Oldcastle Infrastructure 96 in diameter), with 48 in x 30 in H-20 aluminum hatch and safety grate (LW Products HD-3C) — 2W Plant Water Pump Station",Structural,Structural & Building,2W Pump Station,New,None found (no sheet cited in rev0),Not linked (PROPOSED tag is not printed; no boxed anchor matched),CWP 03,Concrete (Cast-in-Place & Precast),1 (Inferred per 04),None found,None found,None found,None found (no MTO line: no tied callout and no tag found on a cited sheet),03 40 00,03 40 00 (spec),1,SUB 03 40 00-01 (spec),tag 0; spec 1; sheet 0,Y,1,ITP 03 40 00-01 (spec),tag 0; spec 1; sheet 0,N,"Add. 4 p.1, Clarification 2 (exterior of all precast joints sealed with CANUSA-CPS WrapidSeal or approved equal) — Add. 4 governs",None found,3,OI-0474 (tag); OI-0241 (spec); OI-0445 (spec),#47 (tag); #240 (tag),03-C01 Concrete (Cast-in-Place & Precast) — 2W air gap water system,2023-05-01,2023-10-18,2023-03-31,Not started (baseline: no progress entered),Inferred,main spec p.183 (03 40 00 ¶2.02 E.2); p.182 (¶1.06); Add. 4 p.1,"Cross-lane: Process & Mechanical (C4.2, P&M lane per 01). 5,000 psi, A615 Gr 60, ASTM C857; WA-engineer-sealed shop drawings and calcs (03 40 00 ¶1.06 A); no testing stated (¶1.07). Drawing sheet not in this stack. || [Merge] Exceptions: #47, #240."
L-0392,PROPOSED-Influent-Pump-Station-Precast-Wet-Well,"Precast wet well, 8 ft ID (Oldcastle Infrastructure 96 in diameter), with 48 in x 30 in H-20 aluminum hatch and safety grate (LW Products HD-3C) — Influent Pump Station",Structural,Structural & Building,Influent Pump Station,New,None found (no sheet cited in rev0),Not linked (PROPOSED tag is not printed; no boxed anchor matched),CWP 03,Concrete (Cast-in-Place & Precast),1 (Inferred per 04),None found,None found,None found,None found (no MTO line: no tied callout and no tag found on a cited sheet),03 40 00,03 40 00 (spec),1,SUB 03 40 00-01 (spec),tag 0; spec 1; sheet 0,Y,1,ITP 03 40 00-01 (spec),tag 0; spec 1; sheet 0,N,"Add. 4 p.1, Clarification 2 (exterior of all precast joints sealed with CANUSA-CPS WrapidSeal or approved equal) — Add. 4 governs",None found,3,OI-0474 (tag); OI-0241 (spec); OI-0445 (spec),#37 (tag); #38 (tag); #240 (tag),03-C04 Concrete (Cast-in-Place & Precast) — Influent pump station and flow splitter,2023-06-01,2023-10-25,2023-03-31,Not started (baseline: no progress entered),Unresolved,main spec p.183 (03 40 00 ¶2.02 E.2); p.182; Add. 4 p.1,"Cross-lane: Process & Mechanical (C4.1). Hatch conflicts with ¶2.02 D.1 (Issues, Conflicts). 5,000 psi, A615 Gr 60, ASTM C857; WA-engineer-sealed shop drawings and calcs (03 40 00 ¶1.06 A); no testing stated (¶1.07). Drawing sheet not in this stack. || [Merge] Exceptions: #37, #38, #240."
L-0393,PROPOSED-Influent-Pump-Station-Top-Slab,"Influent Pump Station top slab per Contract Plan details, with new aluminum access hatch and safety grates",Structural,Structural & Building,Influent Pump Station,New,None found (no sheet cited in rev0),Not linked (PROPOSED tag is not printed; no boxed anchor matched),CWP 03,Concrete (Cast-in-Place & Precast),1 (Inferred per 04),None found,None found,None found,None found (no MTO line: no tied callout and no tag found on a cited sheet),03 40 00,03 40 00 (spec),1,SUB 03 40 00-01 (spec),tag 0; spec 1; sheet 0,Y,1,ITP 03 40 00-01 (spec),tag 0; spec 1; sheet 0,N,"Add. 4 p.1, Clarification 2 (exterior of all precast joints sealed with CANUSA-CPS WrapidSeal or approved equal) — Add. 4 governs",None found,4,OI-0453 (tag); OI-0474 (tag); OI-0241 (spec); OI-0445 (spec),#38 (tag); #240 (tag),03-C04 Concrete (Cast-in-Place & Precast) — Influent pump station and flow splitter,2023-06-01,2023-10-25,2023-03-31,Not started (baseline: no progress entered),Unresolved,"main spec p.183 (03 40 00 ¶2.02 D.1, E.2); Add. 4 p.1","Hatch: 3 ft-0 in x 5 ft-0 in light-duty Flygt FLED-13 or equal (¶2.02 D.1) vs 48 in x 30 in H-20 LW Products HD-3C (¶2.02 E.2) — Issues, Conflicts. Cross-lane: Process & Mechanical (C4.1). The ""details on the Contract Plans"" are not identified; see Issues, Missing #4. || [Merge] Exceptions: #38, #240."
L-0394,PROPOSED-Influent-Flow-Meter-Valve-Vault,"Precast vault, 4 ft x 4 ft (Oldcastle Infrastructure 4686-LA), with 36 in x 36 in H-20 single-leaf hatch (Halliday H1R3636) — Influent Flow Meter Valve Vault",Structural,Structural & Building,Site,New,None found (no sheet cited in rev0),Not linked (PROPOSED tag is not printed; no boxed anchor matched),CWP 03,Concrete (Cast-in-Place & Precast),1 (Inferred per 04),None found,None found,None found,None found (no MTO line: no tied callout and no tag found on a cited sheet),03 40 00,03 40 00 (tag),1,SUB 03 40 00-01 (spec),tag 0; spec 1; sheet 0,Y,1,ITP 03 40 00-01 (spec),tag 0; spec 1; sheet 0,N,"Add. 4 p.1, Clarification 2 (exterior of all precast joints sealed with CANUSA-CPS WrapidSeal or approved equal) — Add. 4 governs",None found,3,OI-0474 (tag); OI-0241 (spec); OI-0445 (spec),#44 (tag); #240 (tag),"03-C08 Concrete (Cast-in-Place & Precast) — Yard piping, vaults and site utilities",2023-04-01,2023-11-01,2023-03-31,Not started (baseline: no progress entered),Inferred,main spec p.183 (03 40 00 ¶2.02 E.2); Add. 4 p.1,"Cross-lane: Civil & Site (C7.4 Civil Details per 01). 5,000 psi, A615 Gr 60, ASTM C857; WA-engineer-sealed shop drawings and calcs (03 40 00 ¶1.06 A); no testing stated (¶1.07). Drawing sheet not in this stack. || [Merge] Exceptions: #44, #240."
L-0395,PROPOSED-Effluent-Flow-Meter-Valve-Vault,"Precast vault, 4 ft x 4 ft (Oldcastle Infrastructure 4686-LA), with 36 in x 36 in H-20 single-leaf hatch (Halliday H1R3636) — Effluent Flow Meter Valve Vault",Structural,Structural & Building,Site,New,None found (no sheet cited in rev0),Not linked (PROPOSED tag is not printed; no boxed anchor matched),CWP 03,Concrete (Cast-in-Place & Precast),1 (Inferred per 04),None found,None found,None found,None found (no MTO line: no tied callout and no tag found on a cited sheet),03 40 00,03 40 00 (tag),1,SUB 03 40 00-01 (spec),tag 0; spec 1; sheet 0,Y,1,ITP 03 40 00-01 (spec),tag 0; spec 1; sheet 0,N,"Add. 4 p.1, Clarification 2 (exterior of all precast joints sealed with CANUSA-CPS WrapidSeal or approved equal) — Add. 4 governs",None found,3,OI-0474 (tag); OI-0241 (spec); OI-0445 (spec),#240 (tag),"03-C08 Concrete (Cast-in-Place & Precast) — Yard piping, vaults and site utilities",2023-04-01,2023-11-01,2023-03-31,Not started (baseline: no progress entered),Inferred,main spec p.183 (03 40 00 ¶2.02 E.2); Add. 4 p.1,"Cross-lane: Civil & Site (C7.4). 5,000 psi, A615 Gr 60, ASTM C857; WA-engineer-sealed shop drawings and calcs (03 40 00 ¶1.06 A); no testing stated (¶1.07). Drawing sheet not in this stack. || [Merge] Exceptions: #240."
L-0396,PROPOSED-Plants-2-and-3-Flow-Meter-Vault,"Precast vault, 4 ft x 4 ft (Oldcastle Infrastructure 4686-LA), with 36 in x 36 in H-20 single-leaf hatch (Halliday H1R3636) — Plants 2 & 3 Flow Meter Vault",Structural,Structural & Building,Site,New,None found (no sheet cited in rev0),Not linked (PROPOSED tag is not printed; no boxed anchor matched),CWP 03,Concrete (Cast-in-Place & Precast),1 (Inferred per 04),None found,None found,None found,None found (no MTO line: no tied callout and no tag found on a cited sheet),03 40 00,03 40 00 (spec),1,SUB 03 40 00-01 (spec),tag 0; spec 1; sheet 0,Y,1,ITP 03 40 00-01 (spec),tag 0; spec 1; sheet 0,N,"Add. 4 p.1, Clarification 2 (exterior of all precast joints sealed with CANUSA-CPS WrapidSeal or approved equal) — Add. 4 governs",None found,3,OI-0474 (tag); OI-0241 (spec); OI-0445 (spec),#5 (tag); #6 (tag); #240 (tag),"03-C08 Concrete (Cast-in-Place & Precast) — Yard piping, vaults and site utilities",2023-04-01,2023-11-01,2023-03-31,Not started (baseline: no progress entered),Inferred,main spec p.183 (03 40 00 ¶2.02 E.2); Add. 4 p.1,"Cross-lane: Civil & Site (C7.4). 5,000 psi, A615 Gr 60, ASTM C857; WA-engineer-sealed shop drawings and calcs (03 40 00 ¶1.06 A); no testing stated (¶1.07). Drawing sheet not in this stack. || [Merge] Exceptions: #5, #6, #240."
L-0397,PROPOSED-Influent-Pump-Station-Meter-Vaults,"Precast vaults, 4 ft x 4 ft (Oldcastle Infrastructure 4686-LA), with 36 in x 36 in H-20 single-leaf hatches (Halliday H1R3636) — Influent Pump Station Meter Vaults, quantity not stated",Structural,Structural & Building,Influent Pump Station,New,None found (no sheet cited in rev0),Not linked (PROPOSED tag is not printed; no boxed anchor matched),CWP 03,Concrete (Cast-in-Place & Precast),1 (Inferred per 04),None found,None found,None found,None found (no MTO line: no tied callout and no tag found on a cited sheet),03 40 00,03 40 00 (tag),1,SUB 03 40 00-01 (spec),tag 0; spec 1; sheet 0,Y,1,ITP 03 40 00-01 (spec),tag 0; spec 1; sheet 0,N,"Add. 4 p.1, Clarification 2 (exterior of all precast joints sealed with CANUSA-CPS WrapidSeal or approved equal) — Add. 4 governs",None found,3,OI-0474 (tag); OI-0241 (spec); OI-0445 (spec),#41 (tag); #240 (tag),03-C04 Concrete (Cast-in-Place & Precast) — Influent pump station and flow splitter,2023-06-01,2023-10-25,2023-03-31,Not started (baseline: no progress entered),Inferred,main spec p.183 (03 40 00 ¶2.02 E.2); Add. 4 p.1,"Cross-lane: Process & Mechanical (C4.1). Quantity not stated (""vaults""). 5,000 psi, A615 Gr 60, ASTM C857; WA-engineer-sealed shop drawings and calcs (03 40 00 ¶1.06 A); no testing stated (¶1.07). Drawing sheet not in this stack. || [Merge] Exceptions: #41, #240."
L-0398,PROPOSED-Steel-Stairs-Ladders-Platforms,"Steel stairs, ladders and grating platforms — galvanized, Contractor-designed, where shown on the plans",Structural,Structural & Building,Not stated (locations per civil drawings),New,S1.1,Not linked (PROPOSED tag is not printed; no boxed anchor matched),CWP 05,"Metals (Grating, Railings, Ladders, Stairs)",1 (Inferred per 04); any Train 3 portion: 18 — Unresolved (see 04),None found,None found,None found,None found (no MTO line: no tied callout and no tag found on a cited sheet),05 51 10; 05 53 00; 05 52 00,05 51 10 (spec); 05 53 00 (spec); 05 52 00 (spec); S1.1 (sheet),5,SUB 05 51 10-01 (spec); SUB 05 51 10-02 (spec); SUB 05 52 00-01 (spec); SUB 05 53 00-01 (spec); SUB S1.1-01 (sheet),tag 0; spec 4; sheet 1,Y,1,ITP S1.1-01 (sheet),tag 0; spec 0; sheet 1,N,None found (Add. 4 checked; Addenda 1-3 not staged),None found,4,OI-0002 (tag); OI-0465 (tag); OI-0446 (spec); OI-0447 (spec),#241 (tag); #255 (tag),"05-C01 Metals (Grating, Railings, Ladders, Stairs) — Train 3",2023-08-01,2024-07-08,2023-03-31,Not started (baseline: no progress entered),Unresolved,"main spec pp.200-202 (05 51 10 ¶1.01, ¶1.03, ¶2.04); plans_7 p.8 (S1.1 Submittals 5)","Deferred submittal sealed by WA PE (S1.1); location-specific PE-sealed calcs and shop drawings (05 51 10 ¶1.03). Defaults unless shown: 7 in riser, 11 in tread, stair width 4 ft-0 in min, ladder width 3 ft-0 in min. No locations on S/A sheets. Cross-lane: Process & Mechanical / Civil & Site (locations on civil drawings). || [Merge] Exceptions: #241, #255."
L-0399,PROPOSED-Boot-Brush-and-Pad,Boot and shoe brush with scraper (Gempler's #2900) on a concrete pad next to the Blower Building exterior door,Architectural,Structural & Building,Blower Building,New,None found (no sheet cited in rev0),Not linked (PROPOSED tag is not printed; no boxed anchor matched),CWP 08,"Doors, Frames & Hardware",1 (Inferred per 04),None found,None found,None found,None found (no MTO line: no tied callout and no tag found on a cited sheet),08 70 00,08 70 00 (spec),1,SUB 08 70 00-01 (spec),tag 0; spec 1; sheet 0,Y,1,ITP 08 70 00-00 (spec),tag 0; spec 1; sheet 0,N,None found (Add. 4 checked; Addenda 1-3 not staged),None found,2,OI-0236 (tag); OI-0474 (tag),#129 (tag),"08-C01 Doors, Frames & Hardware — Blower Building",2023-04-01,2023-07-31,2023-03-31,Not started (baseline: no progress entered),Inferred,main spec p.220 (08 70 00 ¶2.08 A),Location coordinated with Owner; not shown on A1.1. Pad concrete by subject 03 30 00 (Inferred). Submittal: manufacturer's data with the hardware schedule (08 70 00 ¶1.03 A). || [Merge] Exceptions: #129.
L-0400,PROPOSED-Influent-Pump-Station-Interior-Coating,"Epoxy protective lining, spray-applied 100% solids (Raven 405 or Tnemec G436), on all interior concrete surfaces — Influent Pump Station",Architectural,Structural & Building,Influent Pump Station,New,None found (no sheet cited in rev0),Not linked (PROPOSED tag is not printed; no boxed anchor matched),CWP 09,Painting & Coatings,1 (Inferred per 04),None found,None found,None found,None found (no MTO line: no tied callout and no tag found on a cited sheet),09 97 23,09 97 23 (spec),2,SUB 09 97 23-01 (spec); SUB 09 97 23-02 (spec),tag 0; spec 2; sheet 0,Y,1,ITP 09 97 23-01 (spec),tag 0; spec 1; sheet 0,Y,None found (Add. 4 checked; Addenda 1-3 not staged),None found,2,OI-0237 (tag); OI-0474 (tag),#130 (tag); #243 (tag),09-C01 Painting & Coatings — Influent pump station and flow splitter,2023-06-01,2023-10-25,2023-05-31,Not started (baseline: no progress entered),Inferred,"main spec pp.236-241 (09 97 23 ¶1.01 B.1, ¶1.02, ¶2.04, ¶3.05 D, ¶3.06)","Cross-lane: Process & Mechanical (C4.1; locations ""see drawings""). Testing: wet film (ASTM D4414), holiday test at 100 V/mil, pull-off adhesion (ASTM D7234, 2 of 3 over 200 psi). Concrete cured 28 days min. before coating. || [Merge] Exceptions: #130, #243."
L-0401,PROPOSED-Bollards,Bollards,Civil,Contract & General,Site,New,None found (no sheet cited in rev0),Not linked (PROPOSED tag is not printed; no boxed anchor matched),CWP 32,"Paving, Fencing, Walls & Landscaping",3,None found,None found,None found,None found (no MTO line: no tied callout and no tag found on a cited sheet),00 24 13; 00 41 00,00 24 13 (tag); 00 41 00 (tag),0,None found,tag 0; spec 0; sheet 0,N,0,None found,tag 0; spec 0; sheet 0,N,None found (Add. 4 checked; Addenda 1-3 not staged),None found,15,OI-0238 (tag); OI-0474 (tag); OI-0239 (spec); OI-0240 (spec); OI-0241 (spec); OI-0242 (spec); OI-0243 (spec); OI-0244 (spec); OI-0245 (spec); OI-0246 (spec); OI-0247 (spec); OI-0248 (spec); OI-0323 (spec); OI-0354 (spec); OI-0451 (spec),#131 (tag); #250 (tag),"32-C02 Paving, Fencing, Walls & Landscaping — Site finish work (fencing, walls, landscaping, bollards)",2024-08-01,2024-09-30,2023-03-14,Not started (baseline: no progress entered),Inferred,main spec 00 24 13 ¶3 p.16; 00 41 00 p.23,"12 EA approx. qty (00 41 00 p.23, Verified); locations chosen by the Owner; paid per finished bollard (00 24 13 ¶3.A–B p.16, Verified). Discipline Inferred (site item). Cross-lane: Civil & Site || [Merge] Exceptions: #131, #250."
L-0402,PROPOSED-Trench-Safety-System,Trench safety system,Civil,Contract & General,Site,Temporary,None found (no sheet cited in rev0),Not linked (PROPOSED tag is not printed; no boxed anchor matched),CWP 31,"Earthwork, Dewatering & Erosion Control",2,None found,None found,None found,None found (no MTO line: no tied callout and no tag found on a cited sheet),00 24 13; 00 41 00,00 24 13 (tag); 00 41 00 (spec),0,None found,tag 0; spec 0; sheet 0,N,0,None found,tag 0; spec 0; sheet 0,N,None found (Add. 4 checked; Addenda 1-3 not staged),None found,14,OI-0474 (tag); OI-0239 (spec); OI-0240 (spec); OI-0241 (spec); OI-0242 (spec); OI-0243 (spec); OI-0244 (spec); OI-0245 (spec); OI-0246 (spec); OI-0247 (spec); OI-0248 (spec); OI-0323 (spec); OI-0354 (spec); OI-0451 (spec),#70 (tag); #250 (tag),"31-C02 Earthwork, Dewatering & Erosion Control — Temporary facilities and controls",2023-03-15,2024-10-16,2023-03-14,Not started (baseline: no progress entered),Unresolved,main spec 00 24 13 ¶2 p.16; 00 41 00 p.23,"Installed per WSDOT, OSHA and other rules — WSDOT part Unresolved: external reference, not staged. Status Temporary is Inferred (protects open excavations; not stated). Bid form title 'Trench Safety Excavation Provisions' vs scope title 'Trench Safety System' — wording already logged in 04 (cited). Cross-lane: Civil & Site || [Merge] Exceptions: #70, #250."
L-0403,PROPOSED-Erosion-and-Sediment-Control-Measures,Erosion and sediment control measures (SWPPP),Civil,Contract & General,Site,Temporary,"TESC plans (civil sheets, not numbered in source)",Not linked (PROPOSED tag is not printed; no boxed anchor matched),CWP 31,"Earthwork, Dewatering & Erosion Control",5,None found,None found,None found,None found (no MTO line: no tied callout and no tag found on a cited sheet),00 24 13; 00 41 00; 01 50 00,00 24 13 (tag); 00 41 00 (spec); 01 50 00 (spec),1,SUB 01 50 00-00 (spec),tag 0; spec 1; sheet 0,N,1,ITP 01 50 00-01 (spec),tag 0; spec 1; sheet 0,N,None found (Add. 4 checked; Addenda 1-3 not staged),None found,15,OI-0474 (tag); OI-0239 (spec); OI-0240 (spec); OI-0241 (spec); OI-0242 (spec); OI-0243 (spec); OI-0244 (spec); OI-0245 (spec); OI-0246 (spec); OI-0247 (spec); OI-0248 (spec); OI-0323 (spec); OI-0327 (spec); OI-0354 (spec); OI-0451 (spec),#71 (tag); #250 (tag),"31-C02 Earthwork, Dewatering & Erosion Control — Temporary facilities and controls",2023-03-15,2024-10-16,2023-03-14,Not started (baseline: no progress entered),Inferred,main spec 00 24 13 ¶4–5 p.17; 00 41 00 p.23; 01 50 00 ¶1.05.D p.145,"Named in ¶5 (Verified): quarry spall construction entrance, track clean plates, siltation ponds, silt fencing, straw, other sediment trapping devices, slope stabilization; maintained for the life of the project. SWPPP prep (Item 4) per 31 32 11, TESC plans and NPDES permit. Status Temporary Inferred from 'life of the project'. Split into components at Merge. 01 50 00 ¶1.05.D: per the Contract Plans and 31 32 11 (Verified). Cross-lane: Civil & Site || [Merge] Exceptions: #71, #250."
L-0404,PROPOSED-Temporary-Bypass-Pipe,Temporary bypass pipe (chlorine contact tank outlet to 8-inch plant outlet),Civil,Contract & General,Site,Temporary,None found (no sheet cited in rev0),Not linked (PROPOSED tag is not printed; no boxed anchor matched),CWP 01,General Requirements & Temporary Works,1,None found,None found,None found,None found (no MTO line: no tied callout and no tag found on a cited sheet),00 31 13,00 31 13 (tag),0,None found,tag 0; spec 0; sheet 0,N,0,None found,tag 0; spec 0; sheet 0,N,None found (Add. 4 checked; Addenda 1-3 not staged),None found,2,OI-0474 (tag); OI-0470 (spec),#68 (tag); #250 (tag),01-C01 General Requirements & Temporary Works — Temporary bypass and interim effluent piping,2023-04-01,2023-10-11,2023-03-14,Not started (baseline: no progress entered),Inferred,main spec 00 31 13 Construction Phasing Plan ¶A.5 p.21,"Set up April 2023 per the Plan of Interim Operation, from the existing chlorine contact tank outlet to the existing 8-inch plant outlet pipe (Verified). Source does not say whether that plan is Appendix F or sheet C0.7 (C0.7 Assigned — unavailable per 01). Bid Item 1 Inferred (04: Item 1 = work not itemized elsewhere). Cross-lane: Civil & Site || [Merge] Exceptions: #68, #250."
L-0405,PROPOSED-Temporary-8in-Effluent-Piping,Temporary 8-inch effluent piping,Civil,Contract & General,Site,Temporary,None found (no sheet cited in rev0),Not linked (PROPOSED tag is not printed; no boxed anchor matched),CWP 33,Yard Piping & Utilities,1,None found,None found,None found,None found (no MTO line: no tied callout and no tag found on a cited sheet),00 31 13,00 31 13 (spec),0,None found,tag 0; spec 0; sheet 0,N,0,None found,tag 0; spec 0; sheet 0,N,None found (Add. 4 checked; Addenda 1-3 not staged),None found,2,OI-0474 (tag); OI-0470 (spec),#74 (tag); #250 (tag),33-C02 Yard Piping & Utilities — Temporary bypass and interim effluent piping,2023-04-01,2023-10-11,2023-03-31,Not started (baseline: no progress entered),Inferred,main spec 00 31 13 ¶A.14 p.22,"Switched over to the new 8-inch effluent piping when UV goes on line Oct 11, 2023 (Verified). Whether this is the same run as the temporary bypass pipe (¶A.5) is not stated. Bid Item 1 Inferred. Cross-lane: Civil & Site || [Merge] Exceptions: #74, #250."
L-0406,PROPOSED-8in-Effluent-Piping,8-inch effluent piping (new),Civil,Contract & General,Site,New,None found (no sheet cited in rev0),Not linked (PROPOSED tag is not printed; no boxed anchor matched),CWP 33,Yard Piping & Utilities,1,None found,None found,None found,None found (no MTO line: no tied callout and no tag found on a cited sheet),00 31 13; 01 45 00,00 31 13 (spec); 01 45 00 (spec),1,SUB 01 45 00-00 (spec),tag 0; spec 1; sheet 0,N,3,ITP 01 45 00-01 (spec); ITP 01 45 00-02 (spec); ITP 01 45 00-03 (spec),tag 0; spec 3; sheet 0,Y,None found (Add. 4 checked; Addenda 1-3 not staged),None found,4,OI-0212 (tag); OI-0474 (tag); OI-0323 (spec); OI-0470 (spec),#105 (tag); #250 (tag),"33-C06 Yard Piping & Utilities — Yard piping, vaults and site utilities",2023-04-01,2023-11-01,2023-03-31,Not started (baseline: no progress entered),Inferred,main spec 00 31 13 ¶A.14 p.22; 01 45 00 ¶1.05.B.1.a p.137,"Placed in service at the UV switch-over, Oct 11, 2023 (Verified). Bid Item 1 Inferred. Testing Y: Contractor-paid pipe pressure testing 'per specs' (01 45 00, Verified); which lines and test values are set outside this lane's stack (Inferred). Cross-lane: Civil & Site || [Merge] Exceptions: #105, #250."
L-0407,PROPOSED-8in-Effluent-Flow-Meter,8-inch effluent flow meter,Controls,Contract & General,Not stated,New,None found (no sheet cited in rev0),Not linked (PROPOSED tag is not printed; no boxed anchor matched),CWP 26,"Electrical, Instrumentation & Controls",Not stated,None found,None found,None found,None found (no MTO line: no tied callout and no tag found on a cited sheet),00 31 13; 01 33 00; 01 70 00,00 31 13 (spec); 01 33 00 (spec); 01 70 00 (spec),9,SUB 01 33 00-01 (spec); SUB 01 33 00-02 (spec); SUB 01 33 00-03 (spec); SUB 01 33 00-04 (spec); SUB 01 33 00-05 (spec); SUB 01 70 00-01 (spec); SUB 01 70 00-02 (spec); SUB 01 70 00-03 (spec); SUB 01 70 00-04 (spec),tag 0; spec 9; sheet 0,Y,3,ITP 01 33 00-01 (spec); ITP 01 70 00-01 (spec); ITP 01 70 00-02 (spec),tag 0; spec 3; sheet 0,Y,None found (Add. 4 checked; Addenda 1-3 not staged),None found,3,OI-0474 (tag); OI-0323 (spec); OI-0470 (spec),#10 (tag); #253 (tag),"26-C10 Electrical, Instrumentation & Controls — 480V service, MCC and PLC panel",2023-04-01,2023-10-04,2023-03-14,Not started (baseline: no progress entered),Inferred,"main spec 00 31 13 ¶A.14 p.22; 01 33 00 ¶1.05.G pp.131–132; 01 70 00 ¶1.03.A.6 p.152, ¶1.06 p.155","New meter placed in service at the UV switch-over, Oct 11, 2023 (Verified). Item 1 or 6 depends on which section specifies it (not in my stack). Discipline Inferred (instrument). Meter type not stated; may be one of the magnetic flow meters commissioned under 01 91 00 ¶1.11 (Inferred) — see PROPOSED-Magnetic-Flow-Meters. Submittal Y: O&M manual and a testing/start-up procedure due 14 days before start-up (01 33 00 ¶1.05.G; 01 70 00 ¶1.03.A.6, ¶1.06.B — Verified). Testing Y: tested before any facility goes into operation, Engineer present, manufacturer's installation letter (01 70 00 ¶1.06 — Verified). Counting this item as mechanical/electrical/instrumentation equipment is Inferred. Cross-lane: Electrical & Controls; Civil & Site (vault) || [Merge] Exceptions: #10, #253."
L-0408,PROPOSED-Aerobic-Digester,Aerobic digester,Process-Mechanical,Contract & General,UV Disinfection Chamber & Digester,New,None found (no sheet cited in rev0),Not linked (PROPOSED tag is not printed; no boxed anchor matched),CWP 03,Concrete (Cast-in-Place & Precast),1,None found,None found,None found,None found (no MTO line: no tied callout and no tag found on a cited sheet),00 24 13; 00 31 13; 00 73 00; 01 45 00; 01 50 00,00 31 13 (tag); G0.5 (tag); G0.6 (tag); 00 24 13 (spec); 00 73 00 (spec); 01 45 00 (spec); 01 50 00 (spec); CQA Plan (spec),3,SUB 00 73 00-01 (spec); SUB 01 45 00-00 (spec); SUB 01 50 00-00 (spec),tag 0; spec 3; sheet 0,N,6,ITP 00 73 00-01 (spec); ITP 00 73 00-02 (spec); ITP 01 45 00-01 (spec); ITP 01 45 00-02 (spec); ITP 01 45 00-03 (spec); ITP 01 50 00-01 (spec),tag 0; spec 6; sheet 0,Y,None found (Add. 4 checked; Addenda 1-3 not staged),OI-0361 (spec); OI-0386 (spec),19,OI-0474 (tag); OI-0239 (spec); OI-0240 (spec); OI-0241 (spec); OI-0242 (spec); OI-0243 (spec); OI-0244 (spec); OI-0245 (spec); OI-0246 (spec); OI-0247 (spec); OI-0248 (spec); OI-0323 (spec); OI-0327 (spec); OI-0350 (spec); OI-0354 (spec); OI-0389 (spec); OI-0434 (spec); OI-0451 (spec); OI-0470 (spec),#56 (tag); #251 (tag); #252 (tag),03-C07 Concrete (Cast-in-Place & Precast) — UV chamber and digester,2023-04-01,2023-11-01,2023-03-31,Not started (baseline: no progress entered),Inferred,"main spec 00 31 13 ¶A.6 p.21, ¶A.19 p.22; 00 24 13 ¶9 p.18; 00 73 00 SC 19 p.92; 01 45 00 ¶1.09 pp.139–140; 01 50 00 ¶1.04.C p.143; QA plan §2.0 p.6","Start April 2023; new aerobic digester complete Nov 1, 2023 (Verified). 00 24 13 ¶9 prices extra structural concrete 'similar to the digester basin walls'. Area from sheet titles (Inferred). SC 19 lists a 'digester' in Substantial Completion (Verified); read as this new aerobic digester (Inferred — only digester named in my stack). Both lists say 'Digester' — mapping to this row Inferred. Testing Y: clean water leakage test before startup — filled to the rim, held 2 hours, no visible leakage (01 45 00 ¶1.09; 01 50 00 ¶1.04.C — Verified). QA plan §2.0 lists a 'new aerated digester'; read as this aerobic digester (Inferred). The QA plan is not a Contract Document (§1.3 p.5). Cross-lane: Process & Mechanical; Structural & Building || [Merge] Exceptions: #56, #251, #252."
L-0409,PROPOSED-UV-Disinfection-Chamber,UV disinfection chamber (UV channels #1 and #2),Structural,Contract & General,UV Disinfection Chamber & Digester,New,None found (no sheet cited in rev0),Not linked (PROPOSED tag is not printed; no boxed anchor matched),CWP 03,Concrete (Cast-in-Place & Precast),1,None found,None found,None found,None found (no MTO line: no tied callout and no tag found on a cited sheet),00 31 13; 01 45 00; 01 50 00,00 31 13 (spec); 01 45 00 (spec); 01 50 00 (spec),2,SUB 01 45 00-00 (spec); SUB 01 50 00-00 (spec),tag 0; spec 2; sheet 0,N,4,ITP 01 45 00-01 (spec); ITP 01 45 00-02 (spec); ITP 01 45 00-03 (spec); ITP 01 50 00-01 (spec),tag 0; spec 4; sheet 0,Y,None found (Add. 4 checked; Addenda 1-3 not staged),None found,4,OI-0474 (tag); OI-0323 (spec); OI-0327 (spec); OI-0470 (spec),#56 (tag); #252 (tag),03-C07 Concrete (Cast-in-Place & Precast) — UV chamber and digester,2023-04-01,2023-11-01,2023-03-31,Not started (baseline: no progress entered),Inferred,main spec 00 31 13 ¶A.6 p.21; ¶A.14 p.22; 01 45 00 ¶1.09 pp.139–140; 01 50 00 ¶1.04.C p.143,"Start April 2023; UV channels #1 and #2 placed in service Oct 11, 2023 (Verified). Discipline and area Inferred. 01 45 00 says 'UV Disinfection Chamber', 01 50 00 'UV Disinfection Channel #1 and #2' (Verified). Testing Y: clean water leakage test before startup — filled to the rim, held 2 hours, no visible leakage (01 45 00 ¶1.09; 01 50 00 ¶1.04.C — Verified). Cross-lane: Structural & Building; Process & Mechanical || [Merge] Exceptions: #56, #252."
L-0410,PROPOSED-UV-Disinfection-System,UV disinfection system equipment,Process-Mechanical,Contract & General,UV Disinfection Chamber & Digester,New,None found (no sheet cited in rev0),Not linked (PROPOSED tag is not printed; no boxed anchor matched),CWP 46,Treatment Equipment,1; Equipment Alternate D,None found,None found,None found,None found (no MTO line: no tied callout and no tag found on a cited sheet),00 31 13; 00 41 00; 00 73 00; 01 33 00; 01 70 00; 01 91 00,00 31 13 (spec); 00 41 00 (spec); 00 73 00 (spec); 01 33 00 (spec); 01 70 00 (spec); 01 91 00 (spec); CQA Plan (spec),12,SUB 00 73 00-01 (spec); SUB 01 33 00-01 (spec); SUB 01 33 00-02 (spec); SUB 01 33 00-03 (spec); SUB 01 33 00-04 (spec); SUB 01 33 00-05 (spec); SUB 01 70 00-01 (spec); SUB 01 70 00-02 (spec); SUB 01 70 00-03 (spec); SUB 01 70 00-04 (spec); SUB 01 91 00-01 (spec); SUB 01 91 00-02 (spec),tag 0; spec 12; sheet 0,Y,6,ITP 00 73 00-01 (spec); ITP 00 73 00-02 (spec); ITP 01 33 00-01 (spec); ITP 01 70 00-01 (spec); ITP 01 70 00-02 (spec); ITP 01 91 00-01 (spec),tag 0; spec 6; sheet 0,Y,None found (Add. 4 checked; Addenda 1-3 not staged),OI-0361 (spec); OI-0386 (spec),17,OI-0474 (tag); OI-0239 (spec); OI-0240 (spec); OI-0241 (spec); OI-0242 (spec); OI-0243 (spec); OI-0244 (spec); OI-0245 (spec); OI-0246 (spec); OI-0247 (spec); OI-0248 (spec); OI-0323 (spec); OI-0350 (spec); OI-0354 (spec); OI-0389 (spec); OI-0434 (spec); OI-0470 (spec),#54 (tag); #251 (tag),46-C07 Treatment Equipment — UV chamber and digester,2023-04-01,2023-11-01,2023-03-31,Not started (baseline: no progress entered),Inferred,"main spec 00 41 00 p.26; 00 31 13 ¶A.13 p.21, ¶A.14 p.22; 00 73 00 SC 19 p.92; 01 33 00 ¶1.05.G pp.131–132; 01 70 00 ¶1.03.A.6 p.152, ¶1.06 p.155; 01 91 00 ¶1.05 p.158; QA plan §2.0 p.6","Base manufacturer Trojan; Base Bid Item 1 is based on it; Equipment Alternate D is a lump-sum deduction (Verified). Complete Oct 7, 2023; on line Oct 11, 2023 (Verified). Spec 46 66 00 link Inferred (04). Area Inferred. SC 19 lists the UV disinfection system in Substantial Completion (Verified). 01 91 00 ¶1.05: supplier at least 2 days; UV module amperage and intensity monitoring checked (Verified). Submittal Y: O&M manual and a testing/start-up procedure due 14 days before start-up (01 33 00 ¶1.05.G; 01 70 00 ¶1.03.A.6, ¶1.06.B — Verified). Testing Y: tested before any facility goes into operation, Engineer present, manufacturer's installation letter (01 70 00 ¶1.06 — Verified). Counting this item as mechanical/electrical/instrumentation equipment is Inferred. QA plan §2.0 lists a 'new ultraviolet disinfection system' (Verified). The QA plan is not a Contract Document (§1.3 p.5). Cross-lane: Process & Mechanical || [Merge] Exceptions: #54, #251."
L-0411,PROPOSED-Sludge-Pumps,Sludge pumps (peristaltic; WAS and digested sludge),Process-Mechanical,Contract & General,Sludge Pump and Valving Area,New,None found (no sheet cited in rev0),Not linked (PROPOSED tag is not printed; no boxed anchor matched),CWP 22,Plumbing & Process Pumps,1,None found,None found,None found,None found (no MTO line: no tied callout and no tag found on a cited sheet),00 31 13; 01 33 00; 01 70 00; 01 91 00; 01 45 00,00 31 13 (tag); 01 91 00 (tag); G0.6 (tag); QA plan (tag); 01 33 00 (spec); 01 70 00 (spec); 01 45 00 (spec); CQA Plan (spec),12,SUB 01 33 00-01 (spec); SUB 01 33 00-02 (spec); SUB 01 33 00-03 (spec); SUB 01 33 00-04 (spec); SUB 01 33 00-05 (spec); SUB 01 45 00-00 (spec); SUB 01 70 00-01 (spec); SUB 01 70 00-02 (spec); SUB 01 70 00-03 (spec); SUB 01 70 00-04 (spec); SUB 01 91 00-01 (spec); SUB 01 91 00-02 (spec),tag 0; spec 12; sheet 0,Y,7,ITP 01 33 00-01 (spec); ITP 01 45 00-01 (spec); ITP 01 45 00-02 (spec); ITP 01 45 00-03 (spec); ITP 01 70 00-01 (spec); ITP 01 70 00-02 (spec); ITP 01 91 00-01 (spec),tag 0; spec 7; sheet 0,Y,None found (Add. 4 checked; Addenda 1-3 not staged),None found,3,OI-0474 (tag); OI-0323 (spec); OI-0470 (spec),#59 (tag); #251 (tag),22-C02 Plumbing & Process Pumps — Sludge pumps and valving,2023-04-01,2023-11-01,2023-03-31,Not started (baseline: no progress entered),Inferred,"main spec 00 31 13 ¶A.6 p.21; 01 33 00 ¶1.05.G pp.131–132; 01 70 00 ¶1.03.A.6 p.152, ¶1.06 p.155; 01 91 00 ¶1.06 p.158; QA plan §2.0 p.6","Construction starts April 2023 (Verified). Status New and area (C6.2 title in 01) Inferred. Add. 4 item on 22 13 36 ¶2.01 A is mapped to Process & Mechanical in 03 — pointer only. 01 91 00 ¶1.06: peristaltic pumps for WAS and digested sludge; supplier at least 2 days (Verified). Submittal Y: O&M manual and a testing/start-up procedure due 14 days before start-up (01 33 00 ¶1.05.G; 01 70 00 ¶1.03.A.6, ¶1.06.B — Verified). Testing Y: tested before any facility goes into operation, Engineer present, manufacturer's installation letter (01 70 00 ¶1.06 — Verified). Counting this item as mechanical/electrical/instrumentation equipment is Inferred. QA plan §2.0 lists 'new sludge pumps' — Status New now read directly (Verified). The QA plan is not a Contract Document (§1.3 p.5). Cross-lane: Process & Mechanical || [Merge] Exceptions: #59, #251."
L-0412,PROPOSED-Yard-Piping,Yard piping,Civil,Contract & General,Site,New,None found (no sheet cited in rev0),Not linked (PROPOSED tag is not printed; no boxed anchor matched),CWP 33,Yard Piping & Utilities,1,None found,None found,None found,None found (no MTO line: no tied callout and no tag found on a cited sheet),00 31 13; 00 73 00; 01 45 00,00 31 13 (tag); QA plan (tag); 00 73 00 (spec); 01 45 00 (spec),2,SUB 00 73 00-01 (spec); SUB 01 45 00-00 (spec),tag 0; spec 2; sheet 0,N,5,ITP 00 73 00-01 (spec); ITP 00 73 00-02 (spec); ITP 01 45 00-01 (spec); ITP 01 45 00-02 (spec); ITP 01 45 00-03 (spec),tag 0; spec 5; sheet 0,Y,None found (Add. 4 checked; Addenda 1-3 not staged),OI-0361 (spec); OI-0386 (spec),7,OI-0474 (tag); OI-0323 (spec); OI-0350 (spec); OI-0354 (spec); OI-0389 (spec); OI-0434 (spec); OI-0470 (spec),#250 (tag),"33-C06 Yard Piping & Utilities — Yard piping, vaults and site utilities",2023-04-01,2023-11-01,2023-03-31,Not started (baseline: no progress entered),Inferred,main spec 00 31 13 ¶A.6 p.21; ¶A.18 p.22; 00 73 00 SC 19 p.92; 01 45 00 ¶1.05.B.1.a p.137,"Starts April 2023; major piping work completion deadline Nov 1, 2023 (Verified). Status New Inferred. SC 19 lists yard piping in Substantial Completion (Verified). Testing Y: Contractor-paid pipe pressure testing 'per specs' (01 45 00, Verified); which lines and test values are set outside this lane's stack (Inferred). Cross-lane: Civil & Site || [Merge] Exceptions: #250."
L-0413,PROPOSED-Yard-Piping-Vaults,Vaults associated with yard piping,Civil,Contract & General,Site,New,None found (no sheet cited in rev0),Not linked (PROPOSED tag is not printed; no boxed anchor matched),CWP 03,Concrete (Cast-in-Place & Precast),1,None found,None found,None found,None found (no MTO line: no tied callout and no tag found on a cited sheet),00 31 13,00 31 13 (spec),0,None found,tag 0; spec 0; sheet 0,N,0,None found,tag 0; spec 0; sheet 0,N,None found (Add. 4 checked; Addenda 1-3 not staged),None found,2,OI-0474 (tag); OI-0470 (spec),#250 (tag),"03-C08 Concrete (Cast-in-Place & Precast) — Yard piping, vaults and site utilities",2023-04-01,2023-11-01,2023-03-31,Not started (baseline: no progress entered),Inferred,main spec 00 31 13 ¶A.6 p.21,'Associated Vaults' start April 2023 (Verified); vault list not given. Cross-lane: Civil & Site || [Merge] Exceptions: #250.
L-0414,PROPOSED-2W-Air-Gap-Water-System,2W air gap water system,Process-Mechanical,Contract & General,2W Pump Station,New,None found (no sheet cited in rev0),Not linked (PROPOSED tag is not printed; no boxed anchor matched),CWP 43,Blowers & 2W Plant Water System,1,None found,None found,None found,None found (no MTO line: no tied callout and no tag found on a cited sheet),00 31 13; 01 33 00; 01 70 00; 01 91 00,00 31 13 (tag); 01 33 00 (spec); 01 70 00 (spec); 01 91 00 (spec); CQA Plan (spec),11,SUB 01 33 00-01 (spec); SUB 01 33 00-02 (spec); SUB 01 33 00-03 (spec); SUB 01 33 00-04 (spec); SUB 01 33 00-05 (spec); SUB 01 70 00-01 (spec); SUB 01 70 00-02 (spec); SUB 01 70 00-03 (spec); SUB 01 70 00-04 (spec); SUB 01 91 00-01 (spec); SUB 01 91 00-02 (spec),tag 0; spec 11; sheet 0,Y,4,ITP 01 33 00-01 (spec); ITP 01 70 00-01 (spec); ITP 01 70 00-02 (spec); ITP 01 91 00-01 (spec),tag 0; spec 4; sheet 0,Y,None found (Add. 4 checked; Addenda 1-3 not staged),None found,3,OI-0474 (tag); OI-0323 (spec); OI-0470 (spec),#17 (tag); #251 (tag),43-C01 Blowers & 2W Plant Water System — 2W air gap water system,2023-05-01,2023-10-18,2023-03-31,Not started (baseline: no progress entered),Inferred,"main spec 00 31 13 ¶A.7 p.21; ¶A.15 p.22; 01 33 00 ¶1.05.G pp.131–132; 01 70 00 ¶1.03.A.6 p.152, ¶1.06 p.155; 01 91 00 ¶1.10 p.159; QA plan §2.0 p.6","New system; start May 2023; complete Oct 18, 2023 (Verified). Spec 43 22 10 link Inferred (Add. 4 item on it mapped to Process & Mechanical in 03 — pointer only). 01 91 00 ¶1.10: supplier at least 1 day; verify constant 60–90 psi with pumps ramping to hold setpoint from 0 to 50 gpm, the automatic valve at the air gap and the floats (Verified). The pump station wet well has its own row. Submittal Y: O&M manual and a testing/start-up procedure due 14 days before start-up (01 33 00 ¶1.05.G; 01 70 00 ¶1.03.A.6, ¶1.06.B — Verified). Testing Y: tested before any facility goes into operation, Engineer present, manufacturer's installation letter (01 70 00 ¶1.06 — Verified). Counting this item as mechanical/electrical/instrumentation equipment is Inferred. QA plan §2.0 lists a 'new 2W water system' (Verified). The QA plan is not a Contract Document (§1.3 p.5). Cross-lane: Process & Mechanical || [Merge] Exceptions: #17, #251."
L-0415,PROPOSED-Influent-Pump-Station,Influent pump station,Process-Mechanical,Contract & General,Influent Pump Station,New,None found (no sheet cited in rev0),Not linked (PROPOSED tag is not printed; no boxed anchor matched),CWP 03,Concrete (Cast-in-Place & Precast),1,None found,None found,None found,None found (no MTO line: no tied callout and no tag found on a cited sheet),00 31 13; 00 73 00; 01 45 00; 01 50 00,00 31 13 (tag); E0.4 (tag); G0.5 (tag); QA plan (tag); 00 73 00 (spec); 01 45 00 (spec); 01 50 00 (spec); CQA Plan (spec),3,SUB 00 73 00-01 (spec); SUB 01 45 00-00 (spec); SUB 01 50 00-00 (spec),tag 0; spec 3; sheet 0,N,6,ITP 00 73 00-01 (spec); ITP 00 73 00-02 (spec); ITP 01 45 00-01 (spec); ITP 01 45 00-02 (spec); ITP 01 45 00-03 (spec); ITP 01 50 00-01 (spec),tag 0; spec 6; sheet 0,Y,None found (Add. 4 checked; Addenda 1-3 not staged),OI-0361 (spec); OI-0386 (spec),8,OI-0474 (tag); OI-0323 (spec); OI-0327 (spec); OI-0350 (spec); OI-0354 (spec); OI-0389 (spec); OI-0434 (spec); OI-0470 (spec),#37 (tag); #251 (tag),03-C04 Concrete (Cast-in-Place & Precast) — Influent pump station and flow splitter,2023-06-01,2023-10-25,2023-03-31,Not started (baseline: no progress entered),Inferred,main spec 00 31 13 ¶A.8 p.21; ¶A.16–17 p.22; 00 73 00 SC 19 p.92; 01 45 00 ¶1.09 pp.139–140; 01 50 00 ¶1.04.C p.143; QA plan §2.0 p.6,"New station; start June 2023; complete and on line Oct 25, 2023; all flow to Train #1 until influent piping is reconnected to Train #2 (Verified). Bid Item 1 Inferred. SC 19 lists the influent pump station in Substantial Completion (Verified). Testing Y: clean water leakage test before startup — filled to the rim, held 2 hours, no visible leakage (01 45 00 ¶1.09; 01 50 00 ¶1.04.C — Verified). QA plan §2.0 lists a 'new influent pump station' (Verified). The QA plan is not a Contract Document (§1.3 p.5). Cross-lane: Process & Mechanical || [Merge] Exceptions: #37, #251."
L-0416,PROPOSED-Submersible-Pump-Equipment,Submersible pump equipment,Process-Mechanical,Contract & General,Influent Pump Station,New,None found (no sheet cited in rev0),Not linked (PROPOSED tag is not printed; no boxed anchor matched),CWP 22,Plumbing & Process Pumps,1; Equipment Alternate A,None found,None found,None found,None found (no MTO line: no tied callout and no tag found on a cited sheet),00 41 00; 01 33 00; 01 70 00; 01 91 00; 01 45 00,00 41 00 (tag); 01 33 00 (spec); 01 70 00 (spec); 01 91 00 (spec); 01 45 00 (spec),12,SUB 01 33 00-01 (spec); SUB 01 33 00-02 (spec); SUB 01 33 00-03 (spec); SUB 01 33 00-04 (spec); SUB 01 33 00-05 (spec); SUB 01 45 00-00 (spec); SUB 01 70 00-01 (spec); SUB 01 70 00-02 (spec); SUB 01 70 00-03 (spec); SUB 01 70 00-04 (spec); SUB 01 91 00-01 (spec); SUB 01 91 00-02 (spec),tag 0; spec 12; sheet 0,Y,7,ITP 01 33 00-01 (spec); ITP 01 45 00-01 (spec); ITP 01 45 00-02 (spec); ITP 01 45 00-03 (spec); ITP 01 70 00-01 (spec); ITP 01 70 00-02 (spec); ITP 01 91 00-01 (spec),tag 0; spec 7; sheet 0,Y,None found (Add. 4 checked; Addenda 1-3 not staged),None found,13,OI-0474 (tag); OI-0239 (spec); OI-0240 (spec); OI-0241 (spec); OI-0242 (spec); OI-0243 (spec); OI-0244 (spec); OI-0245 (spec); OI-0246 (spec); OI-0247 (spec); OI-0248 (spec); OI-0323 (spec); OI-0354 (spec),#36 (tag); #251 (tag),22-C01 Plumbing & Process Pumps — Influent pump station and flow splitter,2023-06-01,2023-10-25,2023-03-31,Not started (baseline: no progress entered),Inferred,"main spec 00 41 00 p.26; 01 33 00 ¶1.05.G pp.131–132; 01 70 00 ¶1.03.A.6 p.152, ¶1.06 p.155; 01 91 00 ¶1.02 p.157; 01 45 00 ¶1.05.B.1.e p.137","Base manufacturer Flygt; Equipment Alternate A lump-sum deduction (Verified). Which pumps is not stated on the bid form; 04 links to 22 13 29 (Inferred). Status Inferred. 01 91 00 ¶1.02: influent pump station submersible pumps; supplier gives at least 5 days of start-up supervision and operator training (Verified) — area now Verified. Clean water mechanical testing of pumps is Contractor-paid (01 45 00 ¶1.05.B.1.e, Verified). Submittal Y: O&M manual and a testing/start-up procedure due 14 days before start-up (01 33 00 ¶1.05.G; 01 70 00 ¶1.03.A.6, ¶1.06.B — Verified). Testing Y: tested before any facility goes into operation, Engineer present, manufacturer's installation letter (01 70 00 ¶1.06 — Verified). Counting this item as mechanical/electrical/instrumentation equipment is Inferred. Cross-lane: Process & Mechanical || [Merge] Exceptions: #36, #251."
L-0417,PROPOSED-Influent-Flow-Splitter,Influent flow splitter,Process-Mechanical,Contract & General,Influent Flow Splitter,New,None found (no sheet cited in rev0),Not linked (PROPOSED tag is not printed; no boxed anchor matched),CWP 46,Treatment Equipment,1,None found,None found,None found,None found (no MTO line: no tied callout and no tag found on a cited sheet),00 31 13; 00 73 00; 01 45 00; 01 50 00,00 31 13 (tag); QA plan (tag); 00 73 00 (spec); 01 45 00 (spec); 01 50 00 (spec); CQA Plan (spec),3,SUB 00 73 00-01 (spec); SUB 01 45 00-00 (spec); SUB 01 50 00-00 (spec),tag 0; spec 3; sheet 0,N,6,ITP 00 73 00-01 (spec); ITP 00 73 00-02 (spec); ITP 01 45 00-01 (spec); ITP 01 45 00-02 (spec); ITP 01 45 00-03 (spec); ITP 01 50 00-01 (spec),tag 0; spec 6; sheet 0,Y,None found (Add. 4 checked; Addenda 1-3 not staged),OI-0361 (spec); OI-0386 (spec),9,OI-0210 (tag); OI-0474 (tag); OI-0323 (spec); OI-0327 (spec); OI-0350 (spec); OI-0354 (spec); OI-0389 (spec); OI-0434 (spec); OI-0470 (spec),#75 (tag); #103 (tag); #251 (tag),46-C02 Treatment Equipment — Influent pump station and flow splitter,2023-06-01,2023-10-25,2023-03-31,Not started (baseline: no progress entered),Inferred,main spec 00 31 13 ¶A.17 p.22; 00 73 00 SC 19 p.92; 01 45 00 ¶1.09 pp.139–140; 01 50 00 ¶1.04.C p.143; QA plan §2.0 p.6,"Placed on line with the new influent pump station Oct 25, 2023 (Verified). 'New' read as applying to the listed items (Inferred). SC 19 lists a 'flow splitter' in Substantial Completion (Verified); read as this influent flow splitter (Inferred — SC 19 does not say 'influent'). Both lists say 'Flow Splitter' — mapping to this row Inferred. Testing Y: clean water leakage test before startup — filled to the rim, held 2 hours, no visible leakage (01 45 00 ¶1.09; 01 50 00 ¶1.04.C — Verified). QA plan §2.0 lists a 'new influent flow splitter' — Status New now read directly (Verified). The QA plan is not a Contract Document (§1.3 p.5). Cross-lane: Process & Mechanical || [Merge] Exceptions: #75, #103, #251."
L-0418,PROPOSED-Influent-Sampler,Influent sampler,Process-Mechanical,Contract & General,Not stated,New,None found (no sheet cited in rev0),Not linked (PROPOSED tag is not printed; no boxed anchor matched),CWP 46,Treatment Equipment,Not stated,None found,None found,None found,None found (no MTO line: no tied callout and no tag found on a cited sheet),00 31 13; 01 33 00; 01 70 00,00 31 13 (tag); 01 33 00 (spec); 01 70 00 (spec),9,SUB 01 33 00-01 (spec); SUB 01 33 00-02 (spec); SUB 01 33 00-03 (spec); SUB 01 33 00-04 (spec); SUB 01 33 00-05 (spec); SUB 01 70 00-01 (spec); SUB 01 70 00-02 (spec); SUB 01 70 00-03 (spec); SUB 01 70 00-04 (spec),tag 0; spec 9; sheet 0,Y,3,ITP 01 33 00-01 (spec); ITP 01 70 00-01 (spec); ITP 01 70 00-02 (spec),tag 0; spec 3; sheet 0,Y,None found (Add. 4 checked; Addenda 1-3 not staged),None found,5,OI-0229 (tag); OI-0356 (tag); OI-0474 (tag); OI-0323 (spec); OI-0470 (spec),#13 (tag); #122 (tag); #251 (tag),46-C02 Treatment Equipment — Influent pump station and flow splitter,2023-06-01,2023-10-25,2023-03-31,Not started (baseline: no progress entered),Inferred,"main spec 00 31 13 ¶A.17 p.22; 01 33 00 ¶1.05.G pp.131–132; 01 70 00 ¶1.03.A.6 p.152, ¶1.06 p.155","Placed on line Oct 25, 2023 (Verified). Specifying section not in my stack, so Item 1 vs 6 not stated. Status and discipline Inferred. No commissioning paragraph in 01 91 00 (Issues 2.8). Submittal Y: O&M manual and a testing/start-up procedure due 14 days before start-up (01 33 00 ¶1.05.G; 01 70 00 ¶1.03.A.6, ¶1.06.B — Verified). Testing Y: tested before any facility goes into operation, Engineer present, manufacturer's installation letter (01 70 00 ¶1.06 — Verified). Counting this item as mechanical/electrical/instrumentation equipment is Inferred. Cross-lane: Process & Mechanical || [Merge] Exceptions: #13, #122, #251."
L-0419,PROPOSED-Train-3,Train 3 (third treatment train),Process-Mechanical,Contract & General,Train 3,New,None found (no sheet cited in rev0),Not linked (PROPOSED tag is not printed; no boxed anchor matched),CWP 46,Treatment Equipment,1,None found,None found,None found,None found (no MTO line: no tied callout and no tag found on a cited sheet),00 31 13; 00 24 13; 00 73 00; 01 45 00; 01 50 00,00 31 13 (tag); 00 24 13 (spec); 00 73 00 (spec); 01 45 00 (spec); 01 50 00 (spec); CQA Plan (spec),3,SUB 00 73 00-01 (spec); SUB 01 45 00-00 (spec); SUB 01 50 00-00 (spec),tag 0; spec 3; sheet 0,N,6,ITP 00 73 00-01 (spec); ITP 00 73 00-02 (spec); ITP 01 45 00-01 (spec); ITP 01 45 00-02 (spec); ITP 01 45 00-03 (spec); ITP 01 50 00-01 (spec),tag 0; spec 6; sheet 0,Y,None found (Add. 4 checked; Addenda 1-3 not staged),OI-0361 (spec); OI-0386 (spec),19,OI-0474 (tag); OI-0239 (spec); OI-0240 (spec); OI-0241 (spec); OI-0242 (spec); OI-0243 (spec); OI-0244 (spec); OI-0245 (spec); OI-0246 (spec); OI-0247 (spec); OI-0248 (spec); OI-0323 (spec); OI-0327 (spec); OI-0350 (spec); OI-0354 (spec); OI-0389 (spec); OI-0434 (spec); OI-0451 (spec); OI-0470 (spec),#251 (tag); #253 (tag),46-C04 Treatment Equipment — Train 3,2023-08-01,2024-07-08,2023-03-31,Not started (baseline: no progress entered),Inferred,"main spec 00 31 13 ¶A.10 p.21, ¶A.22–23 p.22; 00 73 00 SC 19 p.92; 01 45 00 ¶1.09 pp.139–140; 01 50 00 ¶1.04.C p.143; QA plan §2.0 p.6","Start Aug 2023; complete July 8, 2024; seeded with 10,000 gal activated sludge from Train #1 or #2, July 8–12, 2024 (Verified). Bid Item 1 Inferred. SC 19 lists 'train 3' in Substantial Completion (Verified). 01 50 00 lists 'Train #3 (including Aeration Basins, Anoxic Basins, and Clarifier)' (Verified); those structures also have their own rows. Testing Y: clean water leakage test before startup — filled to the rim, held 2 hours, no visible leakage (01 45 00 ¶1.09; 01 50 00 ¶1.04.C — Verified). QA plan §2.0: 'new third train configured to match the dimensions of the other two existing bullseye treatment cells' (Verified). The QA plan is not a Contract Document (§1.3 p.5). Cross-lane: Process & Mechanical; Structural & Building || [Merge] Exceptions: #251, #253."
L-0420,PROPOSED-Train-3-Biological-Treatment-Equipment,Train 3 biological treatment system equipment,Process-Mechanical,Contract & General,Train 3,New,None found (no sheet cited in rev0),Not linked (PROPOSED tag is not printed; no boxed anchor matched),CWP 46,Treatment Equipment,1; Equipment Alternate B; 18 — Unresolved (see 04); 19,None found,None found,None found,None found (no MTO line: no tied callout and no tag found on a cited sheet),00 24 13; 00 41 00; 01 33 00; 01 70 00; 01 91 00; 01 45 00,01 91 00 (tag); 00 24 13 (spec); 00 41 00 (spec); 01 33 00 (spec); 01 70 00 (spec); 01 45 00 (spec),12,SUB 01 33 00-01 (spec); SUB 01 33 00-02 (spec); SUB 01 33 00-03 (spec); SUB 01 33 00-04 (spec); SUB 01 33 00-05 (spec); SUB 01 45 00-00 (spec); SUB 01 70 00-01 (spec); SUB 01 70 00-02 (spec); SUB 01 70 00-03 (spec); SUB 01 70 00-04 (spec); SUB 01 91 00-01 (spec); SUB 01 91 00-02 (spec),tag 0; spec 12; sheet 0,Y,7,ITP 01 33 00-01 (spec); ITP 01 45 00-01 (spec); ITP 01 45 00-02 (spec); ITP 01 45 00-03 (spec); ITP 01 70 00-01 (spec); ITP 01 70 00-02 (spec); ITP 01 91 00-01 (spec),tag 0; spec 7; sheet 0,Y,None found (Add. 4 checked; Addenda 1-3 not staged),None found,16,OI-0002 (tag); OI-0465 (tag); OI-0474 (tag); OI-0239 (spec); OI-0240 (spec); OI-0241 (spec); OI-0242 (spec); OI-0243 (spec); OI-0244 (spec); OI-0245 (spec); OI-0246 (spec); OI-0247 (spec); OI-0248 (spec); OI-0323 (spec); OI-0354 (spec); OI-0451 (spec),#30 (tag); #251 (tag); #255 (tag),46-C04 Treatment Equipment — Train 3,2023-08-01,2024-07-08,2023-03-31,Not started (baseline: no progress entered),Unresolved,"main spec 00 41 00 pp.25–26; 00 24 13 ¶18–19 p.20; 01 33 00 ¶1.05.G pp.131–132; 01 70 00 ¶1.03.A.6 p.152, ¶1.06 p.155; 01 91 00 ¶1.03 pp.157–158; 01 45 00 ¶1.05.B.1.e p.137","Base manufacturer Smith and Loveless (Verified). Alt 1 (Item 18): Type 316 SS for in-basin steel above water to 1 ft below, submerged parts painted; Alt 2 (Item 19): SS throughout, structural supports may be painted; FRP effluent weirs and covers excluded; per 46 53 00 (Verified). Add. 4 p.1 Clar. 5 uses #18 for another scope — existing flag (02/03/04), cited not re-raised. 01 91 00 ¶1.03: supplier gives at least 2 weeks of start-up supervision and training; items named: clarifier drive, mixers, valves, DO sensors, pH sensors, air lift pumps, weirs and baffles set level (Verified) — sensors also rowed separately. Clean water mechanical testing of diffusers, mixers and air lift assemblies is Contractor-paid (01 45 00 ¶1.05.B.1.e, Verified). Submittal Y: O&M manual and a testing/start-up procedure due 14 days before start-up (01 33 00 ¶1.05.G; 01 70 00 ¶1.03.A.6, ¶1.06.B — Verified). Testing Y: tested before any facility goes into operation, Engineer present, manufacturer's installation letter (01 70 00 ¶1.06 — Verified). Counting this item as mechanical/electrical/instrumentation equipment is Inferred. Cross-lane: Process & Mechanical || [Merge] Exceptions: #30, #251, #255."
L-0421,PROPOSED-Temporary-Back-Up-Generator,"Temporary back-up generator (rental, 480V)",Electrical,Contract & General,Not stated,Temporary,None found (no sheet cited in rev0),Not linked (PROPOSED tag is not printed; no boxed anchor matched),CWP 26,"Electrical, Instrumentation & Controls",18 — Unresolved (see 04),None found,None found,None found,None found (no MTO line: no tied callout and no tag found on a cited sheet),00 31 13,Add. 4 Generator Exhibit (tag); 00 31 13 (spec); 00 41 00 (spec),0,None found,tag 0; spec 0; sheet 0,N,0,None found,tag 0; spec 0; sheet 0,Y,"Add. 4 p.1, Clarification 5 — Add. 4 governs",None found,4,OI-0002 (tag); OI-0465 (tag); OI-0474 (tag); OI-0470 (spec),#14 (tag); #253 (tag); #255 (tag),"26-C13 Electrical, Instrumentation & Controls — Temporary back-up generator (rental)",2023-09-25,2024-04-30,2023-03-14,Not started (baseline: no progress entered),Unresolved,"main spec 00 31 13 ¶A.11 p.21, ¶A.21 p.22; Add. 4 p.1 Clarification 5","Rent Sept 25, 2023; rental removed when the permanent 480V generator is on line, April 2024 (00 31 13, Verified). Add. 4: connects temporarily to the permanent ATS until the permanent genset arrives; test generator connections and automatic load transfer; quiet operation, 60 dBA or lower at full load; example Sunbelt 120 kW diesel exhibit on Add. 4 pp.11–13 (Electrical & Controls stack, not read) (Verified). Bid item number stays Unresolved per the existing flag. Submittal left N: the O&M and start-up procedure rules (01 33 00, 01 70 00) are read as applying to permanent equipment, not the rental (Inferred). Separate from temporary construction power (01 50 00 ¶1.04.A). Cross-lane: Electrical & Controls || [Merge] Exceptions: #14, #253, #255."
L-0422,PROPOSED-Automatic-Transfer-Switch,Automatic transfer switch (permanent),Electrical,Contract & General,Not stated,New,None found (no sheet cited in rev0),Not linked (PROPOSED tag is not printed; no boxed anchor matched),CWP 26,"Electrical, Instrumentation & Controls",18 — Unresolved (see 04),None found,None found,None found,None found (no MTO line: no tied callout and no tag found on a cited sheet),01 33 00; 01 70 00,01 33 00 (spec); 01 70 00 (spec); 00 41 00 (spec),9,SUB 01 33 00-01 (spec); SUB 01 33 00-02 (spec); SUB 01 33 00-03 (spec); SUB 01 33 00-04 (spec); SUB 01 33 00-05 (spec); SUB 01 70 00-01 (spec); SUB 01 70 00-02 (spec); SUB 01 70 00-03 (spec); SUB 01 70 00-04 (spec),tag 0; spec 9; sheet 0,Y,3,ITP 01 33 00-01 (spec); ITP 01 70 00-01 (spec); ITP 01 70 00-02 (spec),tag 0; spec 3; sheet 0,Y,"Add. 4 p.1, Clarification 5 — Add. 4 governs",None found,5,OI-0002 (tag); OI-0356 (tag); OI-0465 (tag); OI-0474 (tag); OI-0323 (spec),#66 (tag); #253 (tag); #255 (tag),"26-C10 Electrical, Instrumentation & Controls — 480V service, MCC and PLC panel",2023-04-01,2023-10-04,2023-03-14,Not started (baseline: no progress entered),Unresolved,"Add. 4 p.1 Clarification 5; 01 33 00 ¶1.05.G pp.131–132; 01 70 00 ¶1.03.A.6 p.152, ¶1.06 p.155","The transfer switch is the project's permanent ATS, not a long-lead item; the temporary generator connects to it (Verified). Testing Y = the automatic load transfer test in Clar. 5 exercises the ATS (Inferred). Touches the #18 scope, so carries 18 — Unresolved; by content likely Item 6 (Inferred, 00 24 13 ¶6 p.17). Spec 26 36 00 link Inferred. No commissioning paragraph in 01 91 00 (Issues 2.8). Submittal Y: O&M manual and a testing/start-up procedure due 14 days before start-up (01 33 00 ¶1.05.G; 01 70 00 ¶1.03.A.6, ¶1.06.B — Verified). Testing Y: tested before any facility goes into operation, Engineer present, manufacturer's installation letter (01 70 00 ¶1.06 — Verified). Counting this item as mechanical/electrical/instrumentation equipment is Inferred. Cross-lane: Electrical & Controls || [Merge] Exceptions: #66, #253, #255."
L-0423,PROPOSED-Permanent-Standby-Generator,Permanent 480V standby generator,Electrical,Contract & General,Not stated,New,None found (no sheet cited in rev0),Not linked (PROPOSED tag is not printed; no boxed anchor matched),CWP 26,"Electrical, Instrumentation & Controls",1 or 6 — Unresolved (see 04); Equipment Alternate E,None found,None found,None found,None found (no MTO line: no tied callout and no tag found on a cited sheet),00 31 13; 00 41 00; 00 73 00; 01 33 00; 01 70 00,00 31 13 (spec); 00 41 00 (spec); 00 73 00 (spec); 01 33 00 (spec); 01 70 00 (spec); CQA Plan (spec),10,SUB 00 73 00-01 (spec); SUB 01 33 00-01 (spec); SUB 01 33 00-02 (spec); SUB 01 33 00-03 (spec); SUB 01 33 00-04 (spec); SUB 01 33 00-05 (spec); SUB 01 70 00-01 (spec); SUB 01 70 00-02 (spec); SUB 01 70 00-03 (spec); SUB 01 70 00-04 (spec),tag 0; spec 10; sheet 0,Y,5,ITP 00 73 00-01 (spec); ITP 00 73 00-02 (spec); ITP 01 33 00-01 (spec); ITP 01 70 00-01 (spec); ITP 01 70 00-02 (spec),tag 0; spec 5; sheet 0,Y,None found (Add. 4 checked; Addenda 1-3 not staged),OI-0361 (spec); OI-0386 (spec),19,OI-0325 (tag); OI-0356 (tag); OI-0474 (tag); OI-0239 (spec); OI-0240 (spec); OI-0241 (spec); OI-0242 (spec); OI-0243 (spec); OI-0244 (spec); OI-0245 (spec); OI-0246 (spec); OI-0247 (spec); OI-0248 (spec); OI-0323 (spec); OI-0350 (spec); OI-0354 (spec); OI-0389 (spec); OI-0434 (spec); OI-0470 (spec),#65 (tag); #253 (tag); #257 (tag),"26-C07 Electrical, Instrumentation & Controls — Permanent standby generator",2024-03-01,2024-04-30,2023-03-14,Not started (baseline: no progress entered),Unresolved,"main spec 00 31 13 ¶A.21 p.22; 00 41 00 pp.26–27; 00 73 00 SC 19 p.92; 01 33 00 ¶1.05.G pp.131–132; 01 70 00 ¶1.03.A.6 p.152, ¶1.06 p.155; QA plan §2.0 p.6","Base manufacturers Cummins, Kohler, Caterpillar, Generac; Equipment Alternate E deduction (Verified). Installed, tested and on line April 2024, rental removed (00 31 13 ¶A.21, Verified) — Testing Y from that milestone. Item 1 vs Item 6 conflict already flagged (03 candidate; 04 other conflict 1) — cited, not re-raised. Named as the 'permanent genset' in Add. 4 Clar. 5. SC 19 lists a 'backup generator' in Substantial Completion (Verified); read as the permanent unit (Inferred — the rental is removed once the permanent unit is on line, 00 31 13 ¶A.21). No commissioning paragraph in 01 91 00 (Issues 2.8). Submittal Y: O&M manual and a testing/start-up procedure due 14 days before start-up (01 33 00 ¶1.05.G; 01 70 00 ¶1.03.A.6, ¶1.06.B — Verified). Testing Y: tested before any facility goes into operation, Engineer present, manufacturer's installation letter (01 70 00 ¶1.06 — Verified). Counting this item as mechanical/electrical/instrumentation equipment is Inferred. QA plan §2.0 lists a 'new emergency generator'; read as this permanent unit (Inferred). The QA plan is not a Contract Document (§1.3 p.5). Cross-lane: Electrical & Controls || [Merge] Exceptions: #65, #253, #257."
L-0424,PROPOSED-480V-Electrical-Service,480V electrical service (new),Electrical,Contract & General,Not stated,New,None found (no sheet cited in rev0),Not linked (PROPOSED tag is not printed; no boxed anchor matched),CWP 26,"Electrical, Instrumentation & Controls",6,None found,None found,None found,None found (no MTO line: no tied callout and no tag found on a cited sheet),00 31 13; 01 33 00; 01 70 00,00 31 13 (spec); 01 33 00 (spec); 01 70 00 (spec),9,SUB 01 33 00-01 (spec); SUB 01 33 00-02 (spec); SUB 01 33 00-03 (spec); SUB 01 33 00-04 (spec); SUB 01 33 00-05 (spec); SUB 01 70 00-01 (spec); SUB 01 70 00-02 (spec); SUB 01 70 00-03 (spec); SUB 01 70 00-04 (spec),tag 0; spec 9; sheet 0,Y,3,ITP 01 33 00-01 (spec); ITP 01 70 00-01 (spec); ITP 01 70 00-02 (spec),tag 0; spec 3; sheet 0,Y,None found (Add. 4 checked; Addenda 1-3 not staged),None found,4,OI-0356 (tag); OI-0474 (tag); OI-0323 (spec); OI-0470 (spec),#253 (tag),"26-C10 Electrical, Instrumentation & Controls — 480V service, MCC and PLC panel",2023-04-01,2023-10-04,2023-03-14,Not started (baseline: no progress entered),Inferred,"main spec 00 31 13 ¶A.12 p.21; 01 33 00 ¶1.05.G pp.131–132; 01 70 00 ¶1.03.A.6 p.152, ¶1.06 p.155","Complete Oct 4, 2023 (Verified). Bid Item 6 Inferred (00 24 13 ¶6 p.17: all E sheets and Division 26). No commissioning paragraph in 01 91 00 (Issues 2.8). Submittal Y: O&M manual and a testing/start-up procedure due 14 days before start-up (01 33 00 ¶1.05.G; 01 70 00 ¶1.03.A.6, ¶1.06.B — Verified). Testing Y: tested before any facility goes into operation, Engineer present, manufacturer's installation letter (01 70 00 ¶1.06 — Verified). Counting this item as mechanical/electrical/instrumentation equipment is Inferred. Cross-lane: Electrical & Controls || [Merge] Exceptions: #253."
L-0425,PROPOSED-Motor-Control-Center,Motor control center (MCC),Electrical,Contract & General,Blower Building,New,None found (no sheet cited in rev0),Not linked (PROPOSED tag is not printed; no boxed anchor matched),CWP 26,"Electrical, Instrumentation & Controls",6,None found,None found,None found,None found (no MTO line: no tied callout and no tag found on a cited sheet),00 31 13; 01 33 00; 01 70 00,00 31 13 (spec); 01 33 00 (spec); 01 70 00 (spec),9,SUB 01 33 00-01 (spec); SUB 01 33 00-02 (spec); SUB 01 33 00-03 (spec); SUB 01 33 00-04 (spec); SUB 01 33 00-05 (spec); SUB 01 70 00-01 (spec); SUB 01 70 00-02 (spec); SUB 01 70 00-03 (spec); SUB 01 70 00-04 (spec),tag 0; spec 9; sheet 0,Y,3,ITP 01 33 00-01 (spec); ITP 01 70 00-01 (spec); ITP 01 70 00-02 (spec),tag 0; spec 3; sheet 0,Y,None found (Add. 4 checked; Addenda 1-3 not staged),None found,4,OI-0356 (tag); OI-0474 (tag); OI-0323 (spec); OI-0470 (spec),#23 (tag); #253 (tag),"26-C02 Electrical, Instrumentation & Controls — Blower Building",2023-04-01,2023-07-31,2023-03-14,Not started (baseline: no progress entered),Inferred,"main spec 00 31 13 ¶A.12 p.21; 01 33 00 ¶1.05.G pp.131–132; 01 70 00 ¶1.03.A.6 p.152, ¶1.06 p.155","Complete Oct 4, 2023 (Verified). Area Inferred from the E9.1 title in 01. Bid Item 6 Inferred. Add. 4 p.1 Clarification 4 (MCC size) is mapped to Electrical & Controls in 03 — pointer only. No commissioning paragraph in 01 91 00 (Issues 2.8). Submittal Y: O&M manual and a testing/start-up procedure due 14 days before start-up (01 33 00 ¶1.05.G; 01 70 00 ¶1.03.A.6, ¶1.06.B — Verified). Testing Y: tested before any facility goes into operation, Engineer present, manufacturer's installation letter (01 70 00 ¶1.06 — Verified). Counting this item as mechanical/electrical/instrumentation equipment is Inferred. Cross-lane: Electrical & Controls || [Merge] Exceptions: #23, #253."
L-0426,PROPOSED-PLC-Control-Panel,PLC control panel (new),Controls,Contract & General,Not stated,New,None found (no sheet cited in rev0),Not linked (PROPOSED tag is not printed; no boxed anchor matched),CWP 26,"Electrical, Instrumentation & Controls",6,None found,None found,None found,None found (no MTO line: no tied callout and no tag found on a cited sheet),00 31 13; 00 73 00; 01 33 00; 01 70 00,00 31 13 (spec); 00 73 00 (spec); 01 33 00 (spec); 01 70 00 (spec),10,SUB 00 73 00-01 (spec); SUB 01 33 00-01 (spec); SUB 01 33 00-02 (spec); SUB 01 33 00-03 (spec); SUB 01 33 00-04 (spec); SUB 01 33 00-05 (spec); SUB 01 70 00-01 (spec); SUB 01 70 00-02 (spec); SUB 01 70 00-03 (spec); SUB 01 70 00-04 (spec),tag 0; spec 10; sheet 0,Y,5,ITP 00 73 00-01 (spec); ITP 00 73 00-02 (spec); ITP 01 33 00-01 (spec); ITP 01 70 00-01 (spec); ITP 01 70 00-02 (spec),tag 0; spec 5; sheet 0,Y,None found (Add. 4 checked; Addenda 1-3 not staged),OI-0361 (spec); OI-0386 (spec),8,OI-0356 (tag); OI-0474 (tag); OI-0323 (spec); OI-0350 (spec); OI-0354 (spec); OI-0389 (spec); OI-0434 (spec); OI-0470 (spec),#24 (tag); #253 (tag),"26-C10 Electrical, Instrumentation & Controls — 480V service, MCC and PLC panel",2023-04-01,2023-10-04,2023-03-14,Not started (baseline: no progress entered),Inferred,"main spec 00 31 13 ¶A.12 p.21; 00 73 00 SC 19 p.92; 01 33 00 ¶1.05.G pp.131–132; 01 70 00 ¶1.03.A.6 p.152, ¶1.06 p.155","Complete Oct 4, 2023 (Verified). Bid Item 6 Inferred. SC 19 lists 'SCADA/PLC programming' in Substantial Completion (Verified); tie to this panel Inferred. O&M manuals expressly cover controls, telemetry and SCADA (01 70 00 ¶1.03.A.6, Verified). No commissioning paragraph in 01 91 00 (Issues 2.8). Submittal Y: O&M manual and a testing/start-up procedure due 14 days before start-up (01 33 00 ¶1.05.G; 01 70 00 ¶1.03.A.6, ¶1.06.B — Verified). Testing Y: tested before any facility goes into operation, Engineer present, manufacturer's installation letter (01 70 00 ¶1.06 — Verified). Counting this item as mechanical/electrical/instrumentation equipment is Inferred. Cross-lane: Electrical & Controls || [Merge] Exceptions: #24, #253."
L-0427,PROPOSED-Dewatering-System,Sludge dewatering system (rotary fan press),Process-Mechanical,Contract & General,Rotary Fan Press System,New,None found (no sheet cited in rev0),Not linked (PROPOSED tag is not printed; no boxed anchor matched),CWP 46,Treatment Equipment,1; Equipment Alternate C,None found,None found,None found,None found (no MTO line: no tied callout and no tag found on a cited sheet),00 31 13; 00 41 00; 00 73 00; 01 33 00; 01 70 00; 01 91 00,00 31 13 (tag); 00 41 00 (spec); 00 73 00 (spec); 01 33 00 (spec); 01 70 00 (spec); 01 91 00 (spec); CQA Plan (spec),12,SUB 00 73 00-01 (spec); SUB 01 33 00-01 (spec); SUB 01 33 00-02 (spec); SUB 01 33 00-03 (spec); SUB 01 33 00-04 (spec); SUB 01 33 00-05 (spec); SUB 01 70 00-01 (spec); SUB 01 70 00-02 (spec); SUB 01 70 00-03 (spec); SUB 01 70 00-04 (spec); SUB 01 91 00-01 (spec); SUB 01 91 00-02 (spec),tag 0; spec 12; sheet 0,Y,6,ITP 00 73 00-01 (spec); ITP 00 73 00-02 (spec); ITP 01 33 00-01 (spec); ITP 01 70 00-01 (spec); ITP 01 70 00-02 (spec); ITP 01 91 00-01 (spec),tag 0; spec 6; sheet 0,Y,None found (Add. 4 checked; Addenda 1-3 not staged),OI-0361 (spec); OI-0386 (spec),18,OI-0342 (tag); OI-0474 (tag); OI-0239 (spec); OI-0240 (spec); OI-0241 (spec); OI-0242 (spec); OI-0243 (spec); OI-0244 (spec); OI-0245 (spec); OI-0246 (spec); OI-0247 (spec); OI-0248 (spec); OI-0323 (spec); OI-0350 (spec); OI-0354 (spec); OI-0389 (spec); OI-0434 (spec); OI-0470 (spec),#15 (tag); #63 (tag); #251 (tag),46-C01 Treatment Equipment — Sludge dewatering (rotary fan press),2023-11-01,2024-02-09,2023-03-31,Not started (baseline: no progress entered),Unresolved,"main spec 00 31 13 ¶A.20 p.22; 00 41 00 p.26; 00 73 00 SC 19 p.92; 01 33 00 ¶1.05.G pp.131–132; 01 70 00 ¶1.03.A.6 p.152, ¶1.06 p.155; 01 91 00 ¶1.07 p.159; QA plan §2.0 p.6","New dewatering system complete Feb 9, 2024 (00 31 13, Verified); rotary fan press base manufacturers Fournier, Prime Solutions, Equipment Alternate C (00 41 00, Verified). Treating the two mentions as one item is Inferred. Area from C6.1 title (Inferred). SC 19 lists the sludge dewatering system in Substantial Completion (Verified). 01 91 00 ¶1.07: dewatering equipment suppliers (plural) each give 'a minimum of one (2) days' — Issues 1.21 (Unresolved); motors named: conveyor, press, pumps (Verified). Submittal Y: O&M manual and a testing/start-up procedure due 14 days before start-up (01 33 00 ¶1.05.G; 01 70 00 ¶1.03.A.6, ¶1.06.B — Verified). Testing Y: tested before any facility goes into operation, Engineer present, manufacturer's installation letter (01 70 00 ¶1.06 — Verified). Counting this item as mechanical/electrical/instrumentation equipment is Inferred. QA plan §2.0 lists a 'new biosolids dewatering system' (Verified). The QA plan is not a Contract Document (§1.3 p.5). Cross-lane: Process & Mechanical || [Merge] Exceptions: #15, #63, #251."
L-0428,PROPOSED-Site-Final-Surfacing-and-Pavement,Final surfacing and pavement (entire site),Civil,Contract & General,Site,New,None found (no sheet cited in rev0),Not linked (PROPOSED tag is not printed; no boxed anchor matched),CWP 32,"Paving, Fencing, Walls & Landscaping",1; 8 (extra HMA only),None found,None found,None found,None found (no MTO line: no tied callout and no tag found on a cited sheet),00 31 13; 00 24 13; 00 41 00; 00 73 00; 01 45 00,00 31 13 (spec); 00 24 13 (spec); 00 41 00 (spec); 00 73 00 (spec); 01 45 00 (spec),2,SUB 00 73 00-01 (spec); SUB 01 45 00-00 (spec),tag 0; spec 2; sheet 0,N,5,ITP 00 73 00-01 (spec); ITP 00 73 00-02 (spec); ITP 01 45 00-01 (spec); ITP 01 45 00-02 (spec); ITP 01 45 00-03 (spec),tag 0; spec 5; sheet 0,Y,None found (Add. 4 checked; Addenda 1-3 not staged),OI-0361 (spec); OI-0386 (spec),18,OI-0474 (tag); OI-0239 (spec); OI-0240 (spec); OI-0241 (spec); OI-0242 (spec); OI-0243 (spec); OI-0244 (spec); OI-0245 (spec); OI-0246 (spec); OI-0247 (spec); OI-0248 (spec); OI-0323 (spec); OI-0350 (spec); OI-0354 (spec); OI-0389 (spec); OI-0434 (spec); OI-0451 (spec); OI-0470 (spec),#73 (tag); #250 (tag),"32-C01 Paving, Fencing, Walls & Landscaping — Final surfacing and pavement",2024-08-01,2024-08-31,2023-03-14,Not started (baseline: no progress entered),Inferred,"main spec 00 31 13 ¶A.26 p.22; 00 24 13 ¶8 p.17; 00 41 00 p.24; 00 73 00 SC 19 p.92; 01 45 00 ¶1.05.B.2.d p.138, p.141","Final surfacing/pavement for the entire site, August 2024 (Verified). Extra HMA (Class 1/2-inch PG 58H-22 per 32 12 16) is unit-price Item 8, 10 TN approx. (Verified). Base paving in Item 1 Inferred. SC 19 puts asphalt pavement and remaining site work in Final Completion (Verified). Testing Y: Owner-paid asphalt testing — Rice density, compaction, extraction/gradation (01 45 00, Verified). Cross-lane: Civil & Site || [Merge] Exceptions: #73, #250."
L-0429,PROPOSED-Funding-Recognition-Sign,Funding recognition sign (Ecology financial assistance),General,Contract & General,Site,Temporary,None found (no sheet cited in rev0),Not linked (PROPOSED tag is not printed; no boxed anchor matched),CWP 01,General Requirements & Temporary Works,1,None found,None found,None found,None found (no MTO line: no tied callout and no tag found on a cited sheet),00 53 00,00 53 00 (tag),2,SUB 00 53 00-01 (spec); SUB 00 53 00-02 (spec),tag 0; spec 2; sheet 0,N,0,None found,tag 0; spec 0; sheet 0,N,None found (Add. 4 checked; Addenda 1-3 not staged),None found,3,OI-0474 (tag); OI-0323 (spec); OI-0355 (spec),#72 (tag); #250 (tag),01-C02 General Requirements & Temporary Works — Temporary facilities and controls,2023-03-15,2024-10-16,2023-03-14,Not started (baseline: no progress entered),Inferred,main spec 00 53 00 'Funding Recognition' p.42,"Sign of sufficient size to be seen from nearby roadways, acknowledging Ecology financial assistance, left in place for the life of the project; Department logos on all signs (Verified). Status Temporary Inferred from 'life of the project'. Bid Item 1 Inferred. Possibly the same sign as 15 08 13 Temporary Construction Sign (not in my stack; not stated). Cross-lane: Civil & Site || [Merge] Exceptions: #72, #250."
L-0430,PROPOSED-Temporary-Barriers,"Temporary barriers at openings and hazards (fencing, railing, barricades, steel plates, with warning signs or lights)",General,Contract & General,Site,Temporary,None found (no sheet cited in rev0),Not linked (PROPOSED tag is not printed; no boxed anchor matched),CWP 01,General Requirements & Temporary Works,1,None found,None found,None found,None found (no MTO line: no tied callout and no tag found on a cited sheet),00 73 00; 01 50 00,00 73 00 (spec); 01 50 00 (spec),2,SUB 00 73 00-01 (spec); SUB 01 50 00-00 (spec),tag 0; spec 2; sheet 0,N,3,ITP 00 73 00-01 (spec); ITP 00 73 00-02 (spec); ITP 01 50 00-01 (spec),tag 0; spec 3; sheet 0,N,None found (Add. 4 checked; Addenda 1-3 not staged),OI-0361 (spec); OI-0386 (spec),8,OI-0474 (tag); OI-0323 (spec); OI-0327 (spec); OI-0350 (spec); OI-0354 (spec); OI-0389 (spec); OI-0434 (spec); OI-0470 (spec),None found,01-C02 General Requirements & Temporary Works — Temporary facilities and controls,2023-03-15,2024-10-16,2023-03-14,Not started (baseline: no progress entered),Inferred,main spec 00 73 00 SC 23 p.93; 01 50 00 ¶1.08.A p.145,"Maintained at all openings, obstructions and hazards throughout construction, with warning signs or lights as needed for safety; safe access to and protection of the site and the Contractor's records (Verified). Status Temporary Verified ('temporary fencing, railing, barricades or steel plates'). Bid Item 1 (04: work not itemized elsewhere), area and discipline Inferred. Contract-wide requirement owned by this lane. 01 50 00 ¶1.08.A repeats the SC 23 barrier text for all excavations (Verified). Storage fences, gates and locks (01 50 00 ¶1.04.G p.144) are treated as means and methods, not rowed."
L-0431,PROPOSED-Temporary-Pump-and-Process-Equipment,Temporary pump and process equipment (removed at Final Completion),Process-Mechanical,Contract & General,Not stated,Temporary,None found (no sheet cited in rev0),Not linked (PROPOSED tag is not printed; no boxed anchor matched),CWP 01,General Requirements & Temporary Works,1,None found,None found,None found,None found (no MTO line: no tied callout and no tag found on a cited sheet),00 73 00; 01 50 00; 01 70 00,00 73 00 (spec); 01 50 00 (spec); 01 70 00 (spec),6,SUB 00 73 00-01 (spec); SUB 01 50 00-00 (spec); SUB 01 70 00-01 (spec); SUB 01 70 00-02 (spec); SUB 01 70 00-03 (spec); SUB 01 70 00-04 (spec),tag 0; spec 6; sheet 0,N,5,ITP 00 73 00-01 (spec); ITP 00 73 00-02 (spec); ITP 01 50 00-01 (spec); ITP 01 70 00-01 (spec); ITP 01 70 00-02 (spec),tag 0; spec 5; sheet 0,N,None found (Add. 4 checked; Addenda 1-3 not staged),OI-0361 (spec); OI-0386 (spec),9,OI-0340 (tag); OI-0474 (tag); OI-0323 (spec); OI-0327 (spec); OI-0350 (spec); OI-0354 (spec); OI-0389 (spec); OI-0434 (spec); OI-0470 (spec),#251 (tag),01-C02 General Requirements & Temporary Works — Temporary facilities and controls,2023-03-15,2024-10-16,2023-03-14,Not started (baseline: no progress entered),Inferred,main spec 00 73 00 SC 19 p.92; 01 50 00 ¶1.04.H p.144; 01 70 00 ¶1.03.A.3 p.152,"Removal of temporary pump/process equipment is part of Final Completion (Verified). Which equipment, where, and whether it is the bypass pumping system (01 33 00 ¶1.03.G) or the temporary bypass pipe set-up (00 31 13 ¶A.5) is not stated. Bid Item 1 and discipline Inferred. 01 50 00 ¶1.04.H puts 'other temporary process equipment' under the same continuous oversight as bypass pumping (Verified). 01 70 00 wants temporary facilities out before the Substantial Completion request; SC 19 governs for this equipment (Issues 1.19, Inferred). Cross-lane: Process & Mechanical || [Merge] Exceptions: #251."
L-0432,PROPOSED-Bypass-Pumping-System,Bypass pumping systems (influent and effluent) for WWTP shutdowns,Process-Mechanical,Contract & General,Site,Temporary,None found (no sheet cited in rev0),Not linked (PROPOSED tag is not printed; no boxed anchor matched),CWP 01,General Requirements & Temporary Works,1,None found,None found,None found,None found (no MTO line: no tied callout and no tag found on a cited sheet),01 33 00; 01 50 00,01 33 00 (spec); 01 50 00 (spec),6,SUB 01 33 00-01 (spec); SUB 01 33 00-02 (spec); SUB 01 33 00-03 (spec); SUB 01 33 00-04 (spec); SUB 01 33 00-05 (spec); SUB 01 50 00-00 (spec),tag 0; spec 6; sheet 0,Y,2,ITP 01 33 00-01 (spec); ITP 01 50 00-01 (spec),tag 0; spec 2; sheet 0,N,None found (Add. 4 checked; Addenda 1-3 not staged),None found,4,OI-0340 (tag); OI-0474 (tag); OI-0323 (spec); OI-0327 (spec),#68 (tag); #250 (tag); #251 (tag),01-C01 General Requirements & Temporary Works — Temporary bypass and interim effluent piping,2023-04-01,2023-10-11,2023-03-14,Not started (baseline: no progress entered),Inferred,"main spec 01 33 00 ¶1.03.G p.130; 01 50 00 ¶1.01.D.2 p.142, ¶1.04.H p.144","Submittal Y: a bypass pumping and emergency response plan for the site is due 14 days before any WWTP work that needs a shutdown (Verified). The section requires the plan; the pumping equipment itself is Inferred from it. Relation to SC 19 temporary pump/process equipment and the 00 31 13 temporary bypass pipe not stated. Status, Bid Item 1, area ('for the site') and discipline Inferred. 01 50 00: bypass systems for both influent and effluent wastewater; continuous oversight by on-site staff or an alarm with automatic cellular notification; call-out staff 24/7, on site within 30 minutes (Verified). Removal: SC 19 (Final Completion) governs over 01 70 00 ¶1.03.A.3 (Issues 1.19, Inferred). Cross-lane: Process & Mechanical; Civil & Site || [Merge] Exceptions: #68, #250, #251."
L-0433,PROPOSED-Temporary-Construction-Dewatering,Temporary construction dewatering (excavations),Civil,Contract & General,Site,Temporary,None found (no sheet cited in rev0),Not linked (PROPOSED tag is not printed; no boxed anchor matched),CWP 31,"Earthwork, Dewatering & Erosion Control",1,None found,None found,None found,None found (no MTO line: no tied callout and no tag found on a cited sheet),01 11 10; 00 31 13,01 11 10 (tag); 00 31 13 (spec),0,None found,tag 0; spec 0; sheet 0,N,0,None found,tag 0; spec 0; sheet 0,N,None found (Add. 4 checked; Addenda 1-3 not staged),None found,4,OI-0474 (tag); OI-0327 (spec); OI-0354 (spec); OI-0470 (spec),#69 (tag); #250 (tag),"31-C02 Earthwork, Dewatering & Erosion Control — Temporary facilities and controls",2023-03-15,2024-10-16,2023-03-14,Not started (baseline: no progress entered),Inferred,main spec 01 11 10 ¶1.01.B p.123; 00 31 13 ¶A.4 p.21,"Contractor provides pumping, dewatering and drainage as required (01 11 10, Verified). 00 31 13 schedules 'Prepare Dewatering Plan for Excavations: March 2023' but is planning-only (p.21 intro), so Submittal stays N here; the owning section may require a plan. Status, Bid Item 1 and area Inferred. Cross-lane: Civil & Site (31 23 19 Dewatering — link Inferred by title) || [Merge] Exceptions: #69, #250."
L-0434,PROPOSED-Temporary-Excavation-Support,"Temporary excavation support (shoring, bracing, sheeting, cribbing)",Civil,Contract & General,Site,Temporary,None found (no sheet cited in rev0),Not linked (PROPOSED tag is not printed; no boxed anchor matched),CWP 31,"Earthwork, Dewatering & Erosion Control",1; 2 (trench safety only),None found,None found,None found,None found (no MTO line: no tied callout and no tag found on a cited sheet),01 11 10,01 11 10 (spec),0,None found,tag 0; spec 0; sheet 0,N,0,None found,tag 0; spec 0; sheet 0,N,None found (Add. 4 checked; Addenda 1-3 not staged),None found,3,OI-0474 (tag); OI-0327 (spec); OI-0354 (spec),#70 (tag); #250 (tag),"31-C02 Earthwork, Dewatering & Erosion Control — Temporary facilities and controls",2023-03-15,2024-10-16,2023-03-14,Not started (baseline: no progress entered),Inferred,main spec 01 11 10 ¶1.01.B p.123,"Contractor provides shoring, bracing, sheeting, cribbing, falsework and forms as required (Verified); falsework and forms treated as means and methods, not rowed. Split between Item 1 and Item 2 (trench safety) Inferred; trench portion overlaps PROPOSED-Trench-Safety-System. Status and area Inferred. Cross-lane: Civil & Site (31 40 00 Temporary Shoring Bracing — link Inferred by title) || [Merge] Exceptions: #70, #250."
L-0435,PROPOSED-Contractor-Field-Office,Contractor's field office (optional),General,Contract & General,Site,Temporary,None found (no sheet cited in rev0),Not linked (PROPOSED tag is not printed; no boxed anchor matched),CWP 01,General Requirements & Temporary Works,1,None found,None found,None found,None found (no MTO line: no tied callout and no tag found on a cited sheet),01 50 00; 01 31 00,01 50 00 (spec); 01 31 00 (spec); CQA Plan (spec),1,SUB 01 50 00-00 (spec),tag 0; spec 1; sheet 0,N,1,ITP 01 50 00-01 (spec),tag 0; spec 1; sheet 0,N,None found (Add. 4 checked; Addenda 1-3 not staged),None found,4,OI-0338 (tag); OI-0474 (tag); OI-0327 (spec); OI-0354 (spec),None found,01-C02 General Requirements & Temporary Works — Temporary facilities and controls,2023-03-15,2024-10-16,2023-03-14,Not started (baseline: no progress entered),Unresolved,"main spec 01 50 00 ¶1.01.B p.142, ¶1.04.D.1 p.143; 01 31 00 ¶1.05.D p.128; QA plan §3.0 p.6, §5.3 pp.11–12, §6.3.1 p.14, §8 p.18","Encouraged but not required (01 50 00 ¶1.01.B, Verified), yet the updated schedule is kept at the Contractor's field office (01 31 00 ¶1.05.D, Verified) and restrooms go at the field office or another central site (01 50 00 ¶1.04.D.1) — whether one is provided is Unresolved (Issues 1.16). Status Temporary, Bid Item 1 and area Inferred. Owned by this lane. The QA plan (not a Contract Document) assumes a Contractor field office for the schedule, photos, pay requests, test records, RFI/WD/CO files and reviewed submittals (Verified) — adds weight to Issues 1.16, does not settle it."
L-0436,PROPOSED-Temporary-Construction-Power,"Temporary construction power and lighting (poles, transformer if required, cords, outlets, lamps)",Electrical,Contract & General,Site,Temporary,None found (no sheet cited in rev0),Not linked (PROPOSED tag is not printed; no boxed anchor matched),CWP 26,"Electrical, Instrumentation & Controls",1,None found,None found,None found,None found (no MTO line: no tied callout and no tag found on a cited sheet),01 50 00,01 50 00 (spec),1,SUB 01 50 00-00 (spec),tag 0; spec 1; sheet 0,N,1,ITP 01 50 00-01 (spec),tag 0; spec 1; sheet 0,N,None found (Add. 4 checked; Addenda 1-3 not staged),None found,3,OI-0340 (tag); OI-0474 (tag); OI-0327 (spec),#67 (tag),"26-C12 Electrical, Instrumentation & Controls — Temporary facilities and controls",2023-03-15,2024-10-16,2023-03-14,Not started (baseline: no progress entered),Unresolved,main spec 01 50 00 ¶1.04.A p.142,"Temporary connection to the closest utility source; removed at completion of the work or sooner if directed (Verified); 01 70 00 ¶1.03.A.3 wants temporary facilities out before the Substantial Completion request — Issues 1.19. Separate from the Add. 4 temporary back-up generator (process standby power). Bid Item 1 Inferred (Division 01 work; Item 6 covers E sheets and Division 26, 00 24 13 ¶6). Owned by this lane. || [Merge] Exceptions: #67."
L-0437,PROPOSED-Temporary-Construction-Water-Connection,Temporary metered construction water connection with backflow preventer (if agreed),Civil,Contract & General,Site,Temporary,None found (no sheet cited in rev0),Not linked (PROPOSED tag is not printed; no boxed anchor matched),CWP 01,General Requirements & Temporary Works,1,None found,None found,None found,None found (no MTO line: no tied callout and no tag found on a cited sheet),01 50 00,01 50 00 (spec),1,SUB 01 50 00-00 (spec),tag 0; spec 1; sheet 0,N,1,ITP 01 50 00-01 (spec),tag 0; spec 1; sheet 0,N,None found (Add. 4 checked; Addenda 1-3 not staged),None found,3,OI-0340 (tag); OI-0474 (tag); OI-0327 (spec),None found,01-C02 General Requirements & Temporary Works — Temporary facilities and controls,2023-03-15,2024-10-16,2023-03-14,Not started (baseline: no progress entered),Unresolved,main spec 01 50 00 ¶1.04.B–C p.143,"Made only 'if agreed'; Contractor supplies meter, piping, hoses and nozzles, secures it against unauthorized use, removes it at completion or when directed, and supplies the water for the clean water leakage tests (Verified). Removal timing — Issues 1.19. Discipline, area and Bid Item 1 Inferred. Owned by this lane."
L-0438,PROPOSED-Temporary-Sanitary-Facilities,Temporary restrooms (contract service allowed),General,Contract & General,Site,Temporary,None found (no sheet cited in rev0),Not linked (PROPOSED tag is not printed; no boxed anchor matched),CWP 01,General Requirements & Temporary Works,1,None found,None found,None found,None found (no MTO line: no tied callout and no tag found on a cited sheet),01 50 00,01 50 00 (spec),1,SUB 01 50 00-00 (spec),tag 0; spec 1; sheet 0,N,1,ITP 01 50 00-01 (spec),tag 0; spec 1; sheet 0,N,None found (Add. 4 checked; Addenda 1-3 not staged),None found,3,OI-0340 (tag); OI-0474 (tag); OI-0327 (spec),None found,01-C02 General Requirements & Temporary Works — Temporary facilities and controls,2023-03-15,2024-10-16,2023-03-14,Not started (baseline: no progress entered),Unresolved,main spec 01 50 00 ¶1.04.D p.143,"At the field office location or another central site; regularly serviced, kept reasonably clean, removed promptly at the conclusion of the work (Verified). Removal timing — Issues 1.19. Bid Item 1 and area Inferred. Owned by this lane."
L-0439,PROPOSED-Temporary-Bypass-Alarm-Monitoring,Temporary bypass alarm and status monitoring (cellular notification; wired to the existing WWTP control system),Controls,Contract & General,Not stated,Temporary,None found (no sheet cited in rev0),Not linked (PROPOSED tag is not printed; no boxed anchor matched),CWP 01,General Requirements & Temporary Works,1,None found,None found,None found,None found (no MTO line: no tied callout and no tag found on a cited sheet),01 50 00,01 50 00 (spec),1,SUB 01 50 00-00 (spec),tag 0; spec 1; sheet 0,N,1,ITP 01 50 00-01 (spec),tag 0; spec 1; sheet 0,N,None found (Add. 4 checked; Addenda 1-3 not staged),None found,2,OI-0474 (tag); OI-0327 (spec),#68 (tag); #253 (tag),01-C01 General Requirements & Temporary Works — Temporary bypass and interim effluent piping,2023-04-01,2023-10-11,2023-03-14,Not started (baseline: no progress entered),Inferred,main spec 01 50 00 ¶1.04.H p.144,"Oversight by on-site staff or an alarm system with automatic cellular notification (either allowed); backup alarms and Normal/Running status wired to the District's existing WWTP control system in every case; PLC/SCADA programming by the PLC/SCADA Programmer is incidental (Verified). Whether that programming draws on Item 17 (SCADA/PLC force account) is not stated. Status and Bid Item 1 Inferred. Cross-lane: Electrical & Controls || [Merge] Exceptions: #68, #253."
L-0440,PROPOSED-Aeration-Basins,Aeration basins (Train 3),Structural,Contract & General,Train 3,New,None found (no sheet cited in rev0),Not linked (PROPOSED tag is not printed; no boxed anchor matched),CWP 46,Treatment Equipment,1,None found,None found,None found,None found (no MTO line: no tied callout and no tag found on a cited sheet),01 45 00; 01 50 00,01 45 00 (spec); 01 50 00 (spec),2,SUB 01 45 00-00 (spec); SUB 01 50 00-00 (spec),tag 0; spec 2; sheet 0,N,4,ITP 01 45 00-01 (spec); ITP 01 45 00-02 (spec); ITP 01 45 00-03 (spec); ITP 01 50 00-01 (spec),tag 0; spec 4; sheet 0,Y,None found (Add. 4 checked; Addenda 1-3 not staged),None found,3,OI-0474 (tag); OI-0323 (spec); OI-0327 (spec),#251 (tag); #252 (tag),46-C04 Treatment Equipment — Train 3,2023-08-01,2024-07-08,2023-03-31,Not started (baseline: no progress entered),Inferred,main spec 01 45 00 ¶1.09 pp.139–140; 01 50 00 ¶1.04.C p.143,"Part of Train #3 (01 50 00 ¶1.04.C.1.c, Verified); a 'newly constructed' structure (Verified). Testing Y: clean water leakage test before startup — filled to the rim, held 2 hours, no visible leakage (01 45 00 ¶1.09; 01 50 00 ¶1.04.C — Verified). Discipline and Bid Item 1 Inferred; Items 18/19 cover Train 3 equipment steel, not basin structures (Inferred). Cross-lane: Structural & Building; Process & Mechanical || [Merge] Exceptions: #251, #252."
L-0441,PROPOSED-Anoxic-Basins,Anoxic basins (Train 3),Structural,Contract & General,Train 3,New,None found (no sheet cited in rev0),Not linked (PROPOSED tag is not printed; no boxed anchor matched),CWP 46,Treatment Equipment,1,None found,None found,None found,None found (no MTO line: no tied callout and no tag found on a cited sheet),01 45 00; 01 50 00,01 45 00 (spec); 01 50 00 (spec),2,SUB 01 45 00-00 (spec); SUB 01 50 00-00 (spec),tag 0; spec 2; sheet 0,N,4,ITP 01 45 00-01 (spec); ITP 01 45 00-02 (spec); ITP 01 45 00-03 (spec); ITP 01 50 00-01 (spec),tag 0; spec 4; sheet 0,Y,None found (Add. 4 checked; Addenda 1-3 not staged),None found,3,OI-0474 (tag); OI-0323 (spec); OI-0327 (spec),#251 (tag); #252 (tag),46-C04 Treatment Equipment — Train 3,2023-08-01,2024-07-08,2023-03-31,Not started (baseline: no progress entered),Inferred,main spec 01 45 00 ¶1.09 pp.139–140; 01 50 00 ¶1.04.C p.143,"Part of Train #3 (01 50 00 ¶1.04.C.1.c, Verified); a 'newly constructed' structure (Verified). Testing Y: clean water leakage test before startup — filled to the rim, held 2 hours, no visible leakage (01 45 00 ¶1.09; 01 50 00 ¶1.04.C — Verified). Discipline and Bid Item 1 Inferred; Items 18/19 cover Train 3 equipment steel, not basin structures (Inferred). Cross-lane: Structural & Building; Process & Mechanical || [Merge] Exceptions: #251, #252."
L-0442,PROPOSED-Clarifier,Clarifier (Train 3),Structural,Contract & General,Train 3,New,None found (no sheet cited in rev0),Not linked (PROPOSED tag is not printed; no boxed anchor matched),CWP 46,Treatment Equipment,1,None found,None found,None found,None found (no MTO line: no tied callout and no tag found on a cited sheet),01 45 00; 01 50 00; 01 91 00,01 45 00 (spec); 01 50 00 (spec); 01 91 00 (spec),4,SUB 01 45 00-00 (spec); SUB 01 50 00-00 (spec); SUB 01 91 00-01 (spec); SUB 01 91 00-02 (spec),tag 0; spec 4; sheet 0,N,5,ITP 01 45 00-01 (spec); ITP 01 45 00-02 (spec); ITP 01 45 00-03 (spec); ITP 01 50 00-01 (spec); ITP 01 91 00-01 (spec),tag 0; spec 5; sheet 0,Y,None found (Add. 4 checked; Addenda 1-3 not staged),None found,3,OI-0474 (tag); OI-0323 (spec); OI-0327 (spec),#33 (tag); #251 (tag); #252 (tag),46-C04 Treatment Equipment — Train 3,2023-08-01,2024-07-08,2023-03-31,Not started (baseline: no progress entered),Inferred,main spec 01 45 00 ¶1.09 pp.139–140; 01 50 00 ¶1.04.C p.143; 01 91 00 ¶1.03 pp.157–158,"Part of Train #3 (01 50 00 ¶1.04.C.1.c, Verified); a 'newly constructed' structure (Verified). Testing Y: clean water leakage test before startup — filled to the rim, held 2 hours, no visible leakage (01 45 00 ¶1.09; 01 50 00 ¶1.04.C — Verified). Clarifier drive, weirs and baffles are commissioned with the Train 3 biological treatment equipment (01 91 00 ¶1.03, Verified). Discipline and Bid Item 1 Inferred. Cross-lane: Structural & Building; Process & Mechanical || [Merge] Exceptions: #33, #251, #252."
L-0443,PROPOSED-Blowers,Blower equipment (blowers and drives),Process-Mechanical,Contract & General,Blower Building,New,None found (no sheet cited in rev0),Not linked (PROPOSED tag is not printed; no boxed anchor matched),CWP 43,Blowers & 2W Plant Water System,1,None found,None found,None found,None found (no MTO line: no tied callout and no tag found on a cited sheet),01 91 00; 01 33 00; 01 70 00,01 91 00 (tag); 01 33 00 (spec); 01 70 00 (spec); CQA Plan (spec),11,SUB 01 33 00-01 (spec); SUB 01 33 00-02 (spec); SUB 01 33 00-03 (spec); SUB 01 33 00-04 (spec); SUB 01 33 00-05 (spec); SUB 01 70 00-01 (spec); SUB 01 70 00-02 (spec); SUB 01 70 00-03 (spec); SUB 01 70 00-04 (spec); SUB 01 91 00-01 (spec); SUB 01 91 00-02 (spec),tag 0; spec 11; sheet 0,Y,4,ITP 01 33 00-01 (spec); ITP 01 70 00-01 (spec); ITP 01 70 00-02 (spec); ITP 01 91 00-01 (spec),tag 0; spec 4; sheet 0,Y,None found (Add. 4 checked; Addenda 1-3 not staged),None found,2,OI-0474 (tag); OI-0323 (spec),#18 (tag); #251 (tag),43-C02 Blowers & 2W Plant Water System — Blower Building,2023-04-01,2023-07-31,2023-03-31,Not started (baseline: no progress entered),Inferred,"main spec 01 91 00 ¶1.04 p.158; 01 33 00 ¶1.05.G pp.131–132; 01 70 00 ¶1.03.A.6 p.152, ¶1.06 p.155; QA plan §2.0 p.6","01 91 00 ¶1.04: blower supplier gives at least 2 days of start-up supervision and training; blower drive amperage checked (Verified). Submittal Y: O&M manual and a testing/start-up procedure due 14 days before start-up (01 33 00 ¶1.05.G; 01 70 00 ¶1.03.A.6, ¶1.06.B — Verified). Testing Y: tested before any facility goes into operation, Engineer present, manufacturer's installation letter (01 70 00 ¶1.06 — Verified). Counting this item as mechanical/electrical/instrumentation equipment is Inferred. Area Blower Building Inferred (not stated in 01 91 00); Status New and Bid Item 1 Inferred. QA plan §2.0 lists 'new blower equipment' — Status New now read directly (Verified). The QA plan is not a Contract Document (§1.3 p.5). Cross-lane: Process & Mechanical || [Merge] Exceptions: #18, #251."
L-0444,PROPOSED-Train-3-Dissolved-Oxygen-Sensors,"Dissolved oxygen (DO) sensors, Train 3",Controls,Contract & General,Train 3,New,None found (no sheet cited in rev0),Not linked (PROPOSED tag is not printed; no boxed anchor matched),CWP 46,Treatment Equipment,1; Equipment Alternate B (package — Inferred),None found,None found,None found,None found (no MTO line: no tied callout and no tag found on a cited sheet),01 91 00; 01 33 00; 01 70 00,01 91 00 (spec); 01 33 00 (spec); 01 70 00 (spec),11,SUB 01 33 00-01 (spec); SUB 01 33 00-02 (spec); SUB 01 33 00-03 (spec); SUB 01 33 00-04 (spec); SUB 01 33 00-05 (spec); SUB 01 70 00-01 (spec); SUB 01 70 00-02 (spec); SUB 01 70 00-03 (spec); SUB 01 70 00-04 (spec); SUB 01 91 00-01 (spec); SUB 01 91 00-02 (spec),tag 0; spec 11; sheet 0,Y,4,ITP 01 33 00-01 (spec); ITP 01 70 00-01 (spec); ITP 01 70 00-02 (spec); ITP 01 91 00-01 (spec),tag 0; spec 4; sheet 0,Y,None found (Add. 4 checked; Addenda 1-3 not staged),None found,2,OI-0474 (tag); OI-0323 (spec),#35 (tag); #251 (tag); #253 (tag),46-C04 Treatment Equipment — Train 3,2023-08-01,2024-07-08,2023-03-31,Not started (baseline: no progress entered),Inferred,"main spec 01 91 00 ¶1.03 p.157; 01 33 00 ¶1.05.G pp.131–132; 01 70 00 ¶1.03.A.6 p.152, ¶1.06 p.155","Named in the Train 3 biological treatment commissioning checklist — controls including these sensors must work properly (01 91 00 ¶1.03.A.4, Verified); quantity not stated. Supplied with the biological treatment package (Inferred from the checklist; would follow Equipment Alternate B). Submittal Y: O&M manual and a testing/start-up procedure due 14 days before start-up (01 33 00 ¶1.05.G; 01 70 00 ¶1.03.A.6, ¶1.06.B — Verified). Testing Y: tested before any facility goes into operation, Engineer present, manufacturer's installation letter (01 70 00 ¶1.06 — Verified). Counting this item as mechanical/electrical/instrumentation equipment is Inferred. Status New and Bid Item 1 Inferred. Cross-lane: Electrical & Controls; Process & Mechanical || [Merge] Exceptions: #35, #251, #253."
L-0445,PROPOSED-Train-3-pH-Sensors,"pH sensors, Train 3",Controls,Contract & General,Train 3,New,None found (no sheet cited in rev0),Not linked (PROPOSED tag is not printed; no boxed anchor matched),CWP 46,Treatment Equipment,1; Equipment Alternate B (package — Inferred),None found,None found,None found,None found (no MTO line: no tied callout and no tag found on a cited sheet),01 91 00; 01 33 00; 01 70 00,01 91 00 (spec); 01 33 00 (spec); 01 70 00 (spec),11,SUB 01 33 00-01 (spec); SUB 01 33 00-02 (spec); SUB 01 33 00-03 (spec); SUB 01 33 00-04 (spec); SUB 01 33 00-05 (spec); SUB 01 70 00-01 (spec); SUB 01 70 00-02 (spec); SUB 01 70 00-03 (spec); SUB 01 70 00-04 (spec); SUB 01 91 00-01 (spec); SUB 01 91 00-02 (spec),tag 0; spec 11; sheet 0,Y,4,ITP 01 33 00-01 (spec); ITP 01 70 00-01 (spec); ITP 01 70 00-02 (spec); ITP 01 91 00-01 (spec),tag 0; spec 4; sheet 0,Y,None found (Add. 4 checked; Addenda 1-3 not staged),None found,2,OI-0474 (tag); OI-0323 (spec),#35 (tag); #251 (tag); #253 (tag),46-C04 Treatment Equipment — Train 3,2023-08-01,2024-07-08,2023-03-31,Not started (baseline: no progress entered),Inferred,"main spec 01 91 00 ¶1.03 p.157; 01 33 00 ¶1.05.G pp.131–132; 01 70 00 ¶1.03.A.6 p.152, ¶1.06 p.155","Named in the Train 3 biological treatment commissioning checklist — controls including these sensors must work properly (01 91 00 ¶1.03.A.4, Verified); quantity not stated. Supplied with the biological treatment package (Inferred from the checklist; would follow Equipment Alternate B). Submittal Y: O&M manual and a testing/start-up procedure due 14 days before start-up (01 33 00 ¶1.05.G; 01 70 00 ¶1.03.A.6, ¶1.06.B — Verified). Testing Y: tested before any facility goes into operation, Engineer present, manufacturer's installation letter (01 70 00 ¶1.06 — Verified). Counting this item as mechanical/electrical/instrumentation equipment is Inferred. Status New and Bid Item 1 Inferred. Cross-lane: Electrical & Controls; Process & Mechanical || [Merge] Exceptions: #35, #251, #253."
L-0446,PROPOSED-Magnetic-Flow-Meters,Magnetic flow meters (all units; count and locations not stated),Controls,Contract & General,Not stated,New,None found (no sheet cited in rev0),Not linked (PROPOSED tag is not printed; no boxed anchor matched),CWP 26,"Electrical, Instrumentation & Controls",Not stated,None found,None found,None found,None found (no MTO line: no tied callout and no tag found on a cited sheet),01 91 00; 01 33 00; 01 70 00,01 91 00 (tag); 01 33 00 (spec); 01 70 00 (spec),11,SUB 01 33 00-01 (spec); SUB 01 33 00-02 (spec); SUB 01 33 00-03 (spec); SUB 01 33 00-04 (spec); SUB 01 33 00-05 (spec); SUB 01 70 00-01 (spec); SUB 01 70 00-02 (spec); SUB 01 70 00-03 (spec); SUB 01 70 00-04 (spec); SUB 01 91 00-01 (spec); SUB 01 91 00-02 (spec),tag 0; spec 11; sheet 0,Y,4,ITP 01 33 00-01 (spec); ITP 01 70 00-01 (spec); ITP 01 70 00-02 (spec); ITP 01 91 00-01 (spec),tag 0; spec 4; sheet 0,Y,None found (Add. 4 checked; Addenda 1-3 not staged),None found,2,OI-0474 (tag); OI-0323 (spec),#251 (tag); #253 (tag),"26-C10 Electrical, Instrumentation & Controls — 480V service, MCC and PLC panel",2023-04-01,2023-10-04,2023-03-14,Not started (baseline: no progress entered),Inferred,"main spec 01 91 00 ¶1.11 pp.159–160; 01 33 00 ¶1.05.G pp.131–132; 01 70 00 ¶1.03.A.6 p.152, ¶1.06 p.155","01 91 00 ¶1.11: flow meter supplier gives at least 2 days; verify units are configured, sealed and rated for their environment — some may be submerged (Verified). The 8-inch effluent flow meter (00 31 13 ¶A.14) may be one of these (Inferred). Submittal Y: O&M manual and a testing/start-up procedure due 14 days before start-up (01 33 00 ¶1.05.G; 01 70 00 ¶1.03.A.6, ¶1.06.B — Verified). Testing Y: tested before any facility goes into operation, Engineer present, manufacturer's installation letter (01 70 00 ¶1.06 — Verified). Counting this item as mechanical/electrical/instrumentation equipment is Inferred. Item 1 vs 6 depends on the specifying section (not in this stack). Cross-lane: Electrical & Controls; Process & Mechanical || [Merge] Exceptions: #251, #253."
L-0447,PROPOSED-Handrails,Handrails,Structural,Contract & General,Not stated,New,None found (no sheet cited in rev0),Not linked (PROPOSED tag is not printed; no boxed anchor matched),CWP 46,Treatment Equipment,1,None found,None found,None found,None found (no MTO line: no tied callout and no tag found on a cited sheet),01 70 00,01 70 00 (spec),4,SUB 01 70 00-01 (spec); SUB 01 70 00-02 (spec); SUB 01 70 00-03 (spec); SUB 01 70 00-04 (spec),tag 0; spec 4; sheet 0,N,2,ITP 01 70 00-01 (spec); ITP 01 70 00-02 (spec),tag 0; spec 2; sheet 0,N,None found (Add. 4 checked; Addenda 1-3 not staged),None found,2,OI-0474 (tag); OI-0323 (spec),#34 (tag); #252 (tag),46-C04 Treatment Equipment — Train 3,2023-08-01,2024-07-08,2023-03-31,Not started (baseline: no progress entered),Inferred,main spec 01 70 00 ¶1.03.A.5 p.152,"Named only as work to finish before the Substantial Completion request ('installation of handrails', Verified); locations and extent not stated. Status, discipline and Bid Item 1 Inferred. Cross-lane: Structural & Building || [Merge] Exceptions: #34, #252."
L-0448,PROPOSED-Earthwork cut,"Earthwork, total volume of proposed cut",Civil,Civil & Site,Site,New,C0.2,"C0.2 p.9 [723.96,634.52,744.85,639.52] bluebeam-ocr (quantity callout) (sheet)",CWP 31,"Earthwork, Dewatering & Erosion Control","1 (Inferred: 04 puts work not itemized elsewhere in Item 1; 00 24 13 ¶1, p.16)",Not totaled: no Verified line,CY,MTO-0113 (tag),Inferred — not totaled; lines: 1 Inferred (MTO Lines: Not Totaled Because),None found,C0.2 (tag),1,SUB C0.2-01 (sheet),tag 0; spec 0; sheet 1,Not stated (new row),0,None found,tag 0; spec 0; sheet 0,Not stated (new row),None found (Add. 4 checked; Addenda 1-3 not staged),None found,1,OI-0007 (sheet),None found,Not linked (new row; the rev0 schedule predates it),Not linked (new row; the rev0 schedule predates it),Not linked (new row; the rev0 schedule predates it),Not linked (new row; the rev0 schedule predates it),Not linked (new row; not in the rev0 tracker),Inferred,"C0.2 set p.9 (Part 1 p.9), Bluebeam read at [723.96,634.52,744.85,639.52]: ""CUT = 3382 CY, FILL = 1598 CY""; Wiki note C0.2 (Project_Wiki.md line 377); New_Row_Candidates.csv no. 1","[rev1] New row, Prompt 9 owner's decision (DECISIONS.md 2026-09-30, ""The C0.2 earthwork totals go in the starter MTO and are proposed as new Ledger rows""). Three-part test: page C0.2 set p.9 [723.96,634.52,744.85,639.52] (Inferred, Bluebeam read); CWP CWP 31 — Discipline Civil + keyword ""earthwork"" (Inferred); connected document Wiki note C0.2. Quantity read by Bluebeam only (Inferred), so it is not totaled. Wiki note C0.2: the drawing states the cut and fill are estimated for the TESC narrative only, not for bidding or take-off."
L-0449,PROPOSED-Earthwork fill,"Earthwork, total volume of proposed fill",Civil,Civil & Site,Site,New,C0.2,"C0.2 p.9 [761.97,634.52,782.85,639.52] bluebeam-ocr (quantity callout) (sheet)",CWP 31,"Earthwork, Dewatering & Erosion Control","1 (Inferred: 04 puts work not itemized elsewhere in Item 1; 00 24 13 ¶1, p.16)",Not totaled: no Verified line,CY,MTO-0114 (tag),Unresolved — not totaled; lines: 1 Unresolved (MTO Lines: Not Totaled Because),None found,C0.2 (tag),1,SUB C0.2-01 (sheet),tag 0; spec 0; sheet 1,Not stated (new row),0,None found,tag 0; spec 0; sheet 0,Not stated (new row),None found (Add. 4 checked; Addenda 1-3 not staged),None found,1,OI-0007 (sheet),None found,Not linked (new row; the rev0 schedule predates it),Not linked (new row; the rev0 schedule predates it),Not linked (new row; the rev0 schedule predates it),Not linked (new row; the rev0 schedule predates it),Not linked (new row; not in the rev0 tracker),Unresolved,"C0.2 set p.9 (Part 1 p.9), Bluebeam read at [761.97,634.52,782.85,639.52]: ""CUT = 3382 CY, FILL = 1598 CY""; Wiki note C0.2 (Project_Wiki.md line 377); New_Row_Candidates.csv no. 2","[rev1] New row, Prompt 9 owner's decision (DECISIONS.md 2026-09-30, ""The C0.2 earthwork totals go in the starter MTO and are proposed as new Ledger rows""). Three-part test: page C0.2 set p.9 [761.97,634.52,782.85,639.52] (Inferred, Bluebeam read); CWP CWP 31 — Discipline Civil + keyword ""earthwork"" (Inferred); connected document Wiki note C0.2. Quantity read by Bluebeam only (Inferred), so it is not totaled. Unresolved: Wiki note C0.2 reads fill 1,596 CY (Verified-Visual); the Bluebeam read is 1598 CY; the page image decides. Wiki note C0.2: the drawing states the cut and fill are estimated for the TESC narrative only, not for bidding or take-off."
